# Finish Line

Schedule from MS Project, 2005-01-24 to 2005-03-28, A marks actual dates.
GSC GameWorld

## Calendars

- Стандартный: Mon-Fri 10:00-13:00, 14:00-19:00; Sat 11:00-13:00, 14:00-20:00; Sun off.

## Resources

| Resource |
| --- |
| Руслан, Рома |
| Руслан, Коан |
| Чугай, Рома |
| Змей, Рома |
| Джим, Угрюмый |
| Сидорович, Маст Дай |
| Чугай, Лестат |
| Rainbow, |
| Rainbow, Ефимов Владимир |
| Веня |
| Rainbow |
| Рома |
| Рома, Змей |
| Коан, Руслан |
| Маст Дай, Сидорович |
| Лестат, Чугай |
| Dima |
| Partizan |
| Sidorovich |
| Mustdie |
| Змей |
| Сидорович |
| Shyshkin |
| Вова |
| Шишкин |

## Schedule

| ID | WBS | Task | Duration | Start | Finish | Predecessors | Total slack | Free slack | Resources | Work |
| --- | --- | --- | --- | --- | --- | --- | --- | --- | --- | --- |
| 2 | 1 | **01_Escape** | 9d? | 2005-01-24 | 2005-02-02 |  | 46d |  | Руслан, Рома | 112h |
| 3 | 1.1 | **LevelDesign** | 9d? | 2005-01-24 | 2005-02-02 |  | 46d |  |  |  |
| 4 | 1.1.1 | **Stage 1** | 9d? | 2005-01-24 | 2005-02-02 |  | 46d |  |  |  |
| 5 | 1.1.1.1 | List of Changes | 2d | 2005-01-24 | 2005-01-25 |  | 46d | 0d |  |  |
| 6 | 1.1.1.2 | Changed Geometry | 1d? | 2005-01-26 | 2005-01-26 | 5 | 46d | 0d |  |  |
| 7 | 1.1.1.3 | Check List 1 | 1d? | 2005-01-27 | 2005-01-27 | 6 | 46d | 0d |  |  |
| 8 | 1.1.1.4 | Check List 2 | 1d? | 2005-01-28 | 2005-01-28 | 7 | 46d | 0d |  |  |
| 9 | 1.1.1.5 | Check List 3 | 1d? | 2005-01-29 | 2005-01-29 | 8 | 46d | 0d |  |  |
| 10 | 1.1.1.6 | Check List 4 | 1d? | 2005-01-31 | 2005-01-31 | 9 | 46d | 0d |  |  |
| 11 | 1.1.1.7 | Render Geometry | 1d? | 2005-02-01 | 2005-02-01 | 10 | 46d | 0d |  |  |
| 12 | 1.1.1.8 | Grass | 1d? | 2005-02-02 | 2005-02-02 | 11 | 46d |  |  |  |
| 14 | 1.2 | **GameDesign** | 3d? | 2005-01-24 | 2005-01-26 |  | 52d |  |  |  |
| 15 | 1.2.1 | AI Maps/Graphs | 1d? | 2005-01-24 | 2005-01-24 |  | 54d |  |  |  |
| 16 | 1.2.2 | **Secrets** | 3d? | 2005-01-24 | 2005-01-26 |  | 52d |  |  |  |
| 17 | 1.2.2.1 | **Stage 1** | 3d? | 2005-01-24 | 2005-01-26 |  | 52d |  |  |  |
| 18 | 1.2.2.1.1 | Design | 1d? | 2005-01-24 | 2005-01-24 |  | 52d | 0d |  |  |
| 19 | 1.2.2.1.2 | Implementation | 1d? | 2005-01-25 | 2005-01-25 | 18 | 52d | 0d |  |  |
| 20 | 1.2.2.1.3 | Tuning | 1d? | 2005-01-26 | 2005-01-26 | 19 | 52d |  |  |  |
| 21 | 1.2.3 | **Smartterrains** | 3d? | 2005-01-24 | 2005-01-26 |  | 52d |  |  |  |
| 22 | 1.2.3.1 | **Stage 1** | 3d? | 2005-01-24 | 2005-01-26 |  | 52d |  |  |  |
| 23 | 1.2.3.1.1 | Design | 1d? | 2005-01-24 | 2005-01-24 |  | 52d | 0d |  |  |
| 24 | 1.2.3.1.2 | Implementation | 1d? | 2005-01-25 | 2005-01-25 | 23 | 52d | 0d |  |  |
| 25 | 1.2.3.1.3 | Tuning | 1d? | 2005-01-26 | 2005-01-26 | 24 | 52d |  |  |  |
| 26 | 1.2.4 | **Monsters/Spawns** | 3d? | 2005-01-24 | 2005-01-26 |  | 52d |  |  |  |
| 27 | 1.2.4.1 | **Stage 1** | 3d? | 2005-01-24 | 2005-01-26 |  | 52d |  |  |  |
| 28 | 1.2.4.1.1 | Design | 1d? | 2005-01-24 | 2005-01-24 |  | 52d | 0d |  |  |
| 29 | 1.2.4.1.2 | Implementation | 1d? | 2005-01-25 | 2005-01-25 | 28 | 52d | 0d |  |  |
| 30 | 1.2.4.1.3 | Tuning | 1d? | 2005-01-26 | 2005-01-26 | 29 | 52d |  |  |  |

| ID | WBS | Task | Duration | Start | Finish | Predecessors | Total slack | Free slack | Resources | Work |
| --- | --- | --- | --- | --- | --- | --- | --- | --- | --- | --- |
| 31 | 1.2.5 | **Stalkers/Spawns** | 3d? | 2005-01-24 | 2005-01-26 |  | 52d |  |  |  |
| 32 | 1.2.5.1 | **Stage 1** | 3d? | 2005-01-24 | 2005-01-26 |  | 52d |  |  |  |
| 33 | 1.2.5.1.1 | Design | 1d? | 2005-01-24 | 2005-01-24 |  | 52d | 0d |  |  |
| 34 | 1.2.5.1.2 | Implementation | 1d? | 2005-01-25 | 2005-01-25 | 33 | 52d | 0d |  |  |
| 35 | 1.2.5.1.3 | Tuning | 1d? | 2005-01-26 | 2005-01-26 | 34 | 52d |  |  |  |
| 36 | 1.2.6 | **Anomalies/Spawns** | 3d? | 2005-01-24 | 2005-01-26 |  | 52d |  |  |  |
| 37 | 1.2.6.1 | **Stage 1** | 3d? | 2005-01-24 | 2005-01-26 |  | 52d |  |  |  |
| 38 | 1.2.6.1.1 | Design | 1d? | 2005-01-24 | 2005-01-24 |  | 52d | 0d |  |  |
| 39 | 1.2.6.1.2 | Implementation | 1d? | 2005-01-25 | 2005-01-25 | 38 | 52d | 0d |  |  |
| 40 | 1.2.6.1.3 | Tuning | 1d? | 2005-01-26 | 2005-01-26 | 39 | 52d |  |  |  |
| 41 | 1.2.7 | **Physicks** | 3d? | 2005-01-24 | 2005-01-26 |  | 52d |  |  |  |
| 42 | 1.2.7.1 | **Stage 1** | 3d? | 2005-01-24 | 2005-01-26 |  | 52d |  |  |  |
| 43 | 1.2.7.1.1 | Design | 1d? | 2005-01-24 | 2005-01-24 |  | 52d | 0d |  |  |
| 44 | 1.2.7.1.2 | Implementation | 1d? | 2005-01-25 | 2005-01-25 | 43 | 52d | 0d |  |  |
| 45 | 1.2.7.1.3 | Tuning | 1d? | 2005-01-26 | 2005-01-26 | 44 | 52d |  |  |  |
| 47 | 1.3 | **Scripts** | 3d? | 2005-01-24 | 2005-01-26 |  | 52d |  |  | 40h |
| 48 | 1.3.1 | Сценарий (текст) | 1d? | 2005-01-24 | 2005-01-24 |  | 54d |  |  |  |
| 49 | 1.3.2 | **Сцена 1 - Плоть рядом с аномалией** | 3d? | 2005-01-24 | 2005-01-26 |  | 52d |  |  | 16h |
| 50 | 1.3.2.1 | Постановка задач | 1d? | 2005-01-24 | 2005-01-24 |  | 52d | 0d |  |  |
| 51 | 1.3.2.2 | **Реализация** | 1d? | 2005-01-25 | 2005-01-25 | 50 | 52d |  |  | 8h |
| 52 | 1.3.2.2.1 | Доработка X в движке | 1d? | 2005-01-25 | 2005-01-25 |  | 52d | 0d | Dima | 8h |
| 53 | 1.3.2.3 | **Тестирование** | 1d? | 2005-01-26 | 2005-01-26 | 52 | 52d |  |  | 8h |
| 54 | 1.3.2.3.1 | Проверить расстановку AI нод вокруг дерева | 1d? | 2005-01-26 | 2005-01-26 |  | 52d |  | Partizan | 8h |
| 55 | 1.3.3 | **Сцена 2 - Кабаны играют в футбол** | 3d? | 2005-01-24 | 2005-01-26 |  | 52d |  |  | 24h |
| 56 | 1.3.3.1 | Постановка задач | 1d? | 2005-01-24 | 2005-01-24 |  | 52d | 0d |  |  |

Notes:
- 56: Два кабана по очереди пинают труп, стараясь не выходить далеко за пределы указанной на уровне зоны. При появлении игрока атакуют его.

| ID | WBS | Task | Duration | Start | Finish | Predecessors | Total slack | Free slack | Resources | Work |
| --- | --- | --- | --- | --- | --- | --- | --- | --- | --- | --- |
| 57 | 1.3.3.2 | **Реализация** | 1d? | 2005-01-25 | 2005-01-25 | 56 | 52d |  |  | 16h |
| 58 | 1.3.3.2.1 | Написать схему mob_kicker | 1d? | 2005-01-25 | 2005-01-25 |  | 52d | 0d | Сидорович | 8h |
| 59 | 1.3.3.2.2 | Установить и настроить схему на Escape | 1d? | 2005-01-25 | 2005-01-25 |  | 53d |  | Mustdie | 8h |
| 60 | 1.3.3.3 | **Тестирование** | 1d? | 2005-01-26 | 2005-01-26 | 58 | 52d |  |  | 8h |
| 61 | 1.3.3.3.1 | Отсутствие визуальных дефектов | 1d? | 2005-01-26 | 2005-01-26 |  | 52d |  | Partizan | 8h |
| 63 | 2 | **02_Garbage** | 11d? | 2005-01-24 | 2005-02-04 |  | 44d |  | Руслан, Коан | 88h |
| 64 | 2.1 | **LevelDesign** | 11d? | 2005-01-24 | 2005-02-04 |  | 44d |  |  |  |
| 65 | 2.1.1 | **Stage 1** | 11d? | 2005-01-24 | 2005-02-04 |  | 44d |  |  |  |
| 66 | 2.1.1.1 | List of Changes | 2d | 2005-01-24 | 2005-01-25 |  | 44d | 0d |  |  |
| 67 | 2.1.1.2 | Changed Geometry | 1d? | 2005-01-26 | 2005-01-26 | 66 | 44d | 0d |  |  |
| 68 | 2.1.1.3 | Check List 1 | 1d? | 2005-01-27 | 2005-01-27 | 67 | 44d | 0d |  |  |
| 69 | 2.1.1.4 | Check List 2 | 1d? | 2005-01-28 | 2005-01-28 | 68 | 44d | 0d |  |  |
| 70 | 2.1.1.5 | Check List 3 | 1d? | 2005-01-29 | 2005-01-29 | 69 | 44d | 0d |  |  |
| 71 | 2.1.1.6 | Check List 4 | 1d? | 2005-01-31 | 2005-01-31 | 70 | 44d | 0d |  |  |
| 72 | 2.1.1.7 | Render Geometry | 1d? | 2005-02-01 | 2005-02-01 | 71 | 44d | 0d |  |  |
| 73 | 2.1.1.8 | Grass | 1d? | 2005-02-02 | 2005-02-02 | 72 | 44d | 0d |  |  |
| 74 | 2.1.1.9 | AI Maps | 1d? | 2005-02-03 | 2005-02-03 | 73 | 44d | 0d |  |  |
| 75 | 2.1.1.10 | Graphs | 1d? | 2005-02-04 | 2005-02-04 | 74 | 44d |  |  |  |
| 77 | 2.2 | **GameDesign** | 3d? | 2005-01-24 | 2005-01-26 |  | 52d |  |  |  |
| 78 | 2.2.1 | **Secrets** | 3d? | 2005-01-24 | 2005-01-26 |  | 52d |  |  |  |
| 79 | 2.2.1.1 | **Stage 1** | 3d? | 2005-01-24 | 2005-01-26 |  | 52d |  |  |  |
| 80 | 2.2.1.1.1 | Design | 1d? | 2005-01-24 | 2005-01-24 |  | 52d | 0d |  |  |
| 81 | 2.2.1.1.2 | Implementation | 1d? | 2005-01-25 | 2005-01-25 | 80 | 52d | 0d |  |  |
| 82 | 2.2.1.1.3 | Tuning | 1d? | 2005-01-26 | 2005-01-26 | 81 | 52d |  |  |  |

| ID | WBS | Task | Duration | Start | Finish | Predecessors | Total slack | Free slack |
| --- | --- | --- | --- | --- | --- | --- | --- | --- |
| 83 | 2.2.2 | **Smartterrains** | 3d? | 2005-01-24 | 2005-01-26 |  | 52d |  |
| 84 | 2.2.2.1 | **Stage 1** | 3d? | 2005-01-24 | 2005-01-26 |  | 52d |  |
| 85 | 2.2.2.1.1 | Design | 1d? | 2005-01-24 | 2005-01-24 |  | 52d | 0d |
| 86 | 2.2.2.1.2 | Implementation | 1d? | 2005-01-25 | 2005-01-25 | 85 | 52d | 0d |
| 87 | 2.2.2.1.3 | Tuning | 1d? | 2005-01-26 | 2005-01-26 | 86 | 52d |  |
| 88 | 2.2.3 | **Monsters/Spawns** | 3d? | 2005-01-24 | 2005-01-26 |  | 52d |  |
| 89 | 2.2.3.1 | **Stage 1** | 3d? | 2005-01-24 | 2005-01-26 |  | 52d |  |
| 90 | 2.2.3.1.1 | Design | 1d? | 2005-01-24 | 2005-01-24 |  | 52d | 0d |
| 91 | 2.2.3.1.2 | Implementation | 1d? | 2005-01-25 | 2005-01-25 | 90 | 52d | 0d |
| 92 | 2.2.3.1.3 | Tuning | 1d? | 2005-01-26 | 2005-01-26 | 91 | 52d |  |
| 93 | 2.2.4 | **Stalkers/Spawns** | 3d? | 2005-01-24 | 2005-01-26 |  | 52d |  |
| 94 | 2.2.4.1 | **Stage 1** | 3d? | 2005-01-24 | 2005-01-26 |  | 52d |  |
| 95 | 2.2.4.1.1 | Design | 1d? | 2005-01-24 | 2005-01-24 |  | 52d | 0d |
| 96 | 2.2.4.1.2 | Implementation | 1d? | 2005-01-25 | 2005-01-25 | 95 | 52d | 0d |
| 97 | 2.2.4.1.3 | Tuning | 1d? | 2005-01-26 | 2005-01-26 | 96 | 52d |  |
| 98 | 2.2.5 | **Anomalies/Spawns** | 3d? | 2005-01-24 | 2005-01-26 |  | 52d |  |
| 99 | 2.2.5.1 | **Stage 1** | 3d? | 2005-01-24 | 2005-01-26 |  | 52d |  |
| 100 | 2.2.5.1.1 | Design | 1d? | 2005-01-24 | 2005-01-24 |  | 52d | 0d |
| 101 | 2.2.5.1.2 | Implementation | 1d? | 2005-01-25 | 2005-01-25 | 100 | 52d | 0d |
| 102 | 2.2.5.1.3 | Tuning | 1d? | 2005-01-26 | 2005-01-26 | 101 | 52d |  |
| 103 | 2.2.6 | **Physicks** | 3d? | 2005-01-24 | 2005-01-26 |  | 52d |  |
| 104 | 2.2.6.1 | **Stage 1** | 3d? | 2005-01-24 | 2005-01-26 |  | 52d |  |
| 105 | 2.2.6.1.1 | Design | 1d? | 2005-01-24 | 2005-01-24 |  | 52d | 0d |
| 106 | 2.2.6.1.2 | Implementation | 1d? | 2005-01-25 | 2005-01-25 | 105 | 52d | 0d |
| 107 | 2.2.6.1.3 | Tuning | 1d? | 2005-01-26 | 2005-01-26 | 106 | 52d |  |

| ID | WBS | Task | Duration | Start | Finish | Predecessors | Total slack | Free slack |
| --- | --- | --- | --- | --- | --- | --- | --- | --- |
| 109 | 2.3 | **Scripts** | 5d? | 2005-01-24 | 2005-01-28 |  | 50d |  |
| 110 | 2.3.1 | **Script 1** | 5d? | 2005-01-24 | 2005-01-28 |  | 50d |  |
| 111 | 2.3.1.1 | Scenario(text) | 1d? | 2005-01-24 | 2005-01-24 |  | 50d | 0d |
| 112 | 2.3.1.2 | Постановка задач | 1d? | 2005-01-25 | 2005-01-25 | 111 | 50d | 0d |
| 113 | 2.3.1.3 | Implimentation | 1d? | 2005-01-26 | 2005-01-26 | 112 | 50d | 0d |
| 114 | 2.3.1.4 | Dilogs/VO/Icons/Objects/Animations | 1d? | 2005-01-27 | 2005-01-27 | 113 | 50d | 0d |
| 115 | 2.3.1.5 | Настройка | 1d? | 2005-01-28 | 2005-01-28 | 114 | 50d |  |
| 116 | 2.3.2 | **Script 2** | 5d? | 2005-01-24 | 2005-01-28 |  | 50d |  |
| 117 | 2.3.2.1 | Scenario(text) | 1d? | 2005-01-24 | 2005-01-24 |  | 50d | 0d |
| 118 | 2.3.2.2 | Постановка задач | 1d? | 2005-01-25 | 2005-01-25 | 117 | 50d | 0d |
| 119 | 2.3.2.3 | Implimentation | 1d? | 2005-01-26 | 2005-01-26 | 118 | 50d | 0d |
| 120 | 2.3.2.4 | Dilogs/VO/Icons/Objects/Animations | 1d? | 2005-01-27 | 2005-01-27 | 119 | 50d | 0d |
| 121 | 2.3.2.5 | Настройка | 1d? | 2005-01-28 | 2005-01-28 | 120 | 50d |  |
| 122 | 2.3.3 | **Script 3** | 5d? | 2005-01-24 | 2005-01-28 |  | 50d |  |
| 123 | 2.3.3.1 | Scenario(text) | 1d? | 2005-01-24 | 2005-01-24 |  | 50d | 0d |
| 124 | 2.3.3.2 | Постановка задач | 1d? | 2005-01-25 | 2005-01-25 | 123 | 50d | 0d |
| 125 | 2.3.3.3 | Implimentation | 1d? | 2005-01-26 | 2005-01-26 | 124 | 50d | 0d |
| 126 | 2.3.3.4 | Dilogs/VO/Icons/Objects/Animations | 1d? | 2005-01-27 | 2005-01-27 | 125 | 50d | 0d |
| 127 | 2.3.3.5 | Настройка | 1d? | 2005-01-28 | 2005-01-28 | 126 | 50d |  |
| 128 | 2.3.4 | **Script 4** | 5d? | 2005-01-24 | 2005-01-28 |  | 50d |  |
| 129 | 2.3.4.1 | Scenario(text) | 1d? | 2005-01-24 | 2005-01-24 |  | 50d | 0d |
| 130 | 2.3.4.2 | Постановка задач | 1d? | 2005-01-25 | 2005-01-25 | 129 | 50d | 0d |
| 131 | 2.3.4.3 | Implimentation | 1d? | 2005-01-26 | 2005-01-26 | 130 | 50d | 0d |
| 132 | 2.3.4.4 | Dilogs/VO/Icons/Objects/Animations | 1d? | 2005-01-27 | 2005-01-27 | 131 | 50d | 0d |
| 133 | 2.3.4.5 | Настройка | 1d? | 2005-01-28 | 2005-01-28 | 132 | 50d |  |

| ID | WBS | Task | Duration | Start | Finish | Predecessors | Total slack | Free slack | Resources | Work |
| --- | --- | --- | --- | --- | --- | --- | --- | --- | --- | --- |
| 134 | 2.3.5 | **Script 5** | 5d? | 2005-01-24 | 2005-01-28 |  | 50d |  |  |  |
| 135 | 2.3.5.1 | Scenario(text) | 1d? | 2005-01-24 | 2005-01-24 |  | 50d | 0d |  |  |
| 136 | 2.3.5.2 | Постановка задач | 1d? | 2005-01-25 | 2005-01-25 | 135 | 50d | 0d |  |  |
| 137 | 2.3.5.3 | Implimentation | 1d? | 2005-01-26 | 2005-01-26 | 136 | 50d | 0d |  |  |
| 138 | 2.3.5.4 | Dilogs/VO/Icons/Objects/Animations | 1d? | 2005-01-27 | 2005-01-27 | 137 | 50d | 0d |  |  |
| 139 | 2.3.5.5 | Настройка | 1d? | 2005-01-28 | 2005-01-28 | 138 | 50d |  |  |  |
| 141 | 3 | **03_Agroprom** | 11d? | 2005-01-24 | 2005-02-04 |  | 44d |  | Чугай, Рома | 88h |
| 142 | 3.1 | **LevelDesign** | 11d? | 2005-01-24 | 2005-02-04 |  | 44d |  |  |  |
| 143 | 3.1.1 | **Stage 1** | 11d? | 2005-01-24 | 2005-02-04 |  | 44d |  |  |  |
| 144 | 3.1.1.1 | List of Changes | 2d | 2005-01-24 | 2005-01-25 |  | 44d | 0d |  |  |
| 145 | 3.1.1.2 | Changed Geometry | 1d? | 2005-01-26 | 2005-01-26 | 144 | 44d | 0d |  |  |
| 146 | 3.1.1.3 | Check List 1 | 1d? | 2005-01-27 | 2005-01-27 | 145 | 44d | 0d |  |  |
| 147 | 3.1.1.4 | Check List 2 | 1d? | 2005-01-28 | 2005-01-28 | 146 | 44d | 0d |  |  |
| 148 | 3.1.1.5 | Check List 3 | 1d? | 2005-01-29 | 2005-01-29 | 147 | 44d | 0d |  |  |
| 149 | 3.1.1.6 | Check List 4 | 1d? | 2005-01-31 | 2005-01-31 | 148 | 44d | 0d |  |  |
| 150 | 3.1.1.7 | Render Geometry | 1d? | 2005-02-01 | 2005-02-01 | 149 | 44d | 0d |  |  |
| 151 | 3.1.1.8 | Grass | 1d? | 2005-02-02 | 2005-02-02 | 150 | 44d | 0d |  |  |
| 152 | 3.1.1.9 | AI Maps | 1d? | 2005-02-03 | 2005-02-03 | 151 | 44d | 0d |  |  |
| 153 | 3.1.1.10 | Graphs | 1d? | 2005-02-04 | 2005-02-04 | 152 | 44d |  |  |  |
| 155 | 3.2 | **GameDesign** | 3d? | 2005-01-24 | 2005-01-26 |  | 52d |  |  |  |
| 156 | 3.2.1 | **Secrets** | 3d? | 2005-01-24 | 2005-01-26 |  | 52d |  |  |  |
| 157 | 3.2.1.1 | **Stage 1** | 3d? | 2005-01-24 | 2005-01-26 |  | 52d |  |  |  |
| 158 | 3.2.1.1.1 | Design | 1d? | 2005-01-24 | 2005-01-24 |  | 52d | 0d |  |  |
| 159 | 3.2.1.1.2 | Implementation | 1d? | 2005-01-25 | 2005-01-25 | 158 | 52d | 0d |  |  |
| 160 | 3.2.1.1.3 | Tuning | 1d? | 2005-01-26 | 2005-01-26 | 159 | 52d |  |  |  |

| ID | WBS | Task | Duration | Start | Finish | Predecessors | Total slack | Free slack |
| --- | --- | --- | --- | --- | --- | --- | --- | --- |
| 161 | 3.2.2 | **Smartterrains** | 3d? | 2005-01-24 | 2005-01-26 |  | 52d |  |
| 162 | 3.2.2.1 | **Stage 1** | 3d? | 2005-01-24 | 2005-01-26 |  | 52d |  |
| 163 | 3.2.2.1.1 | Design | 1d? | 2005-01-24 | 2005-01-24 |  | 52d | 0d |
| 164 | 3.2.2.1.2 | Implementation | 1d? | 2005-01-25 | 2005-01-25 | 163 | 52d | 0d |
| 165 | 3.2.2.1.3 | Tuning | 1d? | 2005-01-26 | 2005-01-26 | 164 | 52d |  |
| 166 | 3.2.3 | **Monsters/Spawns** | 3d? | 2005-01-24 | 2005-01-26 |  | 52d |  |
| 167 | 3.2.3.1 | **Stage 1** | 3d? | 2005-01-24 | 2005-01-26 |  | 52d |  |
| 168 | 3.2.3.1.1 | Design | 1d? | 2005-01-24 | 2005-01-24 |  | 52d | 0d |
| 169 | 3.2.3.1.2 | Implementation | 1d? | 2005-01-25 | 2005-01-25 | 168 | 52d | 0d |
| 170 | 3.2.3.1.3 | Tuning | 1d? | 2005-01-26 | 2005-01-26 | 169 | 52d |  |
| 171 | 3.2.4 | **Stalkers/Spawns** | 3d? | 2005-01-24 | 2005-01-26 |  | 52d |  |
| 172 | 3.2.4.1 | **Stage 1** | 3d? | 2005-01-24 | 2005-01-26 |  | 52d |  |
| 173 | 3.2.4.1.1 | Design | 1d? | 2005-01-24 | 2005-01-24 |  | 52d | 0d |
| 174 | 3.2.4.1.2 | Implementation | 1d? | 2005-01-25 | 2005-01-25 | 173 | 52d | 0d |
| 175 | 3.2.4.1.3 | Tuning | 1d? | 2005-01-26 | 2005-01-26 | 174 | 52d |  |
| 176 | 3.2.5 | **Anomalies/Spawns** | 3d? | 2005-01-24 | 2005-01-26 |  | 52d |  |
| 177 | 3.2.5.1 | **Stage 1** | 3d? | 2005-01-24 | 2005-01-26 |  | 52d |  |
| 178 | 3.2.5.1.1 | Design | 1d? | 2005-01-24 | 2005-01-24 |  | 52d | 0d |
| 179 | 3.2.5.1.2 | Implementation | 1d? | 2005-01-25 | 2005-01-25 | 178 | 52d | 0d |
| 180 | 3.2.5.1.3 | Tuning | 1d? | 2005-01-26 | 2005-01-26 | 179 | 52d |  |
| 181 | 3.2.6 | **Physicks** | 3d? | 2005-01-24 | 2005-01-26 |  | 52d |  |
| 182 | 3.2.6.1 | **Stage 1** | 3d? | 2005-01-24 | 2005-01-26 |  | 52d |  |
| 183 | 3.2.6.1.1 | Design | 1d? | 2005-01-24 | 2005-01-24 |  | 52d | 0d |
| 184 | 3.2.6.1.2 | Implementation | 1d? | 2005-01-25 | 2005-01-25 | 183 | 52d | 0d |
| 185 | 3.2.6.1.3 | Tuning | 1d? | 2005-01-26 | 2005-01-26 | 184 | 52d |  |

| ID | WBS | Task | Duration | Start | Finish | Predecessors | Total slack | Free slack |
| --- | --- | --- | --- | --- | --- | --- | --- | --- |
| 187 | 3.3 | **Scripts** | 5d? | 2005-01-24 | 2005-01-28 |  | 50d |  |
| 188 | 3.3.1 | **Script 1** | 5d? | 2005-01-24 | 2005-01-28 |  | 50d |  |
| 189 | 3.3.1.1 | Scenario(text) | 1d? | 2005-01-24 | 2005-01-24 |  | 50d | 0d |
| 190 | 3.3.1.2 | Постановка задач | 1d? | 2005-01-25 | 2005-01-25 | 189 | 50d | 0d |
| 191 | 3.3.1.3 | Implimentation | 1d? | 2005-01-26 | 2005-01-26 | 190 | 50d | 0d |
| 192 | 3.3.1.4 | Dilogs/VO/Icons/Objects/Animations | 1d? | 2005-01-27 | 2005-01-27 | 191 | 50d | 0d |
| 193 | 3.3.1.5 | Настройка | 1d? | 2005-01-28 | 2005-01-28 | 192 | 50d |  |
| 194 | 3.3.2 | **Script 2** | 5d? | 2005-01-24 | 2005-01-28 |  | 50d |  |
| 195 | 3.3.2.1 | Scenario(text) | 1d? | 2005-01-24 | 2005-01-24 |  | 50d | 0d |
| 196 | 3.3.2.2 | Постановка задач | 1d? | 2005-01-25 | 2005-01-25 | 195 | 50d | 0d |
| 197 | 3.3.2.3 | Implimentation | 1d? | 2005-01-26 | 2005-01-26 | 196 | 50d | 0d |
| 198 | 3.3.2.4 | Dilogs/VO/Icons/Objects/Animations | 1d? | 2005-01-27 | 2005-01-27 | 197 | 50d | 0d |
| 199 | 3.3.2.5 | Настройка | 1d? | 2005-01-28 | 2005-01-28 | 198 | 50d |  |
| 200 | 3.3.3 | **Script 3** | 5d? | 2005-01-24 | 2005-01-28 |  | 50d |  |
| 201 | 3.3.3.1 | Scenario(text) | 1d? | 2005-01-24 | 2005-01-24 |  | 50d | 0d |
| 202 | 3.3.3.2 | Постановка задач | 1d? | 2005-01-25 | 2005-01-25 | 201 | 50d | 0d |
| 203 | 3.3.3.3 | Implimentation | 1d? | 2005-01-26 | 2005-01-26 | 202 | 50d | 0d |
| 204 | 3.3.3.4 | Dilogs/VO/Icons/Objects/Animations | 1d? | 2005-01-27 | 2005-01-27 | 203 | 50d | 0d |
| 205 | 3.3.3.5 | Настройка | 1d? | 2005-01-28 | 2005-01-28 | 204 | 50d |  |
| 206 | 3.3.4 | **Script 4** | 5d? | 2005-01-24 | 2005-01-28 |  | 50d |  |
| 207 | 3.3.4.1 | Scenario(text) | 1d? | 2005-01-24 | 2005-01-24 |  | 50d | 0d |
| 208 | 3.3.4.2 | Постановка задач | 1d? | 2005-01-25 | 2005-01-25 | 207 | 50d | 0d |
| 209 | 3.3.4.3 | Implimentation | 1d? | 2005-01-26 | 2005-01-26 | 208 | 50d | 0d |
| 210 | 3.3.4.4 | Dilogs/VO/Icons/Objects/Animations | 1d? | 2005-01-27 | 2005-01-27 | 209 | 50d | 0d |
| 211 | 3.3.4.5 | Настройка | 1d? | 2005-01-28 | 2005-01-28 | 210 | 50d |  |

| ID | WBS | Task | Duration | Start | Finish | Predecessors | Total slack | Free slack | Resources | Work |
| --- | --- | --- | --- | --- | --- | --- | --- | --- | --- | --- |
| 212 | 3.3.5 | **Script 5** | 5d? | 2005-01-24 | 2005-01-28 |  | 50d |  |  |  |
| 213 | 3.3.5.1 | Scenario(text) | 1d? | 2005-01-24 | 2005-01-24 |  | 50d | 0d |  |  |
| 214 | 3.3.5.2 | Постановка задач | 1d? | 2005-01-25 | 2005-01-25 | 213 | 50d | 0d |  |  |
| 215 | 3.3.5.3 | Implimentation | 1d? | 2005-01-26 | 2005-01-26 | 214 | 50d | 0d |  |  |
| 216 | 3.3.5.4 | Dilogs/VO/Icons/Objects/Animations | 1d? | 2005-01-27 | 2005-01-27 | 215 | 50d | 0d |  |  |
| 217 | 3.3.5.5 | Настройка | 1d? | 2005-01-28 | 2005-01-28 | 216 | 50d |  |  |  |
| 219 | 4 | **04_Agroprom_Underground** | 11d? | 2005-01-24 | 2005-02-04 |  | 44d |  | Чугай, Рома | 88h |
| 220 | 4.1 | **LevelDesign** | 11d? | 2005-01-24 | 2005-02-04 |  | 44d |  |  |  |
| 221 | 4.1.1 | **Stage 1** | 11d? | 2005-01-24 | 2005-02-04 |  | 44d |  |  |  |
| 222 | 4.1.1.1 | List of Changes | 2d | 2005-01-24 | 2005-01-25 |  | 44d | 0d |  |  |
| 223 | 4.1.1.2 | Changed Geometry | 1d? | 2005-01-26 | 2005-01-26 | 222 | 44d | 0d |  |  |
| 224 | 4.1.1.3 | Check List 1 | 1d? | 2005-01-27 | 2005-01-27 | 223 | 44d | 0d |  |  |
| 225 | 4.1.1.4 | Check List 2 | 1d? | 2005-01-28 | 2005-01-28 | 224 | 44d | 0d |  |  |
| 226 | 4.1.1.5 | Check List 3 | 1d? | 2005-01-29 | 2005-01-29 | 225 | 44d | 0d |  |  |
| 227 | 4.1.1.6 | Check List 4 | 1d? | 2005-01-31 | 2005-01-31 | 226 | 44d | 0d |  |  |
| 228 | 4.1.1.7 | Render Geometry | 1d? | 2005-02-01 | 2005-02-01 | 227 | 44d | 0d |  |  |
| 229 | 4.1.1.8 | Grass | 1d? | 2005-02-02 | 2005-02-02 | 228 | 44d | 0d |  |  |
| 230 | 4.1.1.9 | AI Maps | 1d? | 2005-02-03 | 2005-02-03 | 229 | 44d | 0d |  |  |
| 231 | 4.1.1.10 | Graphs | 1d? | 2005-02-04 | 2005-02-04 | 230 | 44d |  |  |  |
| 233 | 4.2 | **GameDesign** | 3d? | 2005-01-24 | 2005-01-26 |  | 52d |  |  |  |
| 234 | 4.2.1 | **Secrets** | 3d? | 2005-01-24 | 2005-01-26 |  | 52d |  |  |  |
| 235 | 4.2.1.1 | **Stage 1** | 3d? | 2005-01-24 | 2005-01-26 |  | 52d |  |  |  |
| 236 | 4.2.1.1.1 | Design | 1d? | 2005-01-24 | 2005-01-24 |  | 52d | 0d |  |  |
| 237 | 4.2.1.1.2 | Implementation | 1d? | 2005-01-25 | 2005-01-25 | 236 | 52d | 0d |  |  |
| 238 | 4.2.1.1.3 | Tuning | 1d? | 2005-01-26 | 2005-01-26 | 237 | 52d |  |  |  |

| ID | WBS | Task | Duration | Start | Finish | Predecessors | Total slack | Free slack |
| --- | --- | --- | --- | --- | --- | --- | --- | --- |
| 239 | 4.2.2 | **Smartterrains** | 3d? | 2005-01-24 | 2005-01-26 |  | 52d |  |
| 240 | 4.2.2.1 | **Stage 1** | 3d? | 2005-01-24 | 2005-01-26 |  | 52d |  |
| 241 | 4.2.2.1.1 | Design | 1d? | 2005-01-24 | 2005-01-24 |  | 52d | 0d |
| 242 | 4.2.2.1.2 | Implementation | 1d? | 2005-01-25 | 2005-01-25 | 241 | 52d | 0d |
| 243 | 4.2.2.1.3 | Tuning | 1d? | 2005-01-26 | 2005-01-26 | 242 | 52d |  |
| 244 | 4.2.3 | **Monsters/Spawns** | 3d? | 2005-01-24 | 2005-01-26 |  | 52d |  |
| 245 | 4.2.3.1 | **Stage 1** | 3d? | 2005-01-24 | 2005-01-26 |  | 52d |  |
| 246 | 4.2.3.1.1 | Design | 1d? | 2005-01-24 | 2005-01-24 |  | 52d | 0d |
| 247 | 4.2.3.1.2 | Implementation | 1d? | 2005-01-25 | 2005-01-25 | 246 | 52d | 0d |
| 248 | 4.2.3.1.3 | Tuning | 1d? | 2005-01-26 | 2005-01-26 | 247 | 52d |  |
| 249 | 4.2.4 | **Stalkers/Spawns** | 3d? | 2005-01-24 | 2005-01-26 |  | 52d |  |
| 250 | 4.2.4.1 | **Stage 1** | 3d? | 2005-01-24 | 2005-01-26 |  | 52d |  |
| 251 | 4.2.4.1.1 | Design | 1d? | 2005-01-24 | 2005-01-24 |  | 52d | 0d |
| 252 | 4.2.4.1.2 | Implementation | 1d? | 2005-01-25 | 2005-01-25 | 251 | 52d | 0d |
| 253 | 4.2.4.1.3 | Tuning | 1d? | 2005-01-26 | 2005-01-26 | 252 | 52d |  |
| 254 | 4.2.5 | **Anomalies/Spawns** | 3d? | 2005-01-24 | 2005-01-26 |  | 52d |  |
| 255 | 4.2.5.1 | **Stage 1** | 3d? | 2005-01-24 | 2005-01-26 |  | 52d |  |
| 256 | 4.2.5.1.1 | Design | 1d? | 2005-01-24 | 2005-01-24 |  | 52d | 0d |
| 257 | 4.2.5.1.2 | Implementation | 1d? | 2005-01-25 | 2005-01-25 | 256 | 52d | 0d |
| 258 | 4.2.5.1.3 | Tuning | 1d? | 2005-01-26 | 2005-01-26 | 257 | 52d |  |
| 259 | 4.2.6 | **Physicks** | 3d? | 2005-01-24 | 2005-01-26 |  | 52d |  |
| 260 | 4.2.6.1 | **Stage 1** | 3d? | 2005-01-24 | 2005-01-26 |  | 52d |  |
| 261 | 4.2.6.1.1 | Design | 1d? | 2005-01-24 | 2005-01-24 |  | 52d | 0d |
| 262 | 4.2.6.1.2 | Implementation | 1d? | 2005-01-25 | 2005-01-25 | 261 | 52d | 0d |
| 263 | 4.2.6.1.3 | Tuning | 1d? | 2005-01-26 | 2005-01-26 | 262 | 52d |  |

| ID | WBS | Task | Duration | Start | Finish | Predecessors | Total slack | Free slack |
| --- | --- | --- | --- | --- | --- | --- | --- | --- |
| 265 | 4.3 | **Scripts** | 5d? | 2005-01-24 | 2005-01-28 |  | 50d |  |
| 266 | 4.3.1 | **Script 1** | 5d? | 2005-01-24 | 2005-01-28 |  | 50d |  |
| 267 | 4.3.1.1 | Scenario(text) | 1d? | 2005-01-24 | 2005-01-24 |  | 50d | 0d |
| 268 | 4.3.1.2 | Постановка задач | 1d? | 2005-01-25 | 2005-01-25 | 267 | 50d | 0d |
| 269 | 4.3.1.3 | Implimentation | 1d? | 2005-01-26 | 2005-01-26 | 268 | 50d | 0d |
| 270 | 4.3.1.4 | Dilogs/VO/Icons/Objects/Animations | 1d? | 2005-01-27 | 2005-01-27 | 269 | 50d | 0d |
| 271 | 4.3.1.5 | Настройка | 1d? | 2005-01-28 | 2005-01-28 | 270 | 50d |  |
| 272 | 4.3.2 | **Script 2** | 5d? | 2005-01-24 | 2005-01-28 |  | 50d |  |
| 273 | 4.3.2.1 | Scenario(text) | 1d? | 2005-01-24 | 2005-01-24 |  | 50d | 0d |
| 274 | 4.3.2.2 | Постановка задач | 1d? | 2005-01-25 | 2005-01-25 | 273 | 50d | 0d |
| 275 | 4.3.2.3 | Implimentation | 1d? | 2005-01-26 | 2005-01-26 | 274 | 50d | 0d |
| 276 | 4.3.2.4 | Dilogs/VO/Icons/Objects/Animations | 1d? | 2005-01-27 | 2005-01-27 | 275 | 50d | 0d |
| 277 | 4.3.2.5 | Настройка | 1d? | 2005-01-28 | 2005-01-28 | 276 | 50d |  |
| 278 | 4.3.3 | **Script 3** | 5d? | 2005-01-24 | 2005-01-28 |  | 50d |  |
| 279 | 4.3.3.1 | Scenario(text) | 1d? | 2005-01-24 | 2005-01-24 |  | 50d | 0d |
| 280 | 4.3.3.2 | Постановка задач | 1d? | 2005-01-25 | 2005-01-25 | 279 | 50d | 0d |
| 281 | 4.3.3.3 | Implimentation | 1d? | 2005-01-26 | 2005-01-26 | 280 | 50d | 0d |
| 282 | 4.3.3.4 | Dilogs/VO/Icons/Objects/Animations | 1d? | 2005-01-27 | 2005-01-27 | 281 | 50d | 0d |
| 283 | 4.3.3.5 | Настройка | 1d? | 2005-01-28 | 2005-01-28 | 282 | 50d |  |
| 284 | 4.3.4 | **Script 4** | 5d? | 2005-01-24 | 2005-01-28 |  | 50d |  |
| 285 | 4.3.4.1 | Scenario(text) | 1d? | 2005-01-24 | 2005-01-24 |  | 50d | 0d |
| 286 | 4.3.4.2 | Постановка задач | 1d? | 2005-01-25 | 2005-01-25 | 285 | 50d | 0d |
| 287 | 4.3.4.3 | Implimentation | 1d? | 2005-01-26 | 2005-01-26 | 286 | 50d | 0d |
| 288 | 4.3.4.4 | Dilogs/VO/Icons/Objects/Animations | 1d? | 2005-01-27 | 2005-01-27 | 287 | 50d | 0d |
| 289 | 4.3.4.5 | Настройка | 1d? | 2005-01-28 | 2005-01-28 | 288 | 50d |  |

| ID | WBS | Task | Duration | Start | Finish | Predecessors | Complete | Remaining | Total slack | Free slack | Constraint | Deadline | Resources | Work | Actual work |
| --- | --- | --- | --- | --- | --- | --- | --- | --- | --- | --- | --- | --- | --- | --- | --- |
| 290 | 4.3.5 | **Script 5** | 5d? | 2005-01-24 | 2005-01-28 |  |  |  | 50d |  |  |  |  |  |  |
| 291 | 4.3.5.1 | Scenario(text) | 1d? | 2005-01-24 | 2005-01-24 |  |  |  | 50d | 0d |  |  |  |  |  |
| 292 | 4.3.5.2 | Постановка задач | 1d? | 2005-01-25 | 2005-01-25 | 291 |  |  | 50d | 0d |  |  |  |  |  |
| 293 | 4.3.5.3 | Implimentation | 1d? | 2005-01-26 | 2005-01-26 | 292 |  |  | 50d | 0d |  |  |  |  |  |
| 294 | 4.3.5.4 | Dilogs/VO/Icons/Objects/Animations | 1d? | 2005-01-27 | 2005-01-27 | 293 |  |  | 50d | 0d |  |  |  |  |  |
| 295 | 4.3.5.5 | Настройка | 1d? | 2005-01-28 | 2005-01-28 | 294 |  |  | 50d |  |  |  |  |  |  |
| 301 | 5 | **05_Dark_Valley** | 29.88d? | 2005-01-24 A | 2005-02-26 |  | 7% | 27.93d? | -9d | 0d |  | 2005-03-01 | Рома, Змей | 863h | 78.58h |
| 302 | 5.1 | **LevelDesign** | 11d? | 2005-01-24 | 2005-02-04 |  |  |  | 1.88d |  |  | 2005-02-07 | Rainbow, Ефимов Владимир | 88h |  |
| 303 | 5.1.1 | **Stage 1** | 11d? | 2005-01-24 | 2005-02-04 |  |  |  | 1.88d |  |  |  |  |  |  |
| 304 | 5.1.1.1 | List of Changes | 2d | 2005-01-24 | 2005-01-25 |  |  |  | 1.88d | 0d | start no earlier than 2005-01-24 |  |  |  |  |
| 305 | 5.1.1.2 | Changed Geometry | 1d? | 2005-01-26 | 2005-01-26 | 304 |  |  | 1.88d | 0d |  |  |  |  |  |
| 306 | 5.1.1.3 | Check List 1 | 1d? | 2005-01-27 | 2005-01-27 | 305 |  |  | 1.88d | 0d |  |  |  |  |  |
| 307 | 5.1.1.4 | Check List 2 | 1d? | 2005-01-28 | 2005-01-28 | 306 |  |  | 1.88d | 0d |  |  |  |  |  |
| 308 | 5.1.1.5 | Check List 3 | 1d? | 2005-01-29 | 2005-01-29 | 307 |  |  | 1.88d | 0d |  |  |  |  |  |
| 309 | 5.1.1.6 | Check List 4 | 1d? | 2005-01-31 | 2005-01-31 | 308 |  |  | 1.88d | 0d |  |  |  |  |  |
| 310 | 5.1.1.7 | Render Geometry | 1d? | 2005-02-01 | 2005-02-01 | 309 |  |  | 1.88d | 0d |  |  |  |  |  |
| 311 | 5.1.1.8 | Grass | 1d? | 2005-02-02 | 2005-02-02 | 310 |  |  | 1.88d | 0d |  |  |  |  |  |
| 312 | 5.1.1.9 | AI Maps | 1d? | 2005-02-03 | 2005-02-03 | 311 |  |  | 1.88d | 0d |  |  |  |  |  |
| 313 | 5.1.1.10 | Graphs | 1d? | 2005-02-04 | 2005-02-04 | 312 |  |  | 1.88d |  |  |  |  |  |  |
| 315 | 5.2 | **GameDesign** | 20d? | 2005-01-24 | 2005-02-15 |  |  |  | 0.88d |  |  |  |  | 23h |  |
| 316 | 5.2.1 | AI Maps/Graphs | 2.88d? | 2005-02-01 | 2005-02-03 |  |  |  | 11d |  | finish no earlier than 2005-02-03 |  | Шишкин | 23h |  |
| 317 | 5.2.2 | **Secrets** | 3d? | 2005-01-24 | 2005-01-26 |  |  |  | 17.88d |  |  |  |  |  |  |
| 318 | 5.2.2.1 | **Stage 1** | 3d? | 2005-01-24 | 2005-01-26 |  |  |  | 17.88d |  |  |  |  |  |  |
| 319 | 5.2.2.1.1 | Design | 1d? | 2005-01-24 | 2005-01-24 |  |  |  | 17.88d | 0d |  |  |  |  |  |
| 320 | 5.2.2.1.2 | Implementation | 1d? | 2005-01-25 | 2005-01-25 | 319 |  |  | 17.88d | 0d |  |  |  |  |  |
| 321 | 5.2.2.1.3 | Tuning | 1d? | 2005-01-26 | 2005-01-26 | 320 |  |  | 17.88d |  |  |  |  |  |  |

| ID | WBS | Task | Duration | Start | Finish | Predecessors | Total slack | Free slack | Constraint |
| --- | --- | --- | --- | --- | --- | --- | --- | --- | --- |
| 322 | 5.2.3 | **Smartterrains** | 3d? | 2005-01-24 | 2005-01-26 |  | 17.88d |  |  |
| 323 | 5.2.3.1 | **Stage 1** | 3d? | 2005-01-24 | 2005-01-26 |  | 17.88d |  |  |
| 324 | 5.2.3.1.1 | Design | 1d? | 2005-01-24 | 2005-01-24 |  | 17.88d | 0d |  |
| 325 | 5.2.3.1.2 | Implementation | 1d? | 2005-01-25 | 2005-01-25 | 324 | 17.88d | 0d |  |
| 326 | 5.2.3.1.3 | Tuning | 1d? | 2005-01-26 | 2005-01-26 | 325 | 17.88d |  |  |
| 327 | 5.2.4 | **Monsters/Spawns** | 20d? | 2005-01-24 | 2005-02-15 |  | 0.88d |  |  |
| 328 | 5.2.4.1 | **Stage 1** | 20d? | 2005-01-24 | 2005-02-15 |  | 0.88d |  |  |
| 329 | 5.2.4.1.1 | Design | 1d? | 2005-01-24 | 2005-01-24 |  | 19.88d |  |  |
| 330 | 5.2.4.1.2 | Implementation | 1d? | 2005-02-14 | 2005-02-14 |  | 0.88d | 0d | start no earlier than 2005-02-14 |
| 331 | 5.2.4.1.3 | Tuning | 1d? | 2005-02-15 | 2005-02-15 | 330 | 0.88d |  |  |
| 332 | 5.2.5 | **Stalkers/Spawns** | 3d? | 2005-01-24 | 2005-01-26 |  | 17.88d |  |  |
| 333 | 5.2.5.1 | **Stage 1** | 3d? | 2005-01-24 | 2005-01-26 |  | 17.88d |  |  |
| 334 | 5.2.5.1.1 | Design | 1d? | 2005-01-24 | 2005-01-24 |  | 17.88d | 0d |  |
| 335 | 5.2.5.1.2 | Implementation | 1d? | 2005-01-25 | 2005-01-25 | 334 | 17.88d | 0d |  |
| 336 | 5.2.5.1.3 | Tuning | 1d? | 2005-01-26 | 2005-01-26 | 335 | 17.88d |  |  |
| 337 | 5.2.6 | **Anomalies/Spawns** | 3d? | 2005-01-24 | 2005-01-26 |  | 17.88d |  |  |
| 338 | 5.2.6.1 | **Stage 1** | 3d? | 2005-01-24 | 2005-01-26 |  | 17.88d |  |  |
| 339 | 5.2.6.1.1 | Design | 1d? | 2005-01-24 | 2005-01-24 |  | 17.88d | 0d |  |
| 340 | 5.2.6.1.2 | Implementation | 1d? | 2005-01-25 | 2005-01-25 | 339 | 17.88d | 0d |  |
| 341 | 5.2.6.1.3 | Tuning | 1d? | 2005-01-26 | 2005-01-26 | 340 | 17.88d |  |  |
| 342 | 5.2.7 | **Physicks** | 3d? | 2005-01-24 | 2005-01-26 |  | 17.88d |  |  |
| 343 | 5.2.7.1 | **Stage 1** | 3d? | 2005-01-24 | 2005-01-26 |  | 17.88d |  |  |
| 344 | 5.2.7.1.1 | Design | 1d? | 2005-01-24 | 2005-01-24 |  | 17.88d | 0d |  |
| 345 | 5.2.7.1.2 | Implementation | 1d? | 2005-01-25 | 2005-01-25 | 344 | 17.88d | 0d |  |
| 346 | 5.2.7.1.3 | Tuning | 1d? | 2005-01-26 | 2005-01-26 | 345 | 17.88d |  |  |

| ID | WBS | Task | Type | Duration | Start | Finish | Predecessors | Complete | Remaining | Total slack | Free slack | Constraint | Deadline | Resources | Work | Actual work |
| --- | --- | --- | --- | --- | --- | --- | --- | --- | --- | --- | --- | --- | --- | --- | --- | --- |
| 348 | 5.3 | **Scripts** |  | 26.88d? | 2005-01-27 A | 2005-02-26 |  | 9% | 24.49d? | -9d | 0d |  | 2005-03-01 |  | 513h | 63h |
| 349 | 5.3.1 | Сценарий (текст) |  | 3.88d | 2005-01-27 A | 2005-01-31 A |  | 100% |  |  |  |  |  | Шишкин | 31h | 31h |
| 350 | 5.3.2 | **Сцена 1 - Гулаг Бандитов.** |  | 6d? | 2005-02-01 A | 2005-02-07 |  | 14% | 5.14d? | 7.88d |  |  |  |  | 48h | 8h |
| 351 | 5.3.2.1 | Постановка задач |  | 1d | 2005-02-01 A | 2005-02-01 A |  | 100% |  |  |  | start no earlier than 2005-02-01 |  | Шишкин | 8h | 8h |
| 352 | 5.3.2.2 | **Реализация** |  | 1d? | 2005-02-02 | 2005-02-02 | 351 |  |  | 11.88d |  |  |  |  | 16h |  |
| 353 | 5.3.2.2.1 | Реализация |  | 1d | 2005-02-02 | 2005-02-02 | 351 |  |  | 11.88d |  | start no earlier than 2005-02-02 |  | Змей | 8h |  |
| 354 | 5.3.2.2.2 | Доработки (анимации лидера) |  | 1d? | 2005-02-02 | 2005-02-02 |  |  |  | 11.88d |  |  |  | Вова | 8h |  |
| 355 | 5.3.2.3 | Расстановка |  | 2d | 2005-02-04 | 2005-02-05 |  |  |  | 8.88d | 0d | start no earlier than 2005-02-04 |  | Шишкин | 16h |  |
| 356 | 5.3.2.4 | Тексты, Диалоги, Задания, Отметки на карте, новости, профили персонажей (продумать) | milestone | 0d | 2005-02-05 | 2005-02-05 | 355 |  |  | 8.88d |  | start no earlier than 2005-02-05 |  | Шишкин |  |  |
| 357 | 5.3.2.5 | **Тестирование** |  | 1d | 2005-02-07 | 2005-02-07 |  |  |  | 7.88d |  |  |  |  | 8h |  |
| 358 | 5.3.2.5.1 | Тестирование |  | 1d | 2005-02-07 | 2005-02-07 |  |  |  | 7.88d |  | start no earlier than 2005-02-07 |  |  |  |  |
| 359 | 5.3.2.5.2 | Проверить расстановку AI нод вокруг дерева |  | 1d | 2005-02-07 | 2005-02-07 |  |  |  | 7.88d |  | start no earlier than 2005-02-07 |  | Partizan | 8h |  |
| 360 | 5.3.3 | **Сцена 2 - Падающий кровосос.** |  | 7d? | 2005-02-01 A | 2005-02-08 |  | 17% | 5.83d? | 6.88d |  |  |  |  | 32h | 8h |
| 361 | 5.3.3.1 | Постановка задач |  | 1d | 2005-02-01 A | 2005-02-01 A |  | 100% |  |  |  | start no earlier than 2005-02-01 |  | Шишкин | 8h | 8h |
| 362 | 5.3.3.2 | **Реализация** |  | 4d | 2005-02-03 | 2005-02-07 |  |  |  | 7.88d |  |  |  |  | 24h |  |
| 363 | 5.3.3.2.1 | Реализация |  | 1d | 2005-02-03 | 2005-02-03 |  |  |  | 10.88d |  | start no earlier than 2005-02-03 |  | Змей | 8h |  |
| 364 | 5.3.3.2.2 | Расстановка |  | 1d | 2005-02-07 | 2005-02-07 |  |  |  | 7.88d |  | start no earlier than 2005-02-07 |  | Шишкин | 8h |  |
| 365 | 5.3.3.2.3 | Тексты, Диалоги, Задания, Отметки на карте, новости, профили персонажей (продумать) |  | 1d | 2005-02-07 | 2005-02-07 |  |  |  | 7.88d |  | start no earlier than 2005-02-07 |  | Шишкин | 8h |  |
| 366 | 5.3.3.3 | **Тестирование** |  | 1d? | 2005-02-08 | 2005-02-08 |  |  |  | 6.88d |  |  |  |  |  |  |
| 367 | 5.3.3.3.1 | Тестирование |  | 1d | 2005-02-08 | 2005-02-08 |  |  |  | 6.88d |  | start no earlier than 2005-02-08 |  |  |  |  |
| 368 | 5.3.3.3.2 | Проверить расстановку AI нод вокруг дерева |  | 1d? | 2005-02-08 | 2005-02-08 |  |  |  | 6.88d |  | start no earlier than 2005-02-08 |  |  |  |  |
| 369 | 5.3.4 | **Сцена 3 - Переброска пленного.** |  | 7d? | 2005-02-01 A | 2005-02-08 |  | 15% | 5.96d? | 6.88d |  |  |  |  | 38h | 8h |
| 370 | 5.3.4.1 | Постановка задач |  | 1d? | 2005-02-01 A | 2005-02-01 A |  | 100% |  |  |  | start no earlier than 2005-02-01 |  | Шишкин | 8h | 8h |
| 371 | 5.3.4.2 | **Реализация** |  | 3d? | 2005-02-04 | 2005-02-07 |  |  |  | 7.88d |  |  |  |  | 30h |  |
| 372 | 5.3.4.2.1 | Реализация |  | 1.75d | 2005-02-04 | 2005-02-05 |  |  |  | 9.12d |  | finish no earlier than 2005-02-05 |  | Змей | 14h |  |
| 373 | 5.3.4.2.2 | Расстановка |  | 1d? | 2005-02-07 | 2005-02-07 |  |  |  | 7.88d |  | start no earlier than 2005-02-07 |  | Шишкин | 8h |  |
| 374 | 5.3.4.2.3 | Тексты, Диалоги, Задания, Отметки на карте, новости, профили персонажей (продумать) |  | 1d? | 2005-02-07 | 2005-02-07 |  |  |  | 7.88d |  | start no earlier than 2005-02-07 |  | Шишкин | 8h |  |

Notes:
- 349: В Темной Долине ключевые места это Лагерь Бандитов и База Монолита. Ну уровне много грузовиков смерти и трупов, в ПДА которых прописаны различные задания на убийство. Игрок при переходе с Гарбэджа натыкается на засады бандитов. В Лагерь бандитов можно попасть через трубу (она описывается или дается план новичком из драммомента, инфа в ПДА Серого, Лидер Долга). В лагере игрок может узнать пароль для прохода на территорию Базы Монолита, получить ключ в лабораторию Х18 и бандитский костюм. Если игрок убьет Борова (лидера бандитов), то активируется скрипт «Преследование игрока на Болотах бандитами в кожаных плащах». Игрок должен проникнуть на Базу Монолита (в костюме бандита мирно или с войной, убивая всех монолитовцев). Там он должен найти вход в Лабораторию Х18.
- 350: Очень много бандитов, кэмпы у костра, спящие, раненые, патрули по территории лагеря. В отдельном помещении сидит лидер группировки Боров. У Борова хранится ключ к Лаборатории Х18. Его охраняют несколько крутых бандитов в плащах с капюшонами. При убийстве Борова включается инфопоршн «Преследование игрока на Болотах бандитами в кожаных плащах». По территории лагеря расставлены часовые, на вышках снайперы.
- 360: Если игрок решит пробираться в Лагерь Бандитов через трубу, за 5 метров до выхода из нее он слышит крики «Сука, как ты сюда пробрался?», «Мочи его, ребята!» и начинается стрельба. Если игрок застыл на месте или убежал, испугавшись, что это ЕГО заметили, стрельба продолжается еще секунд 15, потом сверху падает кровосос. Если игрок все же подойдет к выходу из трубы, практически ему на голову сверху свалится мертвое тело кровососа. Слышит «Получи, тварь!». Атакующие бандиты расходятся по местам.
- 369: Скрипт срабатывает при приближении игрока к дороге. В Лагере Бандитов спавнятся три бандита и один пленный сталкер. Бандиты ведут сталкера к Базе Монолита по дороге впереди пленный, сзади три охранника с автоматами, которые время от времени «подбадривают» пленного фразами вроде: «Ну, я тебе не завидую», «Скоро ты будешь работать обедом для мутантов в темном подземелье», «Готовься к фуршету, чувак. Ты основное блюдо!». Сталкер посылает по ПДА просьбы о помощи. Если игрок расстрелял бандитов, пленный сталкер в благодарность рассказывает, что только что бандиты вспоминали пароль для входа на Базу Монолита. Пароль этот «такой-то». А пройти на Базу можно, переодевшись в костюм бандита. Если игрок не обращает внимания на это событие, по достижении определенной точки (расположенной довольно близко к Базе Монолита) пленный не выдерживает, в панике сбегает с дороги и, петляя, пытается убежать. Бандиты остаются на дороге, поднимают автоматы и расстреливают беднягу, после чего возвращаются в Лагерь.

| ID | WBS | Task | Duration | Start | Finish | Predecessors | Complete | Remaining | Total slack | Constraint | Resources | Work | Actual work |
| --- | --- | --- | --- | --- | --- | --- | --- | --- | --- | --- | --- | --- | --- |
| 375 | 5.3.4.3 | **Тестирование** | 1d? | 2005-02-08 | 2005-02-08 |  |  |  | 6.88d |  |  |  |  |
| 376 | 5.3.4.3.1 | Тестирование | 1d? | 2005-02-08 | 2005-02-08 |  |  |  | 6.88d | start no earlier than 2005-02-08 |  |  |  |
| 377 | 5.3.4.3.2 | Проверить расстановку AI нод вокруг дерева | 1d? | 2005-02-08 | 2005-02-08 |  |  |  | 6.88d | start no earlier than 2005-02-08 |  |  |  |
| 378 | 5.3.5 | **Сцена 4 - Гулаг Монолита.** | 9.88d? | 2005-02-01 A | 2005-02-11 |  | 7% | 9.19d? | 4d |  |  | 69h | 8h |
| 379 | 5.3.5.1 | Постановка задач | 1d? | 2005-02-01 A | 2005-02-01 A |  | 100% |  |  | start no earlier than 2005-02-01 | Шишкин | 8h | 8h |
| 380 | 5.3.5.2 | **Реализация** | 3.88d | 2005-02-07 | 2005-02-10 | 379 |  |  | 5d |  |  | 31h |  |
| 381 | 5.3.5.2.1 | Реализация | 3.88d | 2005-02-07 | 2005-02-10 | 379 |  |  | 5d | finish no earlier than 2005-02-10 | Змей | 31h |  |
| 382 | 5.3.5.3 | Расстановка | 2.88d | 2005-02-08 | 2005-02-10 | 349 |  |  | 5d | finish no earlier than 2005-02-10 | Шишкин | 23h |  |
| 383 | 5.3.5.4 | Тексты, Диалоги, Задания, Отметки на карте, новости, профили персонажей (продумать) | 0.88d | 2005-02-10 | 2005-02-10 |  |  |  | 5d | finish no earlier than 2005-02-10 | Шишкин | 7h |  |
| 384 | 5.3.5.5 | **Тестирование** | 2.88d? | 2005-02-09 | 2005-02-11 |  |  |  | 4d |  |  |  |  |
| 385 | 5.3.5.5.1 | Тестирование | 2.88d | 2005-02-09 | 2005-02-11 |  |  |  | 4d | finish no earlier than 2005-02-11 |  |  |  |
| 386 | 5.3.5.5.2 | Проверить расстановку AI нод вокруг дерева | 2.88d? | 2005-02-09 | 2005-02-11 |  |  |  | 4d | start no earlier than 2005-02-09 |  |  |  |
| 387 | 5.3.6 | **Сцена 5 - SOS с бензоколонки.** | 10d? | 2005-02-01 | 2005-02-11 |  |  |  | 3.88d |  |  | 30h |  |
| 388 | 5.3.6.1 | Постановка задач | 1d? | 2005-02-01 | 2005-02-01 |  |  |  | 12.88d | start no earlier than 2005-02-01 | Shyshkin | 8h |  |
| 389 | 5.3.6.2 | **Реализация** | 1d? | 2005-02-11 | 2005-02-11 |  |  |  | 3.88d |  |  | 22h |  |
| 390 | 5.3.6.2.1 | Реализация | 0.88d | 2005-02-11 | 2005-02-11 |  |  |  | 4d | finish no earlier than 2005-02-11 | Змей | 7h |  |
| 391 | 5.3.6.2.2 | Расстановка | 0.88d | 2005-02-11 | 2005-02-11 |  |  |  | 4d | finish no earlier than 2005-02-11 | Шишкин | 7h |  |
| 392 | 5.3.6.2.3 | Тексты, Диалоги, Задания, Отметки на карте, новости, профили персонажей (продумать) | 1d? | 2005-02-11 | 2005-02-11 |  |  |  | 3.88d | start no earlier than 2005-02-11 | Шишкин | 8h |  |
| 393 | 5.3.6.3 | **Тестирование** | 0.88d? | 2005-02-11 | 2005-02-11 |  |  |  | 4d |  |  |  |  |
| 394 | 5.3.6.3.1 | Тестирование | 0.88d? | 2005-02-11 | 2005-02-11 |  |  |  | 4d | finish no earlier than 2005-02-11 |  |  |  |
| 395 | 5.3.6.3.2 | Проверить расстановку AI нод вокруг дерева | 0.88d? | 2005-02-11 | 2005-02-11 |  |  |  | 4d | finish no earlier than 2005-02-11 |  |  |  |
| 396 | 5.3.7 | **Сцена 6 - Прибытие автомобиля.** | 11d? | 2005-02-01 | 2005-02-12 |  |  |  | 2.88d |  |  | 30h |  |
| 397 | 5.3.7.1 | Постановка задач | 1d? | 2005-02-01 | 2005-02-01 |  |  |  | 12.88d | start no earlier than 2005-02-01 | Shyshkin | 8h |  |
| 398 | 5.3.7.2 | **Реализация** | 1d? | 2005-02-12 | 2005-02-12 |  |  |  | 2.88d |  |  | 22h |  |
| 399 | 5.3.7.2.1 | Реализация | 0.88d | 2005-02-12 | 2005-02-12 |  |  |  | 3d | start no earlier than 2005-02-12 | Змей | 7h |  |
| 400 | 5.3.7.2.2 | Расстановка | 0.88d | 2005-02-12 | 2005-02-12 |  |  |  | 3d | start no earlier than 2005-02-12 | Шишкин | 7h |  |
| 401 | 5.3.7.2.3 | Тексты, Диалоги, Задания, Отметки на карте, новости, профили персонажей (продумать) | 1d? | 2005-02-12 | 2005-02-12 |  |  |  | 2.88d | start no earlier than 2005-02-12 | Шишкин | 8h |  |

Notes:
- 378: Много зомбированных сталкеров группировки Монолит. У командиров отделений ключи от лаборатории Х18. Патрульные усиленно охраняют входы, расставить в местах, где игрок не сможет их «снять» с расстояния снайперкой. В обычном режиме монолитовцы сразу открывают огонь по игроку, только увидев его (однако за территорию Базы их выманить невозможно стоит рестриктор). Если игрок одет в костюм Бандита зоунгарды Монолита на входах остановят игрока, потребуют сказать пароль, при правильном ответе пропускают. Если игрок в костюме бандита стрельнет по монолитовцу или снимет костюм, монолитовцы раз и навсегда обижаются на игрока.
- 387: Игрок получает сигнал SOS из здания рядом с бензоколонкой. Игрок приходит туда, видит прямо от входа возле стены в освещенном единственной лампочкой месте полумертвого сталкера. Когда игрок входит в комнату, он замечает справа и слева от входа в тени много трупов сталкеров, солдат. Из темной комнаты слева от входа выбегает кровосос, перекрывая выход, направляется к игроку и нападает.
- 396: Когда игрок заходит на территорию бензоколонки, он слышит приближающийся рокот двигателя, к главному входу на Базу Монолита подъезжает Камаз, из него выгружаются 4-5 человек и идут в здание Базы.

| ID | WBS | Task | Duration | Start | Finish | Total slack | Free slack | Constraint | Resources | Work |
| --- | --- | --- | --- | --- | --- | --- | --- | --- | --- | --- |
| 402 | 5.3.7.3 | **Тестирование** | 0.88d? | 2005-02-12 | 2005-02-12 | 3d |  |  |  |  |
| 403 | 5.3.7.3.1 | Тестирование | 0.88d? | 2005-02-12 | 2005-02-12 | 3d |  | start no earlier than 2005-02-12 |  |  |
| 404 | 5.3.7.3.2 | Проверить расстановку AI нод вокруг дерева | 0.88d? | 2005-02-12 | 2005-02-12 | 3d |  | start no earlier than 2005-02-12 |  |  |
| 405 | 5.3.8 | **Сцена 7 - Развод лоха.** | 13d? | 2005-02-01 | 2005-02-15 | 0.88d |  |  |  | 38h |
| 406 | 5.3.8.1 | Постановка задач | 1d? | 2005-02-01 | 2005-02-01 | 12.88d |  | start no earlier than 2005-02-01 | Shyshkin | 8h |
| 407 | 5.3.8.2 | **Реализация** | 2d? | 2005-02-14 | 2005-02-15 | 0.88d |  |  |  | 30h |
| 408 | 5.3.8.2.1 | Реализация | 1.88d | 2005-02-14 | 2005-02-15 | 1d |  | finish no earlier than 2005-02-15 | Змей | 15h |
| 409 | 5.3.8.2.2 | Расстановка | 0.88d | 2005-02-15 | 2005-02-15 | 1d |  | start no earlier than 2005-02-15 | Шишкин | 7h |
| 410 | 5.3.8.2.3 | Тексты, Диалоги, Задания, Отметки на карте, новости, профили персонажей (продумать) | 1d? | 2005-02-15 | 2005-02-15 | 0.88d |  | start no earlier than 2005-02-15 | Шишкин | 8h |
| 411 | 5.3.8.3 | **Тестирование** | 0.88d? | 2005-02-15 | 2005-02-15 | 1d |  |  |  |  |
| 412 | 5.3.8.3.1 | Тестирование | 0.88d? | 2005-02-15 | 2005-02-15 | 1d |  | start no earlier than 2005-02-15 |  |  |
| 413 | 5.3.8.3.2 | Проверить расстановку AI нод вокруг дерева | 0.88d? | 2005-02-15 | 2005-02-15 | 1d |  | start no earlier than 2005-02-15 |  |  |
| 414 | 5.3.9 | **Сцена 7 - Самоубийство.** | 14d? | 2005-02-01 | 2005-02-16 | -0.12d | 0d |  |  | 30h |
| 415 | 5.3.9.1 | Постановка задач | 1d? | 2005-02-01 | 2005-02-01 | 12.88d |  | start no earlier than 2005-02-01 | Shyshkin | 8h |
| 416 | 5.3.9.2 | **Реализация** | 1d? | 2005-02-16 | 2005-02-16 | -0.12d | 0d |  |  | 22h |
| 417 | 5.3.9.2.1 | Реализация | 0.88d | 2005-02-16 | 2005-02-16 | 0d |  | finish no earlier than 2005-02-16 | Змей | 7h |
| 418 | 5.3.9.2.2 | Расстановка | 0.88d | 2005-02-16 | 2005-02-16 | 0d |  | start no earlier than 2005-02-16 | Шишкин | 7h |
| 419 | 5.3.9.2.3 | Тексты, Диалоги, Задания, Отметки на карте, новости, профили персонажей (продумать) | 1d? | 2005-02-16 | 2005-02-16 | -0.12d | 0d | start no earlier than 2005-02-16 | Шишкин | 8h |
| 420 | 5.3.9.3 | **Тестирование** | 0.88d? | 2005-02-16 | 2005-02-16 | 0d |  |  |  |  |
| 421 | 5.3.9.3.1 | Тестирование | 0.88d? | 2005-02-16 | 2005-02-16 | 0d |  | start no earlier than 2005-02-16 |  |  |
| 422 | 5.3.9.3.2 | Проверить расстановку AI нод вокруг дерева | 0.88d? | 2005-02-16 | 2005-02-16 | 0d |  | start no earlier than 2005-02-16 |  |  |
| 423 | 5.3.10 | **Сцена 7 - Засады бандитов на входе с Гарбэджа.** | 16.88d? | 2005-02-01 | 2005-02-19 | -3d | 0d |  |  | 38h |
| 424 | 5.3.10.1 | Постановка задач | 1d? | 2005-02-01 | 2005-02-01 | 12.88d |  | start no earlier than 2005-02-01 | Shyshkin | 8h |
| 425 | 5.3.10.2 | **Реализация** | 2d? | 2005-02-17 | 2005-02-18 | -2.12d | 0d |  |  | 30h |
| 426 | 5.3.10.2.1 | Реализация | 1.88d | 2005-02-17 | 2005-02-18 | -2d | 0d | finish no earlier than 2005-02-18 | Змей | 15h |
| 427 | 5.3.10.2.2 | Расстановка | 0.88d | 2005-02-18 | 2005-02-18 | -2d | 0d | start no earlier than 2005-02-18 | Шишкин | 7h |
| 428 | 5.3.10.2.3 | Тексты, Диалоги, Задания, Отметки на карте, новости, профили персонажей (продумать) | 1d? | 2005-02-18 | 2005-02-18 | -2.12d | 0d | start no earlier than 2005-02-18 | Шишкин | 8h |

Notes:
- 405: Игроку на PDA приходит информация от сталкера из группировки бандитов, что он продает мощную пушку (возможно даже, винтовку Гаусса) по низкой цене. Игрок приходит торговать, бандит говорит, что сейчас вынесет оружие, берет деньги, уходит в домик и не возвращается. Если игрок сунется туда, его не пропускает зоунгард («Вали отсюда, пока цел!»).
- 414: По ПДА на предыдущих уровнях Торговец сообщает, что сталкеры шепчутся о появлении в окрестностях сталкера Васи, которого не видели уже месяцев шесть он пытался найти проход к центру зоны и бесследно исчез, а теперь вот объявился. Его недавно видели в Темной Долине, где-то за базой Монолита. Игрок находит этого Васю, он весь такой испуганный, мелет полный бред о том, что он был ТАМ, он видел ЭТО. ОНО говорило с ним. В его голове звучал этот ужасный голос, выжигая мозги. Ужас, ужас, ужас! Игрок говорит ему пару фраз, успокаивает. Тот в нервной форме благодарит за сочувствие, просит передать какой-то предмет бармену, тот уже передаст его семье. Дает игроку артефакт, отбегает на несколько метров и с криком «ОНО меня не получит!» забегает в Мясорубку.
- 423: На каждом из трех входов с Гарбэджа сидят бандиты. При входе игрока в скриптовую зону они подбегают, после непродолжительного диалога дают в морду. Игрок теряет сознание, переход на скрипт Игрок в темнице

| ID | WBS | Task | Duration | Start | Finish | Total slack | Free slack | Constraint | Resources | Work |
| --- | --- | --- | --- | --- | --- | --- | --- | --- | --- | --- |
| 429 | 5.3.10.3 | **Тестирование** | 0.88d? | 2005-02-19 | 2005-02-19 | -3d | 0d |  |  |  |
| 430 | 5.3.10.3.1 | Тестирование | 0.88d? | 2005-02-19 | 2005-02-19 | -3d | 0d | start no earlier than 2005-02-19 |  |  |
| 431 | 5.3.10.3.2 | Проверить расстановку AI нод вокруг дерева | 0.88d? | 2005-02-19 | 2005-02-19 | -3d | 0d | start no earlier than 2005-02-19 |  |  |
| 432 | 5.3.11 | **Сцена 8 - Игрок в темнице** | 19.88d? | 2005-02-01 | 2005-02-23 | -6d | 0d |  |  | 54h |
| 433 | 5.3.11.1 | Постановка задач | 1d? | 2005-02-01 | 2005-02-01 | 12.88d |  | start no earlier than 2005-02-01 | Shyshkin | 8h |
| 434 | 5.3.11.2 | **Реализация** | 3.88d? | 2005-02-19 | 2005-02-23 | -6d | 0d |  |  | 46h |
| 435 | 5.3.11.2.1 | Реализация | 3.88d | 2005-02-19 | 2005-02-23 | -6d | 0d | finish no earlier than 2005-02-23 | Змей | 31h |
| 436 | 5.3.11.2.2 | Расстановка | 0.88d | 2005-02-23 | 2005-02-23 | -6d | 0d | start no earlier than 2005-02-23 | Шишкин | 7h |
| 437 | 5.3.11.2.3 | Тексты, Диалоги, Задания, Отметки на карте, новости, профили персонажей (продумать) | 1d? | 2005-02-19 | 2005-02-19 | -3.12d | 0d | start no earlier than 2005-02-19 | Шишкин | 8h |
| 438 | 5.3.11.3 | **Тестирование** | 0.88d? | 2005-02-23 | 2005-02-23 | -6d | 0d |  |  |  |
| 439 | 5.3.11.3.1 | Тестирование | 0.88d? | 2005-02-23 | 2005-02-23 | -6d | 0d | start no earlier than 2005-02-23 |  |  |
| 440 | 5.3.11.3.2 | Проверить расстановку AI нод вокруг дерева | 0.88d? | 2005-02-23 | 2005-02-23 | -6d | 0d | start no earlier than 2005-02-23 |  |  |
| 441 | 5.3.12 | **Сцена 9 - Узник Бандитов.** | 21.88d? | 2005-02-01 | 2005-02-25 | -8d | 0d |  |  | 38h |
| 442 | 5.3.12.1 | Постановка задач | 1d? | 2005-02-01 | 2005-02-01 | 12.88d |  | start no earlier than 2005-02-01 | Shyshkin | 8h |
| 443 | 5.3.12.2 | **Реализация** | 1.88d? | 2005-02-24 | 2005-02-25 | -8d | 0d |  |  | 30h |
| 444 | 5.3.12.2.1 | Реализация | 1.88d | 2005-02-24 | 2005-02-25 | -8d | 0d | finish no earlier than 2005-02-25 | Змей | 15h |
| 445 | 5.3.12.2.2 | Расстановка | 0.88d | 2005-02-25 | 2005-02-25 | -8d | 0d | start no earlier than 2005-02-25 | Шишкин | 7h |
| 446 | 5.3.12.2.3 | Тексты, Диалоги, Задания, Отметки на карте, новости, профили персонажей (продумать) | 1d? | 2005-02-24 | 2005-02-24 | -7.12d | 0d | start no earlier than 2005-02-24 | Шишкин | 8h |
| 447 | 5.3.12.3 | **Тестирование** | 0.88d? | 2005-02-25 | 2005-02-25 | -8d | 0d |  |  |  |
| 448 | 5.3.12.3.1 | Тестирование | 0.88d? | 2005-02-25 | 2005-02-25 | -8d | 0d | start no earlier than 2005-02-25 |  |  |
| 449 | 5.3.12.3.2 | Проверить расстановку AI нод вокруг дерева | 0.88d? | 2005-02-25 | 2005-02-25 | -8d | 0d | start no earlier than 2005-02-25 |  |  |
| 450 | 5.3.13 | **Сцена 10 - Жертвоприношение.** | 22.88d? | 2005-02-01 | 2005-02-26 | -9d | 0d |  |  | 37h |
| 451 | 5.3.13.1 | Постановка задач | 1d? | 2005-02-01 | 2005-02-01 | 12.88d |  | start no earlier than 2005-02-01 | Shyshkin | 8h |
| 452 | 5.3.13.2 | **Реализация** | 1.88d? | 2005-02-25 | 2005-02-26 | -9d | 0d |  |  | 29h |
| 453 | 5.3.13.2.1 | Реализация | 1.75d | 2005-02-25 | 2005-02-26 | -8.88d | 0d | finish no earlier than 2005-02-26 | Змей | 14h |
| 454 | 5.3.13.2.2 | Расстановка | 0.88d | 2005-02-26 | 2005-02-26 | -9d | 0d | start no earlier than 2005-02-26 | Шишкин | 7h |
| 455 | 5.3.13.2.3 | Тексты, Диалоги, Задания, Отметки на карте, новости, профили персонажей (продумать) | 1d? | 2005-02-25 | 2005-02-25 | -8.12d | 0d | start no earlier than 2005-02-25 | Шишкин | 8h |

Notes:
- 432: В окрестностях Лагеря Бандитов расставляем несколько патрулей. При виде игрока они кричат что-то вроде «Браток, подойди, дело есть. Только убери оружие». Если игрок подходит, ему дают в морду, после чего экран темнеет. Игрок приходит в себя в подвале Лагеря Бандитов, в клетке рядом с клеткой пленного долговца. Дверь клетки игрока открыта. Игрок видит бандита неподалеку, тот нажимает на кнопку пульта на стене и дверь захлопывается. Бандит бросает фразу «Попались, пташки! Ну, сидите, ждите своей участи» и уходит. Долговец сидит на полу своей клетки и что-то бубнит. Из оружия у игрока остались только болты. Ему нужно попасть болтом в пульт (нажать тем самым на кнопку), тогда его дверь и дверь долговца открывается. Игрок на тумбочке возле пульта берет пистолет и коробку патронов, убивает охранника, который стоит наверху, у лестницы. В его рюкзаке находит все свои отобранные предметы. Долговец благодарит игрока, рассказывает, что пароль «такой-то», на Базу Монолита можно пробраться, переодевшись, а ключ от лаборатории есть у Борова.
- 441: Когда игрок проходит у входа в лагерь бандитов, он слышит громкие крики «На помощь! Спасите! Меня тут убьют скоро!». Можно дублировать сообщением на ПДА. Когда игрок подходит к решетке, заключенный говорит, что он разведчик Долга, его тут держат бандиты, что он узнал пароль для входа на базу Монолита. Потом резко обрывает диалог «Тсс! Сюда идут!». Отыгрывается скрипт Жертвоприношение. Заключенный говорит, что если игрок выпустит ему, он ему скажет пароль Монолита и еще кой-чего полезного. Когда игрок выпускает, тот называет пароль и говорит, что Монолитовцы тупые они зомбированные, поэтому их можно обмануть и проникнуть на территорию базы, переодевшись в костюм бандита. А ключ к Лаборатории Х18, между прочим, хранится у Борова.
- 450: Когда заключенный сказал «Тсс! Сюда идут!» в подвал входят несколько бандитов, которые ведут сталкера-новичка. Они подводят его к отверстию в полу (отверстие плохо видно из окна, через которое игрок общался с заключенным, поэтому игроку лучше перейти к соседнему окну, там вообще отломан кусок стены, поэтому будет отлично видно сценку). Перекидываются парой фраз «Ставлю 10 рублей, что ему оторвут голову», «Нет, он вообще превратится в кровавое месиво через 5 секунд», «Да хватит томить, толкайте его уже!». Потом один из бандитов толкает новичка в дырку (наносит хит), после чего веселая компания еще некоторое время смотрит, что происходит там, внизу, потом уходят.

| ID | WBS | Task | Duration | Start | Finish | Predecessors | Total slack | Free slack | Constraint | Deadline | Resources | Work |
| --- | --- | --- | --- | --- | --- | --- | --- | --- | --- | --- | --- | --- |
| 456 | 5.3.13.3 | **Тестирование** | 0.88d? | 2005-02-26 | 2005-02-26 |  | -9d | 0d |  |  |  |  |
| 457 | 5.3.13.3.1 | Тестирование | 0.88d? | 2005-02-26 | 2005-02-26 |  | -9d | 0d | start no earlier than 2005-02-26 |  |  |  |
| 458 | 5.3.13.3.2 | Проверить расстановку AI нод вокруг дерева | 0.88d? | 2005-02-26 | 2005-02-26 |  | -9d | 0d | start no earlier than 2005-02-26 |  |  |  |
| 460 | 6 | **18_Prypiat** | 11d? | 2005-02-26 | 2005-03-11 | 301 | -9d | 0d |  | 2005-04-01 | Рома, Змей | 176h |
| 461 | 6.1 | **LevelDesign** | 11d? | 2005-02-26 | 2005-03-11 |  | -9d | 0d |  | 2005-03-01 | Веня | 88h |
| 462 | 6.1.1 | **Stage 1** | 11d? | 2005-02-26 | 2005-03-11 |  | -9d | 0d |  |  |  |  |
| 463 | 6.1.1.1 | List of Changes | 2d | 2005-02-26 | 2005-03-01 |  | -9d | 0d |  |  |  |  |
| 464 | 6.1.1.2 | Changed Geometry | 1d? | 2005-03-01 | 2005-03-02 | 463 | -9d | 0d |  |  |  |  |
| 465 | 6.1.1.3 | Check List 1 | 1d? | 2005-03-02 | 2005-03-03 | 464 | -9d | 0d |  |  |  |  |
| 466 | 6.1.1.4 | Check List 2 | 1d? | 2005-03-03 | 2005-03-04 | 465 | -9d | 0d |  |  |  |  |
| 467 | 6.1.1.5 | Check List 3 | 1d? | 2005-03-04 | 2005-03-05 | 466 | -9d | 0d |  |  |  |  |
| 468 | 6.1.1.6 | Check List 4 | 1d? | 2005-03-05 | 2005-03-07 | 467 | -9d | 0d |  |  |  |  |
| 469 | 6.1.1.7 | Render Geometry | 1d? | 2005-03-07 | 2005-03-08 | 468 | -9d | 0d |  |  |  |  |
| 470 | 6.1.1.8 | Grass | 1d? | 2005-03-08 | 2005-03-09 | 469 | -9d | 0d |  |  |  |  |
| 471 | 6.1.1.9 | AI Maps | 1d? | 2005-03-09 | 2005-03-10 | 470 | -9d | 0d |  |  |  |  |
| 472 | 6.1.1.10 | Graphs | 1d? | 2005-03-10 | 2005-03-11 | 471 | -9d | 0d |  |  |  |  |
| 474 | 6.2 | **GameDesign** | 3d? | 2005-02-26 | 2005-03-02 |  | 15d |  |  |  |  |  |
| 475 | 6.2.1 | **Secrets** | 3d? | 2005-02-26 | 2005-03-02 |  | 15d |  |  |  |  |  |
| 476 | 6.2.1.1 | **Stage 1** | 3d? | 2005-02-26 | 2005-03-02 |  | 15d |  |  |  |  |  |
| 477 | 6.2.1.1.1 | Design | 1d? | 2005-02-26 | 2005-02-28 |  | 15d | 0d |  |  |  |  |
| 478 | 6.2.1.1.2 | Implementation | 1d? | 2005-02-28 | 2005-03-01 | 477 | 15d | 0d |  |  |  |  |
| 479 | 6.2.1.1.3 | Tuning | 1d? | 2005-03-01 | 2005-03-02 | 478 | 15d |  |  |  |  |  |
| 480 | 6.2.2 | **Smartterrains** | 3d? | 2005-02-26 | 2005-03-02 |  | 15d |  |  |  |  |  |
| 481 | 6.2.2.1 | **Stage 1** | 3d? | 2005-02-26 | 2005-03-02 |  | 15d |  |  |  |  |  |
| 482 | 6.2.2.1.1 | Design | 1d? | 2005-02-26 | 2005-02-28 |  | 15d | 0d |  |  |  |  |
| 483 | 6.2.2.1.2 | Implementation | 1d? | 2005-02-28 | 2005-03-01 | 482 | 15d | 0d |  |  |  |  |
| 484 | 6.2.2.1.3 | Tuning | 1d? | 2005-03-01 | 2005-03-02 | 483 | 15d |  |  |  |  |  |

| ID | WBS | Task | Duration | Start | Finish | Predecessors | Total slack | Free slack |
| --- | --- | --- | --- | --- | --- | --- | --- | --- |
| 485 | 6.2.3 | **Monsters/Spawns** | 3d? | 2005-02-26 | 2005-03-02 |  | 15d |  |
| 486 | 6.2.3.1 | **Stage 1** | 3d? | 2005-02-26 | 2005-03-02 |  | 15d |  |
| 487 | 6.2.3.1.1 | Design | 1d? | 2005-02-26 | 2005-02-28 |  | 15d | 0d |
| 488 | 6.2.3.1.2 | Implementation | 1d? | 2005-02-28 | 2005-03-01 | 487 | 15d | 0d |
| 489 | 6.2.3.1.3 | Tuning | 1d? | 2005-03-01 | 2005-03-02 | 488 | 15d |  |
| 490 | 6.2.4 | **Stalkers/Spawns** | 3d? | 2005-02-26 | 2005-03-02 |  | 15d |  |
| 491 | 6.2.4.1 | **Stage 1** | 3d? | 2005-02-26 | 2005-03-02 |  | 15d |  |
| 492 | 6.2.4.1.1 | Design | 1d? | 2005-02-26 | 2005-02-28 |  | 15d | 0d |
| 493 | 6.2.4.1.2 | Implementation | 1d? | 2005-02-28 | 2005-03-01 | 492 | 15d | 0d |
| 494 | 6.2.4.1.3 | Tuning | 1d? | 2005-03-01 | 2005-03-02 | 493 | 15d |  |
| 495 | 6.2.5 | **Anomalies/Spawns** | 3d? | 2005-02-26 | 2005-03-02 |  | 15d |  |
| 496 | 6.2.5.1 | **Stage 1** | 3d? | 2005-02-26 | 2005-03-02 |  | 15d |  |
| 497 | 6.2.5.1.1 | Design | 1d? | 2005-02-26 | 2005-02-28 |  | 15d | 0d |
| 498 | 6.2.5.1.2 | Implementation | 1d? | 2005-02-28 | 2005-03-01 | 497 | 15d | 0d |
| 499 | 6.2.5.1.3 | Tuning | 1d? | 2005-03-01 | 2005-03-02 | 498 | 15d |  |
| 500 | 6.2.6 | **Physicks** | 3d? | 2005-02-26 | 2005-03-02 |  | 15d |  |
| 501 | 6.2.6.1 | **Stage 1** | 3d? | 2005-02-26 | 2005-03-02 |  | 15d |  |
| 502 | 6.2.6.1.1 | Design | 1d? | 2005-02-26 | 2005-02-28 |  | 15d | 0d |
| 503 | 6.2.6.1.2 | Implementation | 1d? | 2005-02-28 | 2005-03-01 | 502 | 15d | 0d |
| 504 | 6.2.6.1.3 | Tuning | 1d? | 2005-03-01 | 2005-03-02 | 503 | 15d |  |
| 506 | 6.3 | **Scripts** | 5d? | 2005-02-26 | 2005-03-04 |  | 13d |  |
| 507 | 6.3.1 | **Script 1** | 5d? | 2005-02-26 | 2005-03-04 |  | 13d |  |
| 508 | 6.3.1.1 | Scenario(text) | 1d? | 2005-02-26 | 2005-02-28 |  | 13d | 0d |
| 509 | 6.3.1.2 | Постановка задач | 1d? | 2005-02-28 | 2005-03-01 | 508 | 13d | 0d |
| 510 | 6.3.1.3 | Implimentation | 1d? | 2005-03-01 | 2005-03-02 | 509 | 13d | 0d |
| 511 | 6.3.1.4 | Dilogs/VO/Icons/Objects/Animations | 1d? | 2005-03-02 | 2005-03-03 | 510 | 13d | 0d |
| 512 | 6.3.1.5 | Настройка | 1d? | 2005-03-03 | 2005-03-04 | 511 | 13d |  |

| ID | WBS | Task | Duration | Start | Finish | Predecessors | Total slack | Free slack |
| --- | --- | --- | --- | --- | --- | --- | --- | --- |
| 513 | 6.3.2 | **Script 2** | 5d? | 2005-02-26 | 2005-03-04 |  | 13d |  |
| 514 | 6.3.2.1 | Scenario(text) | 1d? | 2005-02-26 | 2005-02-28 |  | 13d | 0d |
| 515 | 6.3.2.2 | Постановка задач | 1d? | 2005-02-28 | 2005-03-01 | 514 | 13d | 0d |
| 516 | 6.3.2.3 | Implimentation | 1d? | 2005-03-01 | 2005-03-02 | 515 | 13d | 0d |
| 517 | 6.3.2.4 | Dilogs/VO/Icons/Objects/Animations | 1d? | 2005-03-02 | 2005-03-03 | 516 | 13d | 0d |
| 518 | 6.3.2.5 | Настройка | 1d? | 2005-03-03 | 2005-03-04 | 517 | 13d |  |
| 519 | 6.3.3 | **Script 3** | 5d? | 2005-02-26 | 2005-03-04 |  | 13d |  |
| 520 | 6.3.3.1 | Scenario(text) | 1d? | 2005-02-26 | 2005-02-28 |  | 13d | 0d |
| 521 | 6.3.3.2 | Постановка задач | 1d? | 2005-02-28 | 2005-03-01 | 520 | 13d | 0d |
| 522 | 6.3.3.3 | Implimentation | 1d? | 2005-03-01 | 2005-03-02 | 521 | 13d | 0d |
| 523 | 6.3.3.4 | Dilogs/VO/Icons/Objects/Animations | 1d? | 2005-03-02 | 2005-03-03 | 522 | 13d | 0d |
| 524 | 6.3.3.5 | Настройка | 1d? | 2005-03-03 | 2005-03-04 | 523 | 13d |  |
| 525 | 6.3.4 | **Script 4** | 5d? | 2005-02-26 | 2005-03-04 |  | 13d |  |
| 526 | 6.3.4.1 | Scenario(text) | 1d? | 2005-02-26 | 2005-02-28 |  | 13d | 0d |
| 527 | 6.3.4.2 | Постановка задач | 1d? | 2005-02-28 | 2005-03-01 | 526 | 13d | 0d |
| 528 | 6.3.4.3 | Implimentation | 1d? | 2005-03-01 | 2005-03-02 | 527 | 13d | 0d |
| 529 | 6.3.4.4 | Dilogs/VO/Icons/Objects/Animations | 1d? | 2005-03-02 | 2005-03-03 | 528 | 13d | 0d |
| 530 | 6.3.4.5 | Настройка | 1d? | 2005-03-03 | 2005-03-04 | 529 | 13d |  |
| 531 | 6.3.5 | **Script 5** | 5d? | 2005-02-26 | 2005-03-04 |  | 13d |  |
| 532 | 6.3.5.1 | Scenario(text) | 1d? | 2005-02-26 | 2005-02-28 |  | 13d | 0d |
| 533 | 6.3.5.2 | Постановка задач | 1d? | 2005-02-28 | 2005-03-01 | 532 | 13d | 0d |
| 534 | 6.3.5.3 | Implimentation | 1d? | 2005-03-01 | 2005-03-02 | 533 | 13d | 0d |
| 535 | 6.3.5.4 | Dilogs/VO/Icons/Objects/Animations | 1d? | 2005-03-02 | 2005-03-03 | 534 | 13d | 0d |
| 536 | 6.3.5.5 | Настройка | 1d? | 2005-03-03 | 2005-03-04 | 535 | 13d |  |

| ID | WBS | Task | Duration | Start | Finish | Predecessors | Total slack | Free slack | Deadline | Resources | Work |
| --- | --- | --- | --- | --- | --- | --- | --- | --- | --- | --- | --- |
| 538 | 7 | **13_Dead_City** | 11d? | 2005-03-11 | 2005-03-24 | 460 | 7d |  | 2005-04-29 | Рома, Змей | 176h |
| 539 | 7.1 | **LevelDesign** | 11d? | 2005-03-11 | 2005-03-24 |  | 7d |  | 2005-04-01 | Rainbow | 88h |
| 540 | 7.1.1 | **Stage 1** | 11d? | 2005-03-11 | 2005-03-24 |  | 7d |  |  |  |  |
| 541 | 7.1.1.1 | List of Changes | 2d | 2005-03-11 | 2005-03-14 |  | 7d | 0d |  |  |  |
| 542 | 7.1.1.2 | Changed Geometry | 1d? | 2005-03-14 | 2005-03-15 | 541 | 7d | 0d |  |  |  |
| 543 | 7.1.1.3 | Check List 1 | 1d? | 2005-03-15 | 2005-03-16 | 542 | 7d | 0d |  |  |  |
| 544 | 7.1.1.4 | Check List 2 | 1d? | 2005-03-16 | 2005-03-17 | 543 | 7d | 0d |  |  |  |
| 545 | 7.1.1.5 | Check List 3 | 1d? | 2005-03-17 | 2005-03-18 | 544 | 7d | 0d |  |  |  |
| 546 | 7.1.1.6 | Check List 4 | 1d? | 2005-03-18 | 2005-03-19 | 545 | 7d | 0d |  |  |  |
| 547 | 7.1.1.7 | Render Geometry | 1d? | 2005-03-19 | 2005-03-21 | 546 | 7d | 0d |  |  |  |
| 548 | 7.1.1.8 | Grass | 1d? | 2005-03-21 | 2005-03-22 | 547 | 7d | 0d |  |  |  |
| 549 | 7.1.1.9 | AI Maps | 1d? | 2005-03-22 | 2005-03-23 | 548 | 7d | 0d |  |  |  |
| 550 | 7.1.1.10 | Graphs | 1d? | 2005-03-23 | 2005-03-24 | 549 | 7d |  |  |  |  |
| 552 | 7.2 | **GameDesign** | 3d? | 2005-03-11 | 2005-03-15 |  | 39d |  |  |  |  |
| 553 | 7.2.1 | **Secrets** | 3d? | 2005-03-11 | 2005-03-15 |  | 39d |  |  |  |  |
| 554 | 7.2.1.1 | **Stage 1** | 3d? | 2005-03-11 | 2005-03-15 |  | 39d |  |  |  |  |
| 555 | 7.2.1.1.1 | Design | 1d? | 2005-03-11 | 2005-03-12 |  | 39d | 0d |  |  |  |
| 556 | 7.2.1.1.2 | Implementation | 1d? | 2005-03-12 | 2005-03-14 | 555 | 39d | 0d |  |  |  |
| 557 | 7.2.1.1.3 | Tuning | 1d? | 2005-03-14 | 2005-03-15 | 556 | 39d |  |  |  |  |
| 558 | 7.2.2 | **Smartterrains** | 3d? | 2005-03-11 | 2005-03-15 |  | 39d |  |  |  |  |
| 559 | 7.2.2.1 | **Stage 1** | 3d? | 2005-03-11 | 2005-03-15 |  | 39d |  |  |  |  |
| 560 | 7.2.2.1.1 | Design | 1d? | 2005-03-11 | 2005-03-12 |  | 39d | 0d |  |  |  |
| 561 | 7.2.2.1.2 | Implementation | 1d? | 2005-03-12 | 2005-03-14 | 560 | 39d | 0d |  |  |  |
| 562 | 7.2.2.1.3 | Tuning | 1d? | 2005-03-14 | 2005-03-15 | 561 | 39d |  |  |  |  |

| ID | WBS | Task | Duration | Start | Finish | Predecessors | Total slack | Free slack |
| --- | --- | --- | --- | --- | --- | --- | --- | --- |
| 563 | 7.2.3 | **Monsters/Spawns** | 3d? | 2005-03-11 | 2005-03-15 |  | 39d |  |
| 564 | 7.2.3.1 | **Stage 1** | 3d? | 2005-03-11 | 2005-03-15 |  | 39d |  |
| 565 | 7.2.3.1.1 | Design | 1d? | 2005-03-11 | 2005-03-12 |  | 39d | 0d |
| 566 | 7.2.3.1.2 | Implementation | 1d? | 2005-03-12 | 2005-03-14 | 565 | 39d | 0d |
| 567 | 7.2.3.1.3 | Tuning | 1d? | 2005-03-14 | 2005-03-15 | 566 | 39d |  |
| 568 | 7.2.4 | **Stalkers/Spawns** | 3d? | 2005-03-11 | 2005-03-15 |  | 39d |  |
| 569 | 7.2.4.1 | **Stage 1** | 3d? | 2005-03-11 | 2005-03-15 |  | 39d |  |
| 570 | 7.2.4.1.1 | Design | 1d? | 2005-03-11 | 2005-03-12 |  | 39d | 0d |
| 571 | 7.2.4.1.2 | Implementation | 1d? | 2005-03-12 | 2005-03-14 | 570 | 39d | 0d |
| 572 | 7.2.4.1.3 | Tuning | 1d? | 2005-03-14 | 2005-03-15 | 571 | 39d |  |
| 573 | 7.2.5 | **Anomalies/Spawns** | 3d? | 2005-03-11 | 2005-03-15 |  | 39d |  |
| 574 | 7.2.5.1 | **Stage 1** | 3d? | 2005-03-11 | 2005-03-15 |  | 39d |  |
| 575 | 7.2.5.1.1 | Design | 1d? | 2005-03-11 | 2005-03-12 |  | 39d | 0d |
| 576 | 7.2.5.1.2 | Implementation | 1d? | 2005-03-12 | 2005-03-14 | 575 | 39d | 0d |
| 577 | 7.2.5.1.3 | Tuning | 1d? | 2005-03-14 | 2005-03-15 | 576 | 39d |  |
| 578 | 7.2.6 | **Physicks** | 3d? | 2005-03-11 | 2005-03-15 |  | 39d |  |
| 579 | 7.2.6.1 | **Stage 1** | 3d? | 2005-03-11 | 2005-03-15 |  | 39d |  |
| 580 | 7.2.6.1.1 | Design | 1d? | 2005-03-11 | 2005-03-12 |  | 39d | 0d |
| 581 | 7.2.6.1.2 | Implementation | 1d? | 2005-03-12 | 2005-03-14 | 580 | 39d | 0d |
| 582 | 7.2.6.1.3 | Tuning | 1d? | 2005-03-14 | 2005-03-15 | 581 | 39d |  |
| 584 | 7.3 | **Scripts** | 5d? | 2005-03-11 | 2005-03-17 |  | 37d |  |
| 585 | 7.3.1 | **Script 1** | 5d? | 2005-03-11 | 2005-03-17 |  | 37d |  |
| 586 | 7.3.1.1 | Scenario(text) | 1d? | 2005-03-11 | 2005-03-12 |  | 37d | 0d |
| 587 | 7.3.1.2 | Постановка задач | 1d? | 2005-03-12 | 2005-03-14 | 586 | 37d | 0d |
| 588 | 7.3.1.3 | Implimentation | 1d? | 2005-03-14 | 2005-03-15 | 587 | 37d | 0d |
| 589 | 7.3.1.4 | Dilogs/VO/Icons/Objects/Animations | 1d? | 2005-03-15 | 2005-03-16 | 588 | 37d | 0d |
| 590 | 7.3.1.5 | Настройка | 1d? | 2005-03-16 | 2005-03-17 | 589 | 37d |  |

| ID | WBS | Task | Duration | Start | Finish | Predecessors | Total slack | Free slack |
| --- | --- | --- | --- | --- | --- | --- | --- | --- |
| 591 | 7.3.2 | **Script 2** | 5d? | 2005-03-11 | 2005-03-17 |  | 37d |  |
| 592 | 7.3.2.1 | Scenario(text) | 1d? | 2005-03-11 | 2005-03-12 |  | 37d | 0d |
| 593 | 7.3.2.2 | Постановка задач | 1d? | 2005-03-12 | 2005-03-14 | 592 | 37d | 0d |
| 594 | 7.3.2.3 | Implimentation | 1d? | 2005-03-14 | 2005-03-15 | 593 | 37d | 0d |
| 595 | 7.3.2.4 | Dilogs/VO/Icons/Objects/Animations | 1d? | 2005-03-15 | 2005-03-16 | 594 | 37d | 0d |
| 596 | 7.3.2.5 | Настройка | 1d? | 2005-03-16 | 2005-03-17 | 595 | 37d |  |
| 597 | 7.3.3 | **Script 3** | 5d? | 2005-03-11 | 2005-03-17 |  | 37d |  |
| 598 | 7.3.3.1 | Scenario(text) | 1d? | 2005-03-11 | 2005-03-12 |  | 37d | 0d |
| 599 | 7.3.3.2 | Постановка задач | 1d? | 2005-03-12 | 2005-03-14 | 598 | 37d | 0d |
| 600 | 7.3.3.3 | Implimentation | 1d? | 2005-03-14 | 2005-03-15 | 599 | 37d | 0d |
| 601 | 7.3.3.4 | Dilogs/VO/Icons/Objects/Animations | 1d? | 2005-03-15 | 2005-03-16 | 600 | 37d | 0d |
| 602 | 7.3.3.5 | Настройка | 1d? | 2005-03-16 | 2005-03-17 | 601 | 37d |  |
| 603 | 7.3.4 | **Script 4** | 5d? | 2005-03-11 | 2005-03-17 |  | 37d |  |
| 604 | 7.3.4.1 | Scenario(text) | 1d? | 2005-03-11 | 2005-03-12 |  | 37d | 0d |
| 605 | 7.3.4.2 | Постановка задач | 1d? | 2005-03-12 | 2005-03-14 | 604 | 37d | 0d |
| 606 | 7.3.4.3 | Implimentation | 1d? | 2005-03-14 | 2005-03-15 | 605 | 37d | 0d |
| 607 | 7.3.4.4 | Dilogs/VO/Icons/Objects/Animations | 1d? | 2005-03-15 | 2005-03-16 | 606 | 37d | 0d |
| 608 | 7.3.4.5 | Настройка | 1d? | 2005-03-16 | 2005-03-17 | 607 | 37d |  |
| 609 | 7.3.5 | **Script 5** | 5d? | 2005-03-11 | 2005-03-17 |  | 37d |  |
| 610 | 7.3.5.1 | Scenario(text) | 1d? | 2005-03-11 | 2005-03-12 |  | 37d | 0d |
| 611 | 7.3.5.2 | Постановка задач | 1d? | 2005-03-12 | 2005-03-14 | 610 | 37d | 0d |
| 612 | 7.3.5.3 | Implimentation | 1d? | 2005-03-14 | 2005-03-15 | 611 | 37d | 0d |
| 613 | 7.3.5.4 | Dilogs/VO/Icons/Objects/Animations | 1d? | 2005-03-15 | 2005-03-16 | 612 | 37d | 0d |
| 614 | 7.3.5.5 | Настройка | 1d? | 2005-03-16 | 2005-03-17 | 613 | 37d |  |

| ID | WBS | Task | Duration | Start | Finish | Predecessors | Total slack | Free slack | Deadline | Resources | Work |
| --- | --- | --- | --- | --- | --- | --- | --- | --- | --- | --- | --- |
| 618 | 8 | **06_Dark_Valley_Underground** | 11d? | 2005-01-24 | 2005-02-04 |  | 1.88d | 0d | 2005-03-01 | Джим, Угрюмый | 88h |
| 619 | 8.1 | **LevelDesign** | 11d? | 2005-01-24 | 2005-02-04 |  | 1.88d |  | 2005-02-07 |  |  |
| 620 | 8.1.1 | **Stage 1** | 11d? | 2005-01-24 | 2005-02-04 |  | 1.88d |  |  |  |  |
| 621 | 8.1.1.1 | List of Changes | 2d | 2005-01-24 | 2005-01-25 |  | 1.88d | 0d |  |  |  |
| 622 | 8.1.1.2 | Changed Geometry | 1d? | 2005-01-26 | 2005-01-26 | 621 | 1.88d | 0d |  |  |  |
| 623 | 8.1.1.3 | Check List 1 | 1d? | 2005-01-27 | 2005-01-27 | 622 | 1.88d | 0d |  |  |  |
| 624 | 8.1.1.4 | Check List 2 | 1d? | 2005-01-28 | 2005-01-28 | 623 | 1.88d | 0d |  |  |  |
| 625 | 8.1.1.5 | Check List 3 | 1d? | 2005-01-29 | 2005-01-29 | 624 | 1.88d | 0d |  |  |  |
| 626 | 8.1.1.6 | Check List 4 | 1d? | 2005-01-31 | 2005-01-31 | 625 | 1.88d | 0d |  |  |  |
| 627 | 8.1.1.7 | Render Geometry | 1d? | 2005-02-01 | 2005-02-01 | 626 | 1.88d | 0d |  |  |  |
| 628 | 8.1.1.8 | Grass | 1d? | 2005-02-02 | 2005-02-02 | 627 | 1.88d | 0d |  |  |  |
| 629 | 8.1.1.9 | AI Maps | 1d? | 2005-02-03 | 2005-02-03 | 628 | 1.88d | 0d |  |  |  |
| 630 | 8.1.1.10 | Graphs | 1d? | 2005-02-04 | 2005-02-04 | 629 | 1.88d |  |  |  |  |
| 632 | 8.2 | **GameDesign** | 3d? | 2005-01-24 | 2005-01-26 |  | 17.88d |  |  |  |  |
| 633 | 8.2.1 | **Secrets** | 3d? | 2005-01-24 | 2005-01-26 |  | 17.88d |  |  |  |  |
| 634 | 8.2.1.1 | **Stage 1** | 3d? | 2005-01-24 | 2005-01-26 |  | 17.88d |  |  |  |  |
| 635 | 8.2.1.1.1 | Design | 1d? | 2005-01-24 | 2005-01-24 |  | 17.88d | 0d |  |  |  |
| 636 | 8.2.1.1.2 | Implementation | 1d? | 2005-01-25 | 2005-01-25 | 635 | 17.88d | 0d |  |  |  |
| 637 | 8.2.1.1.3 | Tuning | 1d? | 2005-01-26 | 2005-01-26 | 636 | 17.88d |  |  |  |  |
| 638 | 8.2.2 | **Smartterrains** | 3d? | 2005-01-24 | 2005-01-26 |  | 17.88d |  |  |  |  |
| 639 | 8.2.2.1 | **Stage 1** | 3d? | 2005-01-24 | 2005-01-26 |  | 17.88d |  |  |  |  |
| 640 | 8.2.2.1.1 | Design | 1d? | 2005-01-24 | 2005-01-24 |  | 17.88d | 0d |  |  |  |
| 641 | 8.2.2.1.2 | Implementation | 1d? | 2005-01-25 | 2005-01-25 | 640 | 17.88d | 0d |  |  |  |
| 642 | 8.2.2.1.3 | Tuning | 1d? | 2005-01-26 | 2005-01-26 | 641 | 17.88d |  |  |  |  |

| ID | WBS | Task | Duration | Start | Finish | Predecessors | Total slack | Free slack |
| --- | --- | --- | --- | --- | --- | --- | --- | --- |
| 643 | 8.2.3 | **Monsters/Spawns** | 3d? | 2005-01-24 | 2005-01-26 |  | 17.88d |  |
| 644 | 8.2.3.1 | **Stage 1** | 3d? | 2005-01-24 | 2005-01-26 |  | 17.88d |  |
| 645 | 8.2.3.1.1 | Design | 1d? | 2005-01-24 | 2005-01-24 |  | 17.88d | 0d |
| 646 | 8.2.3.1.2 | Implementation | 1d? | 2005-01-25 | 2005-01-25 | 645 | 17.88d | 0d |
| 647 | 8.2.3.1.3 | Tuning | 1d? | 2005-01-26 | 2005-01-26 | 646 | 17.88d |  |
| 648 | 8.2.4 | **Stalkers/Spawns** | 3d? | 2005-01-24 | 2005-01-26 |  | 17.88d |  |
| 649 | 8.2.4.1 | **Stage 1** | 3d? | 2005-01-24 | 2005-01-26 |  | 17.88d |  |
| 650 | 8.2.4.1.1 | Design | 1d? | 2005-01-24 | 2005-01-24 |  | 17.88d | 0d |
| 651 | 8.2.4.1.2 | Implementation | 1d? | 2005-01-25 | 2005-01-25 | 650 | 17.88d | 0d |
| 652 | 8.2.4.1.3 | Tuning | 1d? | 2005-01-26 | 2005-01-26 | 651 | 17.88d |  |
| 653 | 8.2.5 | **Anomalies/Spawns** | 3d? | 2005-01-24 | 2005-01-26 |  | 17.88d |  |
| 654 | 8.2.5.1 | **Stage 1** | 3d? | 2005-01-24 | 2005-01-26 |  | 17.88d |  |
| 655 | 8.2.5.1.1 | Design | 1d? | 2005-01-24 | 2005-01-24 |  | 17.88d | 0d |
| 656 | 8.2.5.1.2 | Implementation | 1d? | 2005-01-25 | 2005-01-25 | 655 | 17.88d | 0d |
| 657 | 8.2.5.1.3 | Tuning | 1d? | 2005-01-26 | 2005-01-26 | 656 | 17.88d |  |
| 658 | 8.2.6 | **Physicks** | 3d? | 2005-01-24 | 2005-01-26 |  | 17.88d |  |
| 659 | 8.2.6.1 | **Stage 1** | 3d? | 2005-01-24 | 2005-01-26 |  | 17.88d |  |
| 660 | 8.2.6.1.1 | Design | 1d? | 2005-01-24 | 2005-01-24 |  | 17.88d | 0d |
| 661 | 8.2.6.1.2 | Implementation | 1d? | 2005-01-25 | 2005-01-25 | 660 | 17.88d | 0d |
| 662 | 8.2.6.1.3 | Tuning | 1d? | 2005-01-26 | 2005-01-26 | 661 | 17.88d |  |
| 664 | 8.3 | **Scripts** | 5d? | 2005-01-24 | 2005-01-28 |  | 15.88d |  |
| 665 | 8.3.1 | **Script 1** | 5d? | 2005-01-24 | 2005-01-28 |  | 15.88d |  |
| 666 | 8.3.1.1 | Scenario(text) | 1d? | 2005-01-24 | 2005-01-24 |  | 15.88d | 0d |
| 667 | 8.3.1.2 | Постановка задач | 1d? | 2005-01-25 | 2005-01-25 | 666 | 15.88d | 0d |
| 668 | 8.3.1.3 | Implimentation | 1d? | 2005-01-26 | 2005-01-26 | 667 | 15.88d | 0d |
| 669 | 8.3.1.4 | Dilogs/VO/Icons/Objects/Animations | 1d? | 2005-01-27 | 2005-01-27 | 668 | 15.88d | 0d |
| 670 | 8.3.1.5 | Настройка | 1d? | 2005-01-28 | 2005-01-28 | 669 | 15.88d |  |

| ID | WBS | Task | Duration | Start | Finish | Predecessors | Total slack | Free slack |
| --- | --- | --- | --- | --- | --- | --- | --- | --- |
| 671 | 8.3.2 | **Script 2** | 5d? | 2005-01-24 | 2005-01-28 |  | 15.88d |  |
| 672 | 8.3.2.1 | Scenario(text) | 1d? | 2005-01-24 | 2005-01-24 |  | 15.88d | 0d |
| 673 | 8.3.2.2 | Постановка задач | 1d? | 2005-01-25 | 2005-01-25 | 672 | 15.88d | 0d |
| 674 | 8.3.2.3 | Implimentation | 1d? | 2005-01-26 | 2005-01-26 | 673 | 15.88d | 0d |
| 675 | 8.3.2.4 | Dilogs/VO/Icons/Objects/Animations | 1d? | 2005-01-27 | 2005-01-27 | 674 | 15.88d | 0d |
| 676 | 8.3.2.5 | Настройка | 1d? | 2005-01-28 | 2005-01-28 | 675 | 15.88d |  |
| 677 | 8.3.3 | **Script 3** | 5d? | 2005-01-24 | 2005-01-28 |  | 15.88d |  |
| 678 | 8.3.3.1 | Scenario(text) | 1d? | 2005-01-24 | 2005-01-24 |  | 15.88d | 0d |
| 679 | 8.3.3.2 | Постановка задач | 1d? | 2005-01-25 | 2005-01-25 | 678 | 15.88d | 0d |
| 680 | 8.3.3.3 | Implimentation | 1d? | 2005-01-26 | 2005-01-26 | 679 | 15.88d | 0d |
| 681 | 8.3.3.4 | Dilogs/VO/Icons/Objects/Animations | 1d? | 2005-01-27 | 2005-01-27 | 680 | 15.88d | 0d |
| 682 | 8.3.3.5 | Настройка | 1d? | 2005-01-28 | 2005-01-28 | 681 | 15.88d |  |
| 683 | 8.3.4 | **Script 4** | 5d? | 2005-01-24 | 2005-01-28 |  | 15.88d |  |
| 684 | 8.3.4.1 | Scenario(text) | 1d? | 2005-01-24 | 2005-01-24 |  | 15.88d | 0d |
| 685 | 8.3.4.2 | Постановка задач | 1d? | 2005-01-25 | 2005-01-25 | 684 | 15.88d | 0d |
| 686 | 8.3.4.3 | Implimentation | 1d? | 2005-01-26 | 2005-01-26 | 685 | 15.88d | 0d |
| 687 | 8.3.4.4 | Dilogs/VO/Icons/Objects/Animations | 1d? | 2005-01-27 | 2005-01-27 | 686 | 15.88d | 0d |
| 688 | 8.3.4.5 | Настройка | 1d? | 2005-01-28 | 2005-01-28 | 687 | 15.88d |  |
| 689 | 8.3.5 | **Script 5** | 5d? | 2005-01-24 | 2005-01-28 |  | 15.88d |  |
| 690 | 8.3.5.1 | Scenario(text) | 1d? | 2005-01-24 | 2005-01-24 |  | 15.88d | 0d |
| 691 | 8.3.5.2 | Постановка задач | 1d? | 2005-01-25 | 2005-01-25 | 690 | 15.88d | 0d |
| 692 | 8.3.5.3 | Implimentation | 1d? | 2005-01-26 | 2005-01-26 | 691 | 15.88d | 0d |
| 693 | 8.3.5.4 | Dilogs/VO/Icons/Objects/Animations | 1d? | 2005-01-27 | 2005-01-27 | 692 | 15.88d | 0d |
| 694 | 8.3.5.5 | Настройка | 1d? | 2005-01-28 | 2005-01-28 | 693 | 15.88d |  |

| ID | WBS | Task | Duration | Start | Finish | Predecessors | Total slack | Free slack | Deadline | Resources | Work |
| --- | --- | --- | --- | --- | --- | --- | --- | --- | --- | --- | --- |
| 696 | 9 | **16_Radar_Antena_Control_Undergaround** | 11d? | 2005-02-05 | 2005-02-17 | 618 | 9.88d | 0d | 2005-04-01 | Джим, Угрюмый | 88h |
| 697 | 9.1 | **LevelDesign** | 11d? | 2005-02-05 | 2005-02-17 |  | 9.88d |  | 2005-03-01 |  |  |
| 698 | 9.1.1 | **Stage 1** | 11d? | 2005-02-05 | 2005-02-17 |  | 9.88d |  |  |  |  |
| 699 | 9.1.1.1 | List of Changes | 2d | 2005-02-05 | 2005-02-07 |  | 9.88d | 0d |  |  |  |
| 700 | 9.1.1.2 | Changed Geometry | 1d? | 2005-02-08 | 2005-02-08 | 699 | 9.88d | 0d |  |  |  |
| 701 | 9.1.1.3 | Check List 1 | 1d? | 2005-02-09 | 2005-02-09 | 700 | 9.88d | 0d |  |  |  |
| 702 | 9.1.1.4 | Check List 2 | 1d? | 2005-02-10 | 2005-02-10 | 701 | 9.88d | 0d |  |  |  |
| 703 | 9.1.1.5 | Check List 3 | 1d? | 2005-02-11 | 2005-02-11 | 702 | 9.88d | 0d |  |  |  |
| 704 | 9.1.1.6 | Check List 4 | 1d? | 2005-02-12 | 2005-02-12 | 703 | 9.88d | 0d |  |  |  |
| 705 | 9.1.1.7 | Render Geometry | 1d? | 2005-02-14 | 2005-02-14 | 704 | 9.88d | 0d |  |  |  |
| 706 | 9.1.1.8 | Grass | 1d? | 2005-02-15 | 2005-02-15 | 705 | 9.88d | 0d |  |  |  |
| 707 | 9.1.1.9 | AI Maps | 1d? | 2005-02-16 | 2005-02-16 | 706 | 9.88d | 0d |  |  |  |
| 708 | 9.1.1.10 | Graphs | 1d? | 2005-02-17 | 2005-02-17 | 707 | 9.88d |  |  |  |  |
| 710 | 9.2 | **GameDesign** | 3d? | 2005-02-05 | 2005-02-08 |  | 33.88d |  |  |  |  |
| 711 | 9.2.1 | **Secrets** | 3d? | 2005-02-05 | 2005-02-08 |  | 33.88d |  |  |  |  |
| 712 | 9.2.1.1 | **Stage 1** | 3d? | 2005-02-05 | 2005-02-08 |  | 33.88d |  |  |  |  |
| 713 | 9.2.1.1.1 | Design | 1d? | 2005-02-05 | 2005-02-05 |  | 33.88d | 0d |  |  |  |
| 714 | 9.2.1.1.2 | Implementation | 1d? | 2005-02-07 | 2005-02-07 | 713 | 33.88d | 0d |  |  |  |
| 715 | 9.2.1.1.3 | Tuning | 1d? | 2005-02-08 | 2005-02-08 | 714 | 33.88d |  |  |  |  |
| 716 | 9.2.2 | **Smartterrains** | 3d? | 2005-02-05 | 2005-02-08 |  | 33.88d |  |  |  |  |
| 717 | 9.2.2.1 | **Stage 1** | 3d? | 2005-02-05 | 2005-02-08 |  | 33.88d |  |  |  |  |
| 718 | 9.2.2.1.1 | Design | 1d? | 2005-02-05 | 2005-02-05 |  | 33.88d | 0d |  |  |  |
| 719 | 9.2.2.1.2 | Implementation | 1d? | 2005-02-07 | 2005-02-07 | 718 | 33.88d | 0d |  |  |  |
| 720 | 9.2.2.1.3 | Tuning | 1d? | 2005-02-08 | 2005-02-08 | 719 | 33.88d |  |  |  |  |

| ID | WBS | Task | Duration | Start | Finish | Predecessors | Total slack | Free slack |
| --- | --- | --- | --- | --- | --- | --- | --- | --- |
| 721 | 9.2.3 | **Monsters/Spawns** | 3d? | 2005-02-05 | 2005-02-08 |  | 33.88d |  |
| 722 | 9.2.3.1 | **Stage 1** | 3d? | 2005-02-05 | 2005-02-08 |  | 33.88d |  |
| 723 | 9.2.3.1.1 | Design | 1d? | 2005-02-05 | 2005-02-05 |  | 33.88d | 0d |
| 724 | 9.2.3.1.2 | Implementation | 1d? | 2005-02-07 | 2005-02-07 | 723 | 33.88d | 0d |
| 725 | 9.2.3.1.3 | Tuning | 1d? | 2005-02-08 | 2005-02-08 | 724 | 33.88d |  |
| 726 | 9.2.4 | **Stalkers/Spawns** | 3d? | 2005-02-05 | 2005-02-08 |  | 33.88d |  |
| 727 | 9.2.4.1 | **Stage 1** | 3d? | 2005-02-05 | 2005-02-08 |  | 33.88d |  |
| 728 | 9.2.4.1.1 | Design | 1d? | 2005-02-05 | 2005-02-05 |  | 33.88d | 0d |
| 729 | 9.2.4.1.2 | Implementation | 1d? | 2005-02-07 | 2005-02-07 | 728 | 33.88d | 0d |
| 730 | 9.2.4.1.3 | Tuning | 1d? | 2005-02-08 | 2005-02-08 | 729 | 33.88d |  |
| 731 | 9.2.5 | **Anomalies/Spawns** | 3d? | 2005-02-05 | 2005-02-08 |  | 33.88d |  |
| 732 | 9.2.5.1 | **Stage 1** | 3d? | 2005-02-05 | 2005-02-08 |  | 33.88d |  |
| 733 | 9.2.5.1.1 | Design | 1d? | 2005-02-05 | 2005-02-05 |  | 33.88d | 0d |
| 734 | 9.2.5.1.2 | Implementation | 1d? | 2005-02-07 | 2005-02-07 | 733 | 33.88d | 0d |
| 735 | 9.2.5.1.3 | Tuning | 1d? | 2005-02-08 | 2005-02-08 | 734 | 33.88d |  |
| 736 | 9.2.6 | **Physicks** | 3d? | 2005-02-05 | 2005-02-08 |  | 33.88d |  |
| 737 | 9.2.6.1 | **Stage 1** | 3d? | 2005-02-05 | 2005-02-08 |  | 33.88d |  |
| 738 | 9.2.6.1.1 | Design | 1d? | 2005-02-05 | 2005-02-05 |  | 33.88d | 0d |
| 739 | 9.2.6.1.2 | Implementation | 1d? | 2005-02-07 | 2005-02-07 | 738 | 33.88d | 0d |
| 740 | 9.2.6.1.3 | Tuning | 1d? | 2005-02-08 | 2005-02-08 | 739 | 33.88d |  |
| 742 | 9.3 | **Scripts** | 5d? | 2005-02-05 | 2005-02-10 |  | 31.88d |  |
| 743 | 9.3.1 | **Script 1** | 5d? | 2005-02-05 | 2005-02-10 |  | 31.88d |  |
| 744 | 9.3.1.1 | Scenario(text) | 1d? | 2005-02-05 | 2005-02-05 |  | 31.88d | 0d |
| 745 | 9.3.1.2 | Постановка задач | 1d? | 2005-02-07 | 2005-02-07 | 744 | 31.88d | 0d |
| 746 | 9.3.1.3 | Implimentation | 1d? | 2005-02-08 | 2005-02-08 | 745 | 31.88d | 0d |
| 747 | 9.3.1.4 | Dilogs/VO/Icons/Objects/Animations | 1d? | 2005-02-09 | 2005-02-09 | 746 | 31.88d | 0d |
| 748 | 9.3.1.5 | Настройка | 1d? | 2005-02-10 | 2005-02-10 | 747 | 31.88d |  |

| ID | WBS | Task | Duration | Start | Finish | Predecessors | Total slack | Free slack |
| --- | --- | --- | --- | --- | --- | --- | --- | --- |
| 749 | 9.3.2 | **Script 2** | 5d? | 2005-02-05 | 2005-02-10 |  | 31.88d |  |
| 750 | 9.3.2.1 | Scenario(text) | 1d? | 2005-02-05 | 2005-02-05 |  | 31.88d | 0d |
| 751 | 9.3.2.2 | Постановка задач | 1d? | 2005-02-07 | 2005-02-07 | 750 | 31.88d | 0d |
| 752 | 9.3.2.3 | Implimentation | 1d? | 2005-02-08 | 2005-02-08 | 751 | 31.88d | 0d |
| 753 | 9.3.2.4 | Dilogs/VO/Icons/Objects/Animations | 1d? | 2005-02-09 | 2005-02-09 | 752 | 31.88d | 0d |
| 754 | 9.3.2.5 | Настройка | 1d? | 2005-02-10 | 2005-02-10 | 753 | 31.88d |  |
| 755 | 9.3.3 | **Script 3** | 5d? | 2005-02-05 | 2005-02-10 |  | 31.88d |  |
| 756 | 9.3.3.1 | Scenario(text) | 1d? | 2005-02-05 | 2005-02-05 |  | 31.88d | 0d |
| 757 | 9.3.3.2 | Постановка задач | 1d? | 2005-02-07 | 2005-02-07 | 756 | 31.88d | 0d |
| 758 | 9.3.3.3 | Implimentation | 1d? | 2005-02-08 | 2005-02-08 | 757 | 31.88d | 0d |
| 759 | 9.3.3.4 | Dilogs/VO/Icons/Objects/Animations | 1d? | 2005-02-09 | 2005-02-09 | 758 | 31.88d | 0d |
| 760 | 9.3.3.5 | Настройка | 1d? | 2005-02-10 | 2005-02-10 | 759 | 31.88d |  |
| 761 | 9.3.4 | **Script 4** | 5d? | 2005-02-05 | 2005-02-10 |  | 31.88d |  |
| 762 | 9.3.4.1 | Scenario(text) | 1d? | 2005-02-05 | 2005-02-05 |  | 31.88d | 0d |
| 763 | 9.3.4.2 | Постановка задач | 1d? | 2005-02-07 | 2005-02-07 | 762 | 31.88d | 0d |
| 764 | 9.3.4.3 | Implimentation | 1d? | 2005-02-08 | 2005-02-08 | 763 | 31.88d | 0d |
| 765 | 9.3.4.4 | Dilogs/VO/Icons/Objects/Animations | 1d? | 2005-02-09 | 2005-02-09 | 764 | 31.88d | 0d |
| 766 | 9.3.4.5 | Настройка | 1d? | 2005-02-10 | 2005-02-10 | 765 | 31.88d |  |
| 767 | 9.3.5 | **Script 5** | 5d? | 2005-02-05 | 2005-02-10 |  | 31.88d |  |
| 768 | 9.3.5.1 | Scenario(text) | 1d? | 2005-02-05 | 2005-02-05 |  | 31.88d | 0d |
| 769 | 9.3.5.2 | Постановка задач | 1d? | 2005-02-07 | 2005-02-07 | 768 | 31.88d | 0d |
| 770 | 9.3.5.3 | Implimentation | 1d? | 2005-02-08 | 2005-02-08 | 769 | 31.88d | 0d |
| 771 | 9.3.5.4 | Dilogs/VO/Icons/Objects/Animations | 1d? | 2005-02-09 | 2005-02-09 | 770 | 31.88d | 0d |
| 772 | 9.3.5.5 | Настройка | 1d? | 2005-02-10 | 2005-02-10 | 771 | 31.88d |  |

| ID | WBS | Task | Duration | Start | Finish | Predecessors | Total slack | Free slack | Deadline | Resources | Work |
| --- | --- | --- | --- | --- | --- | --- | --- | --- | --- | --- | --- |
| 774 | 10 | **17_Radar_Monolith_Control_Underground** | 11d? | 2005-02-18 | 2005-03-02 | 696 | 25.88d |  | 2005-04-29 | Джим, Угрюмый | 88h |
| 775 | 10.1 | **LevelDesign** | 11d? | 2005-02-18 | 2005-03-02 |  | 25.88d |  | 2005-04-01 |  |  |
| 776 | 10.1.1 | **Stage 1** | 11d? | 2005-02-18 | 2005-03-02 |  | 25.88d |  |  |  |  |
| 777 | 10.1.1.1 | List of Changes | 2d | 2005-02-18 | 2005-02-19 |  | 25.88d | 0d |  |  |  |
| 778 | 10.1.1.2 | Changed Geometry | 1d? | 2005-02-21 | 2005-02-21 | 777 | 25.88d | 0d |  |  |  |
| 779 | 10.1.1.3 | Check List 1 | 1d? | 2005-02-22 | 2005-02-22 | 778 | 25.88d | 0d |  |  |  |
| 780 | 10.1.1.4 | Check List 2 | 1d? | 2005-02-23 | 2005-02-23 | 779 | 25.88d | 0d |  |  |  |
| 781 | 10.1.1.5 | Check List 3 | 1d? | 2005-02-24 | 2005-02-24 | 780 | 25.88d | 0d |  |  |  |
| 782 | 10.1.1.6 | Check List 4 | 1d? | 2005-02-25 | 2005-02-25 | 781 | 25.88d | 0d |  |  |  |
| 783 | 10.1.1.7 | Render Geometry | 1d? | 2005-02-26 | 2005-02-26 | 782 | 25.88d | 0d |  |  |  |
| 784 | 10.1.1.8 | Grass | 1d? | 2005-02-28 | 2005-02-28 | 783 | 25.88d | 0d |  |  |  |
| 785 | 10.1.1.9 | AI Maps | 1d? | 2005-03-01 | 2005-03-01 | 784 | 25.88d | 0d |  |  |  |
| 786 | 10.1.1.10 | Graphs | 1d? | 2005-03-02 | 2005-03-02 | 785 | 25.88d |  |  |  |  |
| 788 | 10.2 | **GameDesign** | 3d? | 2005-02-18 | 2005-02-21 |  | 57.88d |  |  |  |  |
| 789 | 10.2.1 | **Secrets** | 3d? | 2005-02-18 | 2005-02-21 |  | 57.88d |  |  |  |  |
| 790 | 10.2.1.1 | **Stage 1** | 3d? | 2005-02-18 | 2005-02-21 |  | 57.88d |  |  |  |  |
| 791 | 10.2.1.1.1 | Design | 1d? | 2005-02-18 | 2005-02-18 |  | 57.88d | 0d |  |  |  |
| 792 | 10.2.1.1.2 | Implementation | 1d? | 2005-02-19 | 2005-02-19 | 791 | 57.88d | 0d |  |  |  |
| 793 | 10.2.1.1.3 | Tuning | 1d? | 2005-02-21 | 2005-02-21 | 792 | 57.88d |  |  |  |  |
| 794 | 10.2.2 | **Smartterrains** | 3d? | 2005-02-18 | 2005-02-21 |  | 57.88d |  |  |  |  |
| 795 | 10.2.2.1 | **Stage 1** | 3d? | 2005-02-18 | 2005-02-21 |  | 57.88d |  |  |  |  |
| 796 | 10.2.2.1.1 | Design | 1d? | 2005-02-18 | 2005-02-18 |  | 57.88d | 0d |  |  |  |
| 797 | 10.2.2.1.2 | Implementation | 1d? | 2005-02-19 | 2005-02-19 | 796 | 57.88d | 0d |  |  |  |
| 798 | 10.2.2.1.3 | Tuning | 1d? | 2005-02-21 | 2005-02-21 | 797 | 57.88d |  |  |  |  |

| ID | WBS | Task | Duration | Start | Finish | Predecessors | Total slack | Free slack |
| --- | --- | --- | --- | --- | --- | --- | --- | --- |
| 799 | 10.2.3 | **Monsters/Spawns** | 3d? | 2005-02-18 | 2005-02-21 |  | 57.88d |  |
| 800 | 10.2.3.1 | **Stage 1** | 3d? | 2005-02-18 | 2005-02-21 |  | 57.88d |  |
| 801 | 10.2.3.1.1 | Design | 1d? | 2005-02-18 | 2005-02-18 |  | 57.88d | 0d |
| 802 | 10.2.3.1.2 | Implementation | 1d? | 2005-02-19 | 2005-02-19 | 801 | 57.88d | 0d |
| 803 | 10.2.3.1.3 | Tuning | 1d? | 2005-02-21 | 2005-02-21 | 802 | 57.88d |  |
| 804 | 10.2.4 | **Stalkers/Spawns** | 3d? | 2005-02-18 | 2005-02-21 |  | 57.88d |  |
| 805 | 10.2.4.1 | **Stage 1** | 3d? | 2005-02-18 | 2005-02-21 |  | 57.88d |  |
| 806 | 10.2.4.1.1 | Design | 1d? | 2005-02-18 | 2005-02-18 |  | 57.88d | 0d |
| 807 | 10.2.4.1.2 | Implementation | 1d? | 2005-02-19 | 2005-02-19 | 806 | 57.88d | 0d |
| 808 | 10.2.4.1.3 | Tuning | 1d? | 2005-02-21 | 2005-02-21 | 807 | 57.88d |  |
| 809 | 10.2.5 | **Anomalies/Spawns** | 3d? | 2005-02-18 | 2005-02-21 |  | 57.88d |  |
| 810 | 10.2.5.1 | **Stage 1** | 3d? | 2005-02-18 | 2005-02-21 |  | 57.88d |  |
| 811 | 10.2.5.1.1 | Design | 1d? | 2005-02-18 | 2005-02-18 |  | 57.88d | 0d |
| 812 | 10.2.5.1.2 | Implementation | 1d? | 2005-02-19 | 2005-02-19 | 811 | 57.88d | 0d |
| 813 | 10.2.5.1.3 | Tuning | 1d? | 2005-02-21 | 2005-02-21 | 812 | 57.88d |  |
| 814 | 10.2.6 | **Physicks** | 3d? | 2005-02-18 | 2005-02-21 |  | 57.88d |  |
| 815 | 10.2.6.1 | **Stage 1** | 3d? | 2005-02-18 | 2005-02-21 |  | 57.88d |  |
| 816 | 10.2.6.1.1 | Design | 1d? | 2005-02-18 | 2005-02-18 |  | 57.88d | 0d |
| 817 | 10.2.6.1.2 | Implementation | 1d? | 2005-02-19 | 2005-02-19 | 816 | 57.88d | 0d |
| 818 | 10.2.6.1.3 | Tuning | 1d? | 2005-02-21 | 2005-02-21 | 817 | 57.88d |  |
| 820 | 10.3 | **Scripts** | 5d? | 2005-02-18 | 2005-02-23 |  | 55.88d |  |
| 821 | 10.3.1 | **Script 1** | 5d? | 2005-02-18 | 2005-02-23 |  | 55.88d |  |
| 822 | 10.3.1.1 | Scenario(text) | 1d? | 2005-02-18 | 2005-02-18 |  | 55.88d | 0d |
| 823 | 10.3.1.2 | Постановка задач | 1d? | 2005-02-19 | 2005-02-19 | 822 | 55.88d | 0d |
| 824 | 10.3.1.3 | Implimentation | 1d? | 2005-02-21 | 2005-02-21 | 823 | 55.88d | 0d |
| 825 | 10.3.1.4 | Dilogs/VO/Icons/Objects/Animations | 1d? | 2005-02-22 | 2005-02-22 | 824 | 55.88d | 0d |
| 826 | 10.3.1.5 | Настройка | 1d? | 2005-02-23 | 2005-02-23 | 825 | 55.88d |  |

| ID | WBS | Task | Duration | Start | Finish | Predecessors | Total slack | Free slack |
| --- | --- | --- | --- | --- | --- | --- | --- | --- |
| 827 | 10.3.2 | **Script 2** | 5d? | 2005-02-18 | 2005-02-23 |  | 55.88d |  |
| 828 | 10.3.2.1 | Scenario(text) | 1d? | 2005-02-18 | 2005-02-18 |  | 55.88d | 0d |
| 829 | 10.3.2.2 | Постановка задач | 1d? | 2005-02-19 | 2005-02-19 | 828 | 55.88d | 0d |
| 830 | 10.3.2.3 | Implimentation | 1d? | 2005-02-21 | 2005-02-21 | 829 | 55.88d | 0d |
| 831 | 10.3.2.4 | Dilogs/VO/Icons/Objects/Animations | 1d? | 2005-02-22 | 2005-02-22 | 830 | 55.88d | 0d |
| 832 | 10.3.2.5 | Настройка | 1d? | 2005-02-23 | 2005-02-23 | 831 | 55.88d |  |
| 833 | 10.3.3 | **Script 3** | 5d? | 2005-02-18 | 2005-02-23 |  | 55.88d |  |
| 834 | 10.3.3.1 | Scenario(text) | 1d? | 2005-02-18 | 2005-02-18 |  | 55.88d | 0d |
| 835 | 10.3.3.2 | Постановка задач | 1d? | 2005-02-19 | 2005-02-19 | 834 | 55.88d | 0d |
| 836 | 10.3.3.3 | Implimentation | 1d? | 2005-02-21 | 2005-02-21 | 835 | 55.88d | 0d |
| 837 | 10.3.3.4 | Dilogs/VO/Icons/Objects/Animations | 1d? | 2005-02-22 | 2005-02-22 | 836 | 55.88d | 0d |
| 838 | 10.3.3.5 | Настройка | 1d? | 2005-02-23 | 2005-02-23 | 837 | 55.88d |  |
| 839 | 10.3.4 | **Script 4** | 5d? | 2005-02-18 | 2005-02-23 |  | 55.88d |  |
| 840 | 10.3.4.1 | Scenario(text) | 1d? | 2005-02-18 | 2005-02-18 |  | 55.88d | 0d |
| 841 | 10.3.4.2 | Постановка задач | 1d? | 2005-02-19 | 2005-02-19 | 840 | 55.88d | 0d |
| 842 | 10.3.4.3 | Implimentation | 1d? | 2005-02-21 | 2005-02-21 | 841 | 55.88d | 0d |
| 843 | 10.3.4.4 | Dilogs/VO/Icons/Objects/Animations | 1d? | 2005-02-22 | 2005-02-22 | 842 | 55.88d | 0d |
| 844 | 10.3.4.5 | Настройка | 1d? | 2005-02-23 | 2005-02-23 | 843 | 55.88d |  |
| 845 | 10.3.5 | **Script 5** | 5d? | 2005-02-18 | 2005-02-23 |  | 55.88d |  |
| 846 | 10.3.5.1 | Scenario(text) | 1d? | 2005-02-18 | 2005-02-18 |  | 55.88d | 0d |
| 847 | 10.3.5.2 | Постановка задач | 1d? | 2005-02-19 | 2005-02-19 | 846 | 55.88d | 0d |
| 848 | 10.3.5.3 | Implimentation | 1d? | 2005-02-21 | 2005-02-21 | 847 | 55.88d | 0d |
| 849 | 10.3.5.4 | Dilogs/VO/Icons/Objects/Animations | 1d? | 2005-02-22 | 2005-02-22 | 848 | 55.88d | 0d |
| 850 | 10.3.5.5 | Настройка | 1d? | 2005-02-23 | 2005-02-23 | 849 | 55.88d |  |

| ID | WBS | Task | Duration | Start | Finish | Predecessors | Total slack | Free slack | Deadline | Resources | Work |
| --- | --- | --- | --- | --- | --- | --- | --- | --- | --- | --- | --- |
| 856 | 11 | **08_Rostok_Bar** | 11d? | 2005-01-24 | 2005-02-04 |  | -20.12d | 0d | 2005-02-07 | Коан, Руслан | 88h |
| 857 | 11.1 | **LevelDesign** | 11d? | 2005-01-24 | 2005-02-04 |  | -20.12d | 0d | 2005-02-01 |  |  |
| 858 | 11.1.1 | **Stage 1** | 11d? | 2005-01-24 | 2005-02-04 |  | -20.12d | 0d |  |  |  |
| 859 | 11.1.1.1 | List of Changes | 2d | 2005-01-24 | 2005-01-25 |  | -20.12d | 0d |  |  |  |
| 860 | 11.1.1.2 | Changed Geometry | 1d? | 2005-01-26 | 2005-01-26 | 859 | -20.12d | 0d |  |  |  |
| 861 | 11.1.1.3 | Check List 1 | 1d? | 2005-01-27 | 2005-01-27 | 860 | -20.12d | 0d |  |  |  |
| 862 | 11.1.1.4 | Check List 2 | 1d? | 2005-01-28 | 2005-01-28 | 861 | -20.12d | 0d |  |  |  |
| 863 | 11.1.1.5 | Check List 3 | 1d? | 2005-01-29 | 2005-01-29 | 862 | -20.12d | 0d |  |  |  |
| 864 | 11.1.1.6 | Check List 4 | 1d? | 2005-01-31 | 2005-01-31 | 863 | -20.12d | 0d |  |  |  |
| 865 | 11.1.1.7 | Render Geometry | 1d? | 2005-02-01 | 2005-02-01 | 864 | -20.12d | 0d |  |  |  |
| 866 | 11.1.1.8 | Grass | 1d? | 2005-02-02 | 2005-02-02 | 865 | -20.12d | 0d |  |  |  |
| 867 | 11.1.1.9 | AI Maps | 1d? | 2005-02-03 | 2005-02-03 | 866 | -20.12d | 0d |  |  |  |
| 868 | 11.1.1.10 | Graphs | 1d? | 2005-02-04 | 2005-02-04 | 867 | -20.12d | 0d |  |  |  |
| 870 | 11.2 | **GameDesign** | 3d? | 2005-01-24 | 2005-01-26 |  | -12.12d | 0d |  |  |  |
| 871 | 11.2.1 | **Secrets** | 3d? | 2005-01-24 | 2005-01-26 |  | -12.12d | 0d |  |  |  |
| 872 | 11.2.1.1 | **Stage 1** | 3d? | 2005-01-24 | 2005-01-26 |  | -12.12d | 0d |  |  |  |
| 873 | 11.2.1.1.1 | Design | 1d? | 2005-01-24 | 2005-01-24 |  | -12.12d | 0d |  |  |  |
| 874 | 11.2.1.1.2 | Implementation | 1d? | 2005-01-25 | 2005-01-25 | 873 | -12.12d | 0d |  |  |  |
| 875 | 11.2.1.1.3 | Tuning | 1d? | 2005-01-26 | 2005-01-26 | 874 | -12.12d | 0d |  |  |  |
| 876 | 11.2.2 | **Smartterrains** | 3d? | 2005-01-24 | 2005-01-26 |  | -12.12d | 0d |  |  |  |
| 877 | 11.2.2.1 | **Stage 1** | 3d? | 2005-01-24 | 2005-01-26 |  | -12.12d | 0d |  |  |  |
| 878 | 11.2.2.1.1 | Design | 1d? | 2005-01-24 | 2005-01-24 |  | -12.12d | 0d |  |  |  |
| 879 | 11.2.2.1.2 | Implementation | 1d? | 2005-01-25 | 2005-01-25 | 878 | -12.12d | 0d |  |  |  |
| 880 | 11.2.2.1.3 | Tuning | 1d? | 2005-01-26 | 2005-01-26 | 879 | -12.12d | 0d |  |  |  |

| ID | WBS | Task | Duration | Start | Finish | Predecessors | Total slack | Free slack |
| --- | --- | --- | --- | --- | --- | --- | --- | --- |
| 881 | 11.2.3 | **Monsters/Spawns** | 3d? | 2005-01-24 | 2005-01-26 |  | -12.12d | 0d |
| 882 | 11.2.3.1 | **Stage 1** | 3d? | 2005-01-24 | 2005-01-26 |  | -12.12d | 0d |
| 883 | 11.2.3.1.1 | Design | 1d? | 2005-01-24 | 2005-01-24 |  | -12.12d | 0d |
| 884 | 11.2.3.1.2 | Implementation | 1d? | 2005-01-25 | 2005-01-25 | 883 | -12.12d | 0d |
| 885 | 11.2.3.1.3 | Tuning | 1d? | 2005-01-26 | 2005-01-26 | 884 | -12.12d | 0d |
| 886 | 11.2.4 | **Stalkers/Spawns** | 3d? | 2005-01-24 | 2005-01-26 |  | -12.12d | 0d |
| 887 | 11.2.4.1 | **Stage 1** | 3d? | 2005-01-24 | 2005-01-26 |  | -12.12d | 0d |
| 888 | 11.2.4.1.1 | Design | 1d? | 2005-01-24 | 2005-01-24 |  | -12.12d | 0d |
| 889 | 11.2.4.1.2 | Implementation | 1d? | 2005-01-25 | 2005-01-25 | 888 | -12.12d | 0d |
| 890 | 11.2.4.1.3 | Tuning | 1d? | 2005-01-26 | 2005-01-26 | 889 | -12.12d | 0d |
| 891 | 11.2.5 | **Anomalies/Spawns** | 3d? | 2005-01-24 | 2005-01-26 |  | -12.12d | 0d |
| 892 | 11.2.5.1 | **Stage 1** | 3d? | 2005-01-24 | 2005-01-26 |  | -12.12d | 0d |
| 893 | 11.2.5.1.1 | Design | 1d? | 2005-01-24 | 2005-01-24 |  | -12.12d | 0d |
| 894 | 11.2.5.1.2 | Implementation | 1d? | 2005-01-25 | 2005-01-25 | 893 | -12.12d | 0d |
| 895 | 11.2.5.1.3 | Tuning | 1d? | 2005-01-26 | 2005-01-26 | 894 | -12.12d | 0d |
| 896 | 11.2.6 | **Physicks** | 3d? | 2005-01-24 | 2005-01-26 |  | -12.12d | 0d |
| 897 | 11.2.6.1 | **Stage 1** | 3d? | 2005-01-24 | 2005-01-26 |  | -12.12d | 0d |
| 898 | 11.2.6.1.1 | Design | 1d? | 2005-01-24 | 2005-01-24 |  | -12.12d | 0d |
| 899 | 11.2.6.1.2 | Implementation | 1d? | 2005-01-25 | 2005-01-25 | 898 | -12.12d | 0d |
| 900 | 11.2.6.1.3 | Tuning | 1d? | 2005-01-26 | 2005-01-26 | 899 | -12.12d | 0d |
| 902 | 11.3 | **Scripts** | 5d? | 2005-01-24 | 2005-01-28 |  | -14.12d | 0d |
| 903 | 11.3.1 | **Script 1** | 5d? | 2005-01-24 | 2005-01-28 |  | -14.12d | 0d |
| 904 | 11.3.1.1 | Scenario(text) | 1d? | 2005-01-24 | 2005-01-24 |  | -14.12d | 0d |
| 905 | 11.3.1.2 | Постановка задач | 1d? | 2005-01-25 | 2005-01-25 | 904 | -14.12d | 0d |
| 906 | 11.3.1.3 | Implimentation | 1d? | 2005-01-26 | 2005-01-26 | 905 | -14.12d | 0d |
| 907 | 11.3.1.4 | Dilogs/VO/Icons/Objects/Animations | 1d? | 2005-01-27 | 2005-01-27 | 906 | -14.12d | 0d |
| 908 | 11.3.1.5 | Настройка | 1d? | 2005-01-28 | 2005-01-28 | 907 | -14.12d | 0d |

| ID | WBS | Task | Duration | Start | Finish | Predecessors | Total slack | Free slack |
| --- | --- | --- | --- | --- | --- | --- | --- | --- |
| 909 | 11.3.2 | **Script 2** | 5d? | 2005-01-24 | 2005-01-28 |  | -14.12d | 0d |
| 910 | 11.3.2.1 | Scenario(text) | 1d? | 2005-01-24 | 2005-01-24 |  | -14.12d | 0d |
| 911 | 11.3.2.2 | Постановка задач | 1d? | 2005-01-25 | 2005-01-25 | 910 | -14.12d | 0d |
| 912 | 11.3.2.3 | Implimentation | 1d? | 2005-01-26 | 2005-01-26 | 911 | -14.12d | 0d |
| 913 | 11.3.2.4 | Dilogs/VO/Icons/Objects/Animations | 1d? | 2005-01-27 | 2005-01-27 | 912 | -14.12d | 0d |
| 914 | 11.3.2.5 | Настройка | 1d? | 2005-01-28 | 2005-01-28 | 913 | -14.12d | 0d |
| 915 | 11.3.3 | **Script 3** | 5d? | 2005-01-24 | 2005-01-28 |  | -14.12d | 0d |
| 916 | 11.3.3.1 | Scenario(text) | 1d? | 2005-01-24 | 2005-01-24 |  | -14.12d | 0d |
| 917 | 11.3.3.2 | Постановка задач | 1d? | 2005-01-25 | 2005-01-25 | 916 | -14.12d | 0d |
| 918 | 11.3.3.3 | Implimentation | 1d? | 2005-01-26 | 2005-01-26 | 917 | -14.12d | 0d |
| 919 | 11.3.3.4 | Dilogs/VO/Icons/Objects/Animations | 1d? | 2005-01-27 | 2005-01-27 | 918 | -14.12d | 0d |
| 920 | 11.3.3.5 | Настройка | 1d? | 2005-01-28 | 2005-01-28 | 919 | -14.12d | 0d |
| 921 | 11.3.4 | **Script 4** | 5d? | 2005-01-24 | 2005-01-28 |  | -14.12d | 0d |
| 922 | 11.3.4.1 | Scenario(text) | 1d? | 2005-01-24 | 2005-01-24 |  | -14.12d | 0d |
| 923 | 11.3.4.2 | Постановка задач | 1d? | 2005-01-25 | 2005-01-25 | 922 | -14.12d | 0d |
| 924 | 11.3.4.3 | Implimentation | 1d? | 2005-01-26 | 2005-01-26 | 923 | -14.12d | 0d |
| 925 | 11.3.4.4 | Dilogs/VO/Icons/Objects/Animations | 1d? | 2005-01-27 | 2005-01-27 | 924 | -14.12d | 0d |
| 926 | 11.3.4.5 | Настройка | 1d? | 2005-01-28 | 2005-01-28 | 925 | -14.12d | 0d |
| 927 | 11.3.5 | **Script 5** | 5d? | 2005-01-24 | 2005-01-28 |  | -14.12d | 0d |
| 928 | 11.3.5.1 | Scenario(text) | 1d? | 2005-01-24 | 2005-01-24 |  | -14.12d | 0d |
| 929 | 11.3.5.2 | Постановка задач | 1d? | 2005-01-25 | 2005-01-25 | 928 | -14.12d | 0d |
| 930 | 11.3.5.3 | Implimentation | 1d? | 2005-01-26 | 2005-01-26 | 929 | -14.12d | 0d |
| 931 | 11.3.5.4 | Dilogs/VO/Icons/Objects/Animations | 1d? | 2005-01-27 | 2005-01-27 | 930 | -14.12d | 0d |
| 932 | 11.3.5.5 | Настройка | 1d? | 2005-01-28 | 2005-01-28 | 931 | -14.12d | 0d |

| ID | WBS | Task | Duration | Start | Finish | Predecessors | Total slack | Free slack | Deadline | Resources | Work |
| --- | --- | --- | --- | --- | --- | --- | --- | --- | --- | --- | --- |
| 934 | 12 | **09_Rostok_Dolg** | 11d? | 2005-02-05 | 2005-02-17 | 856 | -20.12d | 0d | 2005-02-15 | Коан, Руслан | 88h |
| 935 | 12.1 | **LevelDesign** | 11d? | 2005-02-05 | 2005-02-17 |  | -20.12d | 0d | 2005-02-07 |  |  |
| 936 | 12.1.1 | **Stage 1** | 11d? | 2005-02-05 | 2005-02-17 |  | -20.12d | 0d |  |  |  |
| 937 | 12.1.1.1 | List of Changes | 2d | 2005-02-05 | 2005-02-07 |  | -20.12d | 0d |  |  |  |
| 938 | 12.1.1.2 | Changed Geometry | 1d? | 2005-02-08 | 2005-02-08 | 937 | -20.12d | 0d |  |  |  |
| 939 | 12.1.1.3 | Check List 1 | 1d? | 2005-02-09 | 2005-02-09 | 938 | -20.12d | 0d |  |  |  |
| 940 | 12.1.1.4 | Check List 2 | 1d? | 2005-02-10 | 2005-02-10 | 939 | -20.12d | 0d |  |  |  |
| 941 | 12.1.1.5 | Check List 3 | 1d? | 2005-02-11 | 2005-02-11 | 940 | -20.12d | 0d |  |  |  |
| 942 | 12.1.1.6 | Check List 4 | 1d? | 2005-02-12 | 2005-02-12 | 941 | -20.12d | 0d |  |  |  |
| 943 | 12.1.1.7 | Render Geometry | 1d? | 2005-02-14 | 2005-02-14 | 942 | -20.12d | 0d |  |  |  |
| 944 | 12.1.1.8 | Grass | 1d? | 2005-02-15 | 2005-02-15 | 943 | -20.12d | 0d |  |  |  |
| 945 | 12.1.1.9 | AI Maps | 1d? | 2005-02-16 | 2005-02-16 | 944 | -20.12d | 0d |  |  |  |
| 946 | 12.1.1.10 | Graphs | 1d? | 2005-02-17 | 2005-02-17 | 945 | -20.12d | 0d |  |  |  |
| 948 | 12.2 | **GameDesign** | 3d? | 2005-02-05 | 2005-02-08 |  | -12.12d | 0d |  |  |  |
| 949 | 12.2.1 | **Secrets** | 3d? | 2005-02-05 | 2005-02-08 |  | -12.12d | 0d |  |  |  |
| 950 | 12.2.1.1 | **Stage 1** | 3d? | 2005-02-05 | 2005-02-08 |  | -12.12d | 0d |  |  |  |
| 951 | 12.2.1.1.1 | Design | 1d? | 2005-02-05 | 2005-02-05 |  | -12.12d | 0d |  |  |  |
| 952 | 12.2.1.1.2 | Implementation | 1d? | 2005-02-07 | 2005-02-07 | 951 | -12.12d | 0d |  |  |  |
| 953 | 12.2.1.1.3 | Tuning | 1d? | 2005-02-08 | 2005-02-08 | 952 | -12.12d | 0d |  |  |  |
| 954 | 12.2.2 | **Smartterrains** | 3d? | 2005-02-05 | 2005-02-08 |  | -12.12d | 0d |  |  |  |
| 955 | 12.2.2.1 | **Stage 1** | 3d? | 2005-02-05 | 2005-02-08 |  | -12.12d | 0d |  |  |  |
| 956 | 12.2.2.1.1 | Design | 1d? | 2005-02-05 | 2005-02-05 |  | -12.12d | 0d |  |  |  |
| 957 | 12.2.2.1.2 | Implementation | 1d? | 2005-02-07 | 2005-02-07 | 956 | -12.12d | 0d |  |  |  |
| 958 | 12.2.2.1.3 | Tuning | 1d? | 2005-02-08 | 2005-02-08 | 957 | -12.12d | 0d |  |  |  |

| ID | WBS | Task | Duration | Start | Finish | Predecessors | Total slack | Free slack |
| --- | --- | --- | --- | --- | --- | --- | --- | --- |
| 959 | 12.2.3 | **Monsters/Spawns** | 3d? | 2005-02-05 | 2005-02-08 |  | -12.12d | 0d |
| 960 | 12.2.3.1 | **Stage 1** | 3d? | 2005-02-05 | 2005-02-08 |  | -12.12d | 0d |
| 961 | 12.2.3.1.1 | Design | 1d? | 2005-02-05 | 2005-02-05 |  | -12.12d | 0d |
| 962 | 12.2.3.1.2 | Implementation | 1d? | 2005-02-07 | 2005-02-07 | 961 | -12.12d | 0d |
| 963 | 12.2.3.1.3 | Tuning | 1d? | 2005-02-08 | 2005-02-08 | 962 | -12.12d | 0d |
| 964 | 12.2.4 | **Stalkers/Spawns** | 3d? | 2005-02-05 | 2005-02-08 |  | -12.12d | 0d |
| 965 | 12.2.4.1 | **Stage 1** | 3d? | 2005-02-05 | 2005-02-08 |  | -12.12d | 0d |
| 966 | 12.2.4.1.1 | Design | 1d? | 2005-02-05 | 2005-02-05 |  | -12.12d | 0d |
| 967 | 12.2.4.1.2 | Implementation | 1d? | 2005-02-07 | 2005-02-07 | 966 | -12.12d | 0d |
| 968 | 12.2.4.1.3 | Tuning | 1d? | 2005-02-08 | 2005-02-08 | 967 | -12.12d | 0d |
| 969 | 12.2.5 | **Anomalies/Spawns** | 3d? | 2005-02-05 | 2005-02-08 |  | -12.12d | 0d |
| 970 | 12.2.5.1 | **Stage 1** | 3d? | 2005-02-05 | 2005-02-08 |  | -12.12d | 0d |
| 971 | 12.2.5.1.1 | Design | 1d? | 2005-02-05 | 2005-02-05 |  | -12.12d | 0d |
| 972 | 12.2.5.1.2 | Implementation | 1d? | 2005-02-07 | 2005-02-07 | 971 | -12.12d | 0d |
| 973 | 12.2.5.1.3 | Tuning | 1d? | 2005-02-08 | 2005-02-08 | 972 | -12.12d | 0d |
| 974 | 12.2.6 | **Physicks** | 3d? | 2005-02-05 | 2005-02-08 |  | -12.12d | 0d |
| 975 | 12.2.6.1 | **Stage 1** | 3d? | 2005-02-05 | 2005-02-08 |  | -12.12d | 0d |
| 976 | 12.2.6.1.1 | Design | 1d? | 2005-02-05 | 2005-02-05 |  | -12.12d | 0d |
| 977 | 12.2.6.1.2 | Implementation | 1d? | 2005-02-07 | 2005-02-07 | 976 | -12.12d | 0d |
| 978 | 12.2.6.1.3 | Tuning | 1d? | 2005-02-08 | 2005-02-08 | 977 | -12.12d | 0d |
| 980 | 12.3 | **Scripts** | 5d? | 2005-02-05 | 2005-02-10 |  | -14.12d | 0d |
| 981 | 12.3.1 | **Script 1** | 5d? | 2005-02-05 | 2005-02-10 |  | -14.12d | 0d |
| 982 | 12.3.1.1 | Scenario(text) | 1d? | 2005-02-05 | 2005-02-05 |  | -14.12d | 0d |
| 983 | 12.3.1.2 | Постановка задач | 1d? | 2005-02-07 | 2005-02-07 | 982 | -14.12d | 0d |
| 984 | 12.3.1.3 | Implimentation | 1d? | 2005-02-08 | 2005-02-08 | 983 | -14.12d | 0d |
| 985 | 12.3.1.4 | Dilogs/VO/Icons/Objects/Animations | 1d? | 2005-02-09 | 2005-02-09 | 984 | -14.12d | 0d |
| 986 | 12.3.1.5 | Настройка | 1d? | 2005-02-10 | 2005-02-10 | 985 | -14.12d | 0d |

| ID | WBS | Task | Duration | Start | Finish | Predecessors | Total slack | Free slack |
| --- | --- | --- | --- | --- | --- | --- | --- | --- |
| 987 | 12.3.2 | **Script 2** | 5d? | 2005-02-05 | 2005-02-10 |  | -14.12d | 0d |
| 988 | 12.3.2.1 | Scenario(text) | 1d? | 2005-02-05 | 2005-02-05 |  | -14.12d | 0d |
| 989 | 12.3.2.2 | Постановка задач | 1d? | 2005-02-07 | 2005-02-07 | 988 | -14.12d | 0d |
| 990 | 12.3.2.3 | Implimentation | 1d? | 2005-02-08 | 2005-02-08 | 989 | -14.12d | 0d |
| 991 | 12.3.2.4 | Dilogs/VO/Icons/Objects/Animations | 1d? | 2005-02-09 | 2005-02-09 | 990 | -14.12d | 0d |
| 992 | 12.3.2.5 | Настройка | 1d? | 2005-02-10 | 2005-02-10 | 991 | -14.12d | 0d |
| 993 | 12.3.3 | **Script 3** | 5d? | 2005-02-05 | 2005-02-10 |  | -14.12d | 0d |
| 994 | 12.3.3.1 | Scenario(text) | 1d? | 2005-02-05 | 2005-02-05 |  | -14.12d | 0d |
| 995 | 12.3.3.2 | Постановка задач | 1d? | 2005-02-07 | 2005-02-07 | 994 | -14.12d | 0d |
| 996 | 12.3.3.3 | Implimentation | 1d? | 2005-02-08 | 2005-02-08 | 995 | -14.12d | 0d |
| 997 | 12.3.3.4 | Dilogs/VO/Icons/Objects/Animations | 1d? | 2005-02-09 | 2005-02-09 | 996 | -14.12d | 0d |
| 998 | 12.3.3.5 | Настройка | 1d? | 2005-02-10 | 2005-02-10 | 997 | -14.12d | 0d |
| 999 | 12.3.4 | **Script 4** | 5d? | 2005-02-05 | 2005-02-10 |  | -14.12d | 0d |
| 1000 | 12.3.4.1 | Scenario(text) | 1d? | 2005-02-05 | 2005-02-05 |  | -14.12d | 0d |
| 1001 | 12.3.4.2 | Постановка задач | 1d? | 2005-02-07 | 2005-02-07 | 1000 | -14.12d | 0d |
| 1002 | 12.3.4.3 | Implimentation | 1d? | 2005-02-08 | 2005-02-08 | 1001 | -14.12d | 0d |
| 1003 | 12.3.4.4 | Dilogs/VO/Icons/Objects/Animations | 1d? | 2005-02-09 | 2005-02-09 | 1002 | -14.12d | 0d |
| 1004 | 12.3.4.5 | Настройка | 1d? | 2005-02-10 | 2005-02-10 | 1003 | -14.12d | 0d |
| 1005 | 12.3.5 | **Script 5** | 5d? | 2005-02-05 | 2005-02-10 |  | -14.12d | 0d |
| 1006 | 12.3.5.1 | Scenario(text) | 1d? | 2005-02-05 | 2005-02-05 |  | -14.12d | 0d |
| 1007 | 12.3.5.2 | Постановка задач | 1d? | 2005-02-07 | 2005-02-07 | 1006 | -14.12d | 0d |
| 1008 | 12.3.5.3 | Implimentation | 1d? | 2005-02-08 | 2005-02-08 | 1007 | -14.12d | 0d |
| 1009 | 12.3.5.4 | Dilogs/VO/Icons/Objects/Animations | 1d? | 2005-02-09 | 2005-02-09 | 1008 | -14.12d | 0d |
| 1010 | 12.3.5.5 | Настройка | 1d? | 2005-02-10 | 2005-02-10 | 1009 | -14.12d | 0d |

| ID | WBS | Task | Duration | Start | Finish | Predecessors | Total slack | Free slack | Deadline | Resources | Work |
| --- | --- | --- | --- | --- | --- | --- | --- | --- | --- | --- | --- |
| 1013 | 13 | **07_Rostok** | 11d? | 2005-02-18 | 2005-03-02 | 934 | -20.12d | 0d | 2005-03-15 | Коан, Руслан | 88h |
| 1014 | 13.1 | **LevelDesign** | 11d? | 2005-02-18 | 2005-03-02 |  | -20.12d | 0d | 2005-02-07 |  |  |
| 1015 | 13.1.1 | **Stage 1** | 11d? | 2005-02-18 | 2005-03-02 |  | -20.12d | 0d |  |  |  |
| 1016 | 13.1.1.1 | List of Changes | 2d | 2005-02-18 | 2005-02-19 |  | -20.12d | 0d |  |  |  |
| 1017 | 13.1.1.2 | Changed Geometry | 1d? | 2005-02-21 | 2005-02-21 | 1016 | -20.12d | 0d |  |  |  |
| 1018 | 13.1.1.3 | Check List 1 | 1d? | 2005-02-22 | 2005-02-22 | 1017 | -20.12d | 0d |  |  |  |
| 1019 | 13.1.1.4 | Check List 2 | 1d? | 2005-02-23 | 2005-02-23 | 1018 | -20.12d | 0d |  |  |  |
| 1020 | 13.1.1.5 | Check List 3 | 1d? | 2005-02-24 | 2005-02-24 | 1019 | -20.12d | 0d |  |  |  |
| 1021 | 13.1.1.6 | Check List 4 | 1d? | 2005-02-25 | 2005-02-25 | 1020 | -20.12d | 0d |  |  |  |
| 1022 | 13.1.1.7 | Render Geometry | 1d? | 2005-02-26 | 2005-02-26 | 1021 | -20.12d | 0d |  |  |  |
| 1023 | 13.1.1.8 | Grass | 1d? | 2005-02-28 | 2005-02-28 | 1022 | -20.12d | 0d |  |  |  |
| 1024 | 13.1.1.9 | AI Maps | 1d? | 2005-03-01 | 2005-03-01 | 1023 | -20.12d | 0d |  |  |  |
| 1025 | 13.1.1.10 | Graphs | 1d? | 2005-03-02 | 2005-03-02 | 1024 | -20.12d | 0d |  |  |  |
| 1027 | 13.2 | **GameDesign** | 3d? | 2005-02-18 | 2005-02-21 |  | 7.88d |  |  |  |  |
| 1028 | 13.2.1 | **Secrets** | 3d? | 2005-02-18 | 2005-02-21 |  | 7.88d |  |  |  |  |
| 1029 | 13.2.1.1 | **Stage 1** | 3d? | 2005-02-18 | 2005-02-21 |  | 7.88d |  |  |  |  |
| 1030 | 13.2.1.1.1 | Design | 1d? | 2005-02-18 | 2005-02-18 |  | 7.88d | 0d |  |  |  |
| 1031 | 13.2.1.1.2 | Implementation | 1d? | 2005-02-19 | 2005-02-19 | 1030 | 7.88d | 0d |  |  |  |
| 1032 | 13.2.1.1.3 | Tuning | 1d? | 2005-02-21 | 2005-02-21 | 1031 | 7.88d |  |  |  |  |
| 1033 | 13.2.2 | **Smartterrains** | 3d? | 2005-02-18 | 2005-02-21 |  | 7.88d |  |  |  |  |
| 1034 | 13.2.2.1 | **Stage 1** | 3d? | 2005-02-18 | 2005-02-21 |  | 7.88d |  |  |  |  |
| 1035 | 13.2.2.1.1 | Design | 1d? | 2005-02-18 | 2005-02-18 |  | 7.88d | 0d |  |  |  |
| 1036 | 13.2.2.1.2 | Implementation | 1d? | 2005-02-19 | 2005-02-19 | 1035 | 7.88d | 0d |  |  |  |
| 1037 | 13.2.2.1.3 | Tuning | 1d? | 2005-02-21 | 2005-02-21 | 1036 | 7.88d |  |  |  |  |

| ID | WBS | Task | Duration | Start | Finish | Predecessors | Total slack | Free slack |
| --- | --- | --- | --- | --- | --- | --- | --- | --- |
| 1038 | 13.2.3 | **Monsters/Spawns** | 3d? | 2005-02-18 | 2005-02-21 |  | 7.88d |  |
| 1039 | 13.2.3.1 | **Stage 1** | 3d? | 2005-02-18 | 2005-02-21 |  | 7.88d |  |
| 1040 | 13.2.3.1.1 | Design | 1d? | 2005-02-18 | 2005-02-18 |  | 7.88d | 0d |
| 1041 | 13.2.3.1.2 | Implementation | 1d? | 2005-02-19 | 2005-02-19 | 1040 | 7.88d | 0d |
| 1042 | 13.2.3.1.3 | Tuning | 1d? | 2005-02-21 | 2005-02-21 | 1041 | 7.88d |  |
| 1043 | 13.2.4 | **Stalkers/Spawns** | 3d? | 2005-02-18 | 2005-02-21 |  | 7.88d |  |
| 1044 | 13.2.4.1 | **Stage 1** | 3d? | 2005-02-18 | 2005-02-21 |  | 7.88d |  |
| 1045 | 13.2.4.1.1 | Design | 1d? | 2005-02-18 | 2005-02-18 |  | 7.88d | 0d |
| 1046 | 13.2.4.1.2 | Implementation | 1d? | 2005-02-19 | 2005-02-19 | 1045 | 7.88d | 0d |
| 1047 | 13.2.4.1.3 | Tuning | 1d? | 2005-02-21 | 2005-02-21 | 1046 | 7.88d |  |
| 1048 | 13.2.5 | **Anomalies/Spawns** | 3d? | 2005-02-18 | 2005-02-21 |  | 7.88d |  |
| 1049 | 13.2.5.1 | **Stage 1** | 3d? | 2005-02-18 | 2005-02-21 |  | 7.88d |  |
| 1050 | 13.2.5.1.1 | Design | 1d? | 2005-02-18 | 2005-02-18 |  | 7.88d | 0d |
| 1051 | 13.2.5.1.2 | Implementation | 1d? | 2005-02-19 | 2005-02-19 | 1050 | 7.88d | 0d |
| 1052 | 13.2.5.1.3 | Tuning | 1d? | 2005-02-21 | 2005-02-21 | 1051 | 7.88d |  |
| 1053 | 13.2.6 | **Physicks** | 3d? | 2005-02-18 | 2005-02-21 |  | 7.88d |  |
| 1054 | 13.2.6.1 | **Stage 1** | 3d? | 2005-02-18 | 2005-02-21 |  | 7.88d |  |
| 1055 | 13.2.6.1.1 | Design | 1d? | 2005-02-18 | 2005-02-18 |  | 7.88d | 0d |
| 1056 | 13.2.6.1.2 | Implementation | 1d? | 2005-02-19 | 2005-02-19 | 1055 | 7.88d | 0d |
| 1057 | 13.2.6.1.3 | Tuning | 1d? | 2005-02-21 | 2005-02-21 | 1056 | 7.88d |  |
| 1059 | 13.3 | **Scripts** | 5d? | 2005-02-18 | 2005-02-23 |  | 5.88d |  |
| 1060 | 13.3.1 | **Script 1** | 5d? | 2005-02-18 | 2005-02-23 |  | 5.88d |  |
| 1061 | 13.3.1.1 | Scenario(text) | 1d? | 2005-02-18 | 2005-02-18 |  | 5.88d | 0d |
| 1062 | 13.3.1.2 | Постановка задач | 1d? | 2005-02-19 | 2005-02-19 | 1061 | 5.88d | 0d |
| 1063 | 13.3.1.3 | Implimentation | 1d? | 2005-02-21 | 2005-02-21 | 1062 | 5.88d | 0d |
| 1064 | 13.3.1.4 | Dilogs/VO/Icons/Objects/Animations | 1d? | 2005-02-22 | 2005-02-22 | 1063 | 5.88d | 0d |
| 1065 | 13.3.1.5 | Настройка | 1d? | 2005-02-23 | 2005-02-23 | 1064 | 5.88d |  |

| ID | WBS | Task | Duration | Start | Finish | Predecessors | Total slack | Free slack |
| --- | --- | --- | --- | --- | --- | --- | --- | --- |
| 1066 | 13.3.2 | **Script 2** | 5d? | 2005-02-18 | 2005-02-23 |  | 5.88d |  |
| 1067 | 13.3.2.1 | Scenario(text) | 1d? | 2005-02-18 | 2005-02-18 |  | 5.88d | 0d |
| 1068 | 13.3.2.2 | Постановка задач | 1d? | 2005-02-19 | 2005-02-19 | 1067 | 5.88d | 0d |
| 1069 | 13.3.2.3 | Implimentation | 1d? | 2005-02-21 | 2005-02-21 | 1068 | 5.88d | 0d |
| 1070 | 13.3.2.4 | Dilogs/VO/Icons/Objects/Animations | 1d? | 2005-02-22 | 2005-02-22 | 1069 | 5.88d | 0d |
| 1071 | 13.3.2.5 | Настройка | 1d? | 2005-02-23 | 2005-02-23 | 1070 | 5.88d |  |
| 1072 | 13.3.3 | **Script 3** | 5d? | 2005-02-18 | 2005-02-23 |  | 5.88d |  |
| 1073 | 13.3.3.1 | Scenario(text) | 1d? | 2005-02-18 | 2005-02-18 |  | 5.88d | 0d |
| 1074 | 13.3.3.2 | Постановка задач | 1d? | 2005-02-19 | 2005-02-19 | 1073 | 5.88d | 0d |
| 1075 | 13.3.3.3 | Implimentation | 1d? | 2005-02-21 | 2005-02-21 | 1074 | 5.88d | 0d |
| 1076 | 13.3.3.4 | Dilogs/VO/Icons/Objects/Animations | 1d? | 2005-02-22 | 2005-02-22 | 1075 | 5.88d | 0d |
| 1077 | 13.3.3.5 | Настройка | 1d? | 2005-02-23 | 2005-02-23 | 1076 | 5.88d |  |
| 1078 | 13.3.4 | **Script 4** | 5d? | 2005-02-18 | 2005-02-23 |  | 5.88d |  |
| 1079 | 13.3.4.1 | Scenario(text) | 1d? | 2005-02-18 | 2005-02-18 |  | 5.88d | 0d |
| 1080 | 13.3.4.2 | Постановка задач | 1d? | 2005-02-19 | 2005-02-19 | 1079 | 5.88d | 0d |
| 1081 | 13.3.4.3 | Implimentation | 1d? | 2005-02-21 | 2005-02-21 | 1080 | 5.88d | 0d |
| 1082 | 13.3.4.4 | Dilogs/VO/Icons/Objects/Animations | 1d? | 2005-02-22 | 2005-02-22 | 1081 | 5.88d | 0d |
| 1083 | 13.3.4.5 | Настройка | 1d? | 2005-02-23 | 2005-02-23 | 1082 | 5.88d |  |
| 1084 | 13.3.5 | **Script 5** | 5d? | 2005-02-18 | 2005-02-23 |  | 5.88d |  |
| 1085 | 13.3.5.1 | Scenario(text) | 1d? | 2005-02-18 | 2005-02-18 |  | 5.88d | 0d |
| 1086 | 13.3.5.2 | Постановка задач | 1d? | 2005-02-19 | 2005-02-19 | 1085 | 5.88d | 0d |
| 1087 | 13.3.5.3 | Implimentation | 1d? | 2005-02-21 | 2005-02-21 | 1086 | 5.88d | 0d |
| 1088 | 13.3.5.4 | Dilogs/VO/Icons/Objects/Animations | 1d? | 2005-02-22 | 2005-02-22 | 1087 | 5.88d | 0d |
| 1089 | 13.3.5.5 | Настройка | 1d? | 2005-02-23 | 2005-02-23 | 1088 | 5.88d |  |

| ID | WBS | Task | Duration | Start | Finish | Predecessors | Total slack | Free slack | Deadline | Resources | Work |
| --- | --- | --- | --- | --- | --- | --- | --- | --- | --- | --- | --- |
| 1091 | 14 | **11_Yantar** | 11d? | 2005-03-03 | 2005-03-15 | 1013 | -0.12d | 0d | 2005-04-15 | Коан, Руслан | 88h |
| 1092 | 14.1 | **LevelDesign** | 11d? | 2005-03-03 | 2005-03-15 |  | -0.12d | 0d | 2005-03-15 |  |  |
| 1093 | 14.1.1 | **Stage 1** | 11d? | 2005-03-03 | 2005-03-15 |  | -0.12d | 0d |  |  |  |
| 1094 | 14.1.1.1 | List of Changes | 2d | 2005-03-03 | 2005-03-04 |  | -0.12d | 0d |  |  |  |
| 1095 | 14.1.1.2 | Changed Geometry | 1d? | 2005-03-05 | 2005-03-05 | 1094 | -0.12d | 0d |  |  |  |
| 1096 | 14.1.1.3 | Check List 1 | 1d? | 2005-03-07 | 2005-03-07 | 1095 | -0.12d | 0d |  |  |  |
| 1097 | 14.1.1.4 | Check List 2 | 1d? | 2005-03-08 | 2005-03-08 | 1096 | -0.12d | 0d |  |  |  |
| 1098 | 14.1.1.5 | Check List 3 | 1d? | 2005-03-09 | 2005-03-09 | 1097 | -0.12d | 0d |  |  |  |
| 1099 | 14.1.1.6 | Check List 4 | 1d? | 2005-03-10 | 2005-03-10 | 1098 | -0.12d | 0d |  |  |  |
| 1100 | 14.1.1.7 | Render Geometry | 1d? | 2005-03-11 | 2005-03-11 | 1099 | -0.12d | 0d |  |  |  |
| 1101 | 14.1.1.8 | Grass | 1d? | 2005-03-12 | 2005-03-12 | 1100 | -0.12d | 0d |  |  |  |
| 1102 | 14.1.1.9 | AI Maps | 1d? | 2005-03-14 | 2005-03-14 | 1101 | -0.12d | 0d |  |  |  |
| 1103 | 14.1.1.10 | Graphs | 1d? | 2005-03-15 | 2005-03-15 | 1102 | -0.12d | 0d |  |  |  |
| 1105 | 14.2 | **GameDesign** | 3d? | 2005-03-03 | 2005-03-05 |  | 23.88d |  |  |  |  |
| 1106 | 14.2.1 | **Secrets** | 3d? | 2005-03-03 | 2005-03-05 |  | 23.88d |  |  |  |  |
| 1107 | 14.2.1.1 | **Stage 1** | 3d? | 2005-03-03 | 2005-03-05 |  | 23.88d |  |  |  |  |
| 1108 | 14.2.1.1.1 | Design | 1d? | 2005-03-03 | 2005-03-03 |  | 23.88d | 0d |  |  |  |
| 1109 | 14.2.1.1.2 | Implementation | 1d? | 2005-03-04 | 2005-03-04 | 1108 | 23.88d | 0d |  |  |  |
| 1110 | 14.2.1.1.3 | Tuning | 1d? | 2005-03-05 | 2005-03-05 | 1109 | 23.88d |  |  |  |  |
| 1111 | 14.2.2 | **Smartterrains** | 3d? | 2005-03-03 | 2005-03-05 |  | 23.88d |  |  |  |  |
| 1112 | 14.2.2.1 | **Stage 1** | 3d? | 2005-03-03 | 2005-03-05 |  | 23.88d |  |  |  |  |
| 1113 | 14.2.2.1.1 | Design | 1d? | 2005-03-03 | 2005-03-03 |  | 23.88d | 0d |  |  |  |
| 1114 | 14.2.2.1.2 | Implementation | 1d? | 2005-03-04 | 2005-03-04 | 1113 | 23.88d | 0d |  |  |  |
| 1115 | 14.2.2.1.3 | Tuning | 1d? | 2005-03-05 | 2005-03-05 | 1114 | 23.88d |  |  |  |  |

| ID | WBS | Task | Duration | Start | Finish | Predecessors | Total slack | Free slack |
| --- | --- | --- | --- | --- | --- | --- | --- | --- |
| 1116 | 14.2.3 | **Monsters/Spawns** | 3d? | 2005-03-03 | 2005-03-05 |  | 23.88d |  |
| 1117 | 14.2.3.1 | **Stage 1** | 3d? | 2005-03-03 | 2005-03-05 |  | 23.88d |  |
| 1118 | 14.2.3.1.1 | Design | 1d? | 2005-03-03 | 2005-03-03 |  | 23.88d | 0d |
| 1119 | 14.2.3.1.2 | Implementation | 1d? | 2005-03-04 | 2005-03-04 | 1118 | 23.88d | 0d |
| 1120 | 14.2.3.1.3 | Tuning | 1d? | 2005-03-05 | 2005-03-05 | 1119 | 23.88d |  |
| 1121 | 14.2.4 | **Stalkers/Spawns** | 3d? | 2005-03-03 | 2005-03-05 |  | 23.88d |  |
| 1122 | 14.2.4.1 | **Stage 1** | 3d? | 2005-03-03 | 2005-03-05 |  | 23.88d |  |
| 1123 | 14.2.4.1.1 | Design | 1d? | 2005-03-03 | 2005-03-03 |  | 23.88d | 0d |
| 1124 | 14.2.4.1.2 | Implementation | 1d? | 2005-03-04 | 2005-03-04 | 1123 | 23.88d | 0d |
| 1125 | 14.2.4.1.3 | Tuning | 1d? | 2005-03-05 | 2005-03-05 | 1124 | 23.88d |  |
| 1126 | 14.2.5 | **Anomalies/Spawns** | 3d? | 2005-03-03 | 2005-03-05 |  | 23.88d |  |
| 1127 | 14.2.5.1 | **Stage 1** | 3d? | 2005-03-03 | 2005-03-05 |  | 23.88d |  |
| 1128 | 14.2.5.1.1 | Design | 1d? | 2005-03-03 | 2005-03-03 |  | 23.88d | 0d |
| 1129 | 14.2.5.1.2 | Implementation | 1d? | 2005-03-04 | 2005-03-04 | 1128 | 23.88d | 0d |
| 1130 | 14.2.5.1.3 | Tuning | 1d? | 2005-03-05 | 2005-03-05 | 1129 | 23.88d |  |
| 1131 | 14.2.6 | **Physicks** | 3d? | 2005-03-03 | 2005-03-05 |  | 23.88d |  |
| 1132 | 14.2.6.1 | **Stage 1** | 3d? | 2005-03-03 | 2005-03-05 |  | 23.88d |  |
| 1133 | 14.2.6.1.1 | Design | 1d? | 2005-03-03 | 2005-03-03 |  | 23.88d | 0d |
| 1134 | 14.2.6.1.2 | Implementation | 1d? | 2005-03-04 | 2005-03-04 | 1133 | 23.88d | 0d |
| 1135 | 14.2.6.1.3 | Tuning | 1d? | 2005-03-05 | 2005-03-05 | 1134 | 23.88d |  |
| 1137 | 14.3 | **Scripts** | 5d? | 2005-03-03 | 2005-03-08 |  | 21.88d |  |
| 1138 | 14.3.1 | **Script 1** | 5d? | 2005-03-03 | 2005-03-08 |  | 21.88d |  |
| 1139 | 14.3.1.1 | Scenario(text) | 1d? | 2005-03-03 | 2005-03-03 |  | 21.88d | 0d |
| 1140 | 14.3.1.2 | Постановка задач | 1d? | 2005-03-04 | 2005-03-04 | 1139 | 21.88d | 0d |
| 1141 | 14.3.1.3 | Implimentation | 1d? | 2005-03-05 | 2005-03-05 | 1140 | 21.88d | 0d |
| 1142 | 14.3.1.4 | Dilogs/VO/Icons/Objects/Animations | 1d? | 2005-03-07 | 2005-03-07 | 1141 | 21.88d | 0d |
| 1143 | 14.3.1.5 | Настройка | 1d? | 2005-03-08 | 2005-03-08 | 1142 | 21.88d |  |

| ID | WBS | Task | Duration | Start | Finish | Predecessors | Total slack | Free slack |
| --- | --- | --- | --- | --- | --- | --- | --- | --- |
| 1144 | 14.3.2 | **Script 2** | 5d? | 2005-03-03 | 2005-03-08 |  | 21.88d |  |
| 1145 | 14.3.2.1 | Scenario(text) | 1d? | 2005-03-03 | 2005-03-03 |  | 21.88d | 0d |
| 1146 | 14.3.2.2 | Постановка задач | 1d? | 2005-03-04 | 2005-03-04 | 1145 | 21.88d | 0d |
| 1147 | 14.3.2.3 | Implimentation | 1d? | 2005-03-05 | 2005-03-05 | 1146 | 21.88d | 0d |
| 1148 | 14.3.2.4 | Dilogs/VO/Icons/Objects/Animations | 1d? | 2005-03-07 | 2005-03-07 | 1147 | 21.88d | 0d |
| 1149 | 14.3.2.5 | Настройка | 1d? | 2005-03-08 | 2005-03-08 | 1148 | 21.88d |  |
| 1150 | 14.3.3 | **Script 3** | 5d? | 2005-03-03 | 2005-03-08 |  | 21.88d |  |
| 1151 | 14.3.3.1 | Scenario(text) | 1d? | 2005-03-03 | 2005-03-03 |  | 21.88d | 0d |
| 1152 | 14.3.3.2 | Постановка задач | 1d? | 2005-03-04 | 2005-03-04 | 1151 | 21.88d | 0d |
| 1153 | 14.3.3.3 | Implimentation | 1d? | 2005-03-05 | 2005-03-05 | 1152 | 21.88d | 0d |
| 1154 | 14.3.3.4 | Dilogs/VO/Icons/Objects/Animations | 1d? | 2005-03-07 | 2005-03-07 | 1153 | 21.88d | 0d |
| 1155 | 14.3.3.5 | Настройка | 1d? | 2005-03-08 | 2005-03-08 | 1154 | 21.88d |  |
| 1156 | 14.3.4 | **Script 4** | 5d? | 2005-03-03 | 2005-03-08 |  | 21.88d |  |
| 1157 | 14.3.4.1 | Scenario(text) | 1d? | 2005-03-03 | 2005-03-03 |  | 21.88d | 0d |
| 1158 | 14.3.4.2 | Постановка задач | 1d? | 2005-03-04 | 2005-03-04 | 1157 | 21.88d | 0d |
| 1159 | 14.3.4.3 | Implimentation | 1d? | 2005-03-05 | 2005-03-05 | 1158 | 21.88d | 0d |
| 1160 | 14.3.4.4 | Dilogs/VO/Icons/Objects/Animations | 1d? | 2005-03-07 | 2005-03-07 | 1159 | 21.88d | 0d |
| 1161 | 14.3.4.5 | Настройка | 1d? | 2005-03-08 | 2005-03-08 | 1160 | 21.88d |  |
| 1162 | 14.3.5 | **Script 5** | 5d? | 2005-03-03 | 2005-03-08 |  | 21.88d |  |
| 1163 | 14.3.5.1 | Scenario(text) | 1d? | 2005-03-03 | 2005-03-03 |  | 21.88d | 0d |
| 1164 | 14.3.5.2 | Постановка задач | 1d? | 2005-03-04 | 2005-03-04 | 1163 | 21.88d | 0d |
| 1165 | 14.3.5.3 | Implimentation | 1d? | 2005-03-05 | 2005-03-05 | 1164 | 21.88d | 0d |
| 1166 | 14.3.5.4 | Dilogs/VO/Icons/Objects/Animations | 1d? | 2005-03-07 | 2005-03-07 | 1165 | 21.88d | 0d |
| 1167 | 14.3.5.5 | Настройка | 1d? | 2005-03-08 | 2005-03-08 | 1166 | 21.88d |  |

| ID | WBS | Task | Duration | Start | Finish | Predecessors | Total slack | Free slack | Deadline | Resources | Work |
| --- | --- | --- | --- | --- | --- | --- | --- | --- | --- | --- | --- |
| 1169 | 15 | **22_Warlab** | 11d? | 2005-03-16 | 2005-03-28 | 1091 | 15.88d |  | 2005-05-13 | Коан, Руслан | 88h |
| 1170 | 15.1 | **LevelDesign** | 11d? | 2005-03-16 | 2005-03-28 |  | 15.88d |  | 2005-04-15 |  |  |
| 1171 | 15.1.1 | **Stage 1** | 11d? | 2005-03-16 | 2005-03-28 |  | 15.88d |  |  |  |  |
| 1172 | 15.1.1.1 | List of Changes | 2d | 2005-03-16 | 2005-03-17 |  | 15.88d | 0d |  |  |  |
| 1173 | 15.1.1.2 | Changed Geometry | 1d? | 2005-03-18 | 2005-03-18 | 1172 | 15.88d | 0d |  |  |  |
| 1174 | 15.1.1.3 | Check List 1 | 1d? | 2005-03-19 | 2005-03-19 | 1173 | 15.88d | 0d |  |  |  |
| 1175 | 15.1.1.4 | Check List 2 | 1d? | 2005-03-21 | 2005-03-21 | 1174 | 15.88d | 0d |  |  |  |
| 1176 | 15.1.1.5 | Check List 3 | 1d? | 2005-03-22 | 2005-03-22 | 1175 | 15.88d | 0d |  |  |  |
| 1177 | 15.1.1.6 | Check List 4 | 1d? | 2005-03-23 | 2005-03-23 | 1176 | 15.88d | 0d |  |  |  |
| 1178 | 15.1.1.7 | Render Geometry | 1d? | 2005-03-24 | 2005-03-24 | 1177 | 15.88d | 0d |  |  |  |
| 1179 | 15.1.1.8 | Grass | 1d? | 2005-03-25 | 2005-03-25 | 1178 | 15.88d | 0d |  |  |  |
| 1180 | 15.1.1.9 | AI Maps | 1d? | 2005-03-26 | 2005-03-26 | 1179 | 15.88d | 0d |  |  |  |
| 1181 | 15.1.1.10 | Graphs | 1d? | 2005-03-28 | 2005-03-28 | 1180 | 15.88d |  |  |  |  |
| 1183 | 15.2 | **GameDesign** | 3d? | 2005-03-16 | 2005-03-18 |  | 47.88d |  |  |  |  |
| 1184 | 15.2.1 | **Secrets** | 3d? | 2005-03-16 | 2005-03-18 |  | 47.88d |  |  |  |  |
| 1185 | 15.2.1.1 | **Stage 1** | 3d? | 2005-03-16 | 2005-03-18 |  | 47.88d |  |  |  |  |
| 1186 | 15.2.1.1.1 | Design | 1d? | 2005-03-16 | 2005-03-16 |  | 47.88d | 0d |  |  |  |
| 1187 | 15.2.1.1.2 | Implementation | 1d? | 2005-03-17 | 2005-03-17 | 1186 | 47.88d | 0d |  |  |  |
| 1188 | 15.2.1.1.3 | Tuning | 1d? | 2005-03-18 | 2005-03-18 | 1187 | 47.88d |  |  |  |  |
| 1189 | 15.2.2 | **Smartterrains** | 3d? | 2005-03-16 | 2005-03-18 |  | 47.88d |  |  |  |  |
| 1190 | 15.2.2.1 | **Stage 1** | 3d? | 2005-03-16 | 2005-03-18 |  | 47.88d |  |  |  |  |
| 1191 | 15.2.2.1.1 | Design | 1d? | 2005-03-16 | 2005-03-16 |  | 47.88d | 0d |  |  |  |
| 1192 | 15.2.2.1.2 | Implementation | 1d? | 2005-03-17 | 2005-03-17 | 1191 | 47.88d | 0d |  |  |  |
| 1193 | 15.2.2.1.3 | Tuning | 1d? | 2005-03-18 | 2005-03-18 | 1192 | 47.88d |  |  |  |  |

| ID | WBS | Task | Duration | Start | Finish | Predecessors | Total slack | Free slack |
| --- | --- | --- | --- | --- | --- | --- | --- | --- |
| 1194 | 15.2.3 | **Monsters/Spawns** | 3d? | 2005-03-16 | 2005-03-18 |  | 47.88d |  |
| 1195 | 15.2.3.1 | **Stage 1** | 3d? | 2005-03-16 | 2005-03-18 |  | 47.88d |  |
| 1196 | 15.2.3.1.1 | Design | 1d? | 2005-03-16 | 2005-03-16 |  | 47.88d | 0d |
| 1197 | 15.2.3.1.2 | Implementation | 1d? | 2005-03-17 | 2005-03-17 | 1196 | 47.88d | 0d |
| 1198 | 15.2.3.1.3 | Tuning | 1d? | 2005-03-18 | 2005-03-18 | 1197 | 47.88d |  |
| 1199 | 15.2.4 | **Stalkers/Spawns** | 3d? | 2005-03-16 | 2005-03-18 |  | 47.88d |  |
| 1200 | 15.2.4.1 | **Stage 1** | 3d? | 2005-03-16 | 2005-03-18 |  | 47.88d |  |
| 1201 | 15.2.4.1.1 | Design | 1d? | 2005-03-16 | 2005-03-16 |  | 47.88d | 0d |
| 1202 | 15.2.4.1.2 | Implementation | 1d? | 2005-03-17 | 2005-03-17 | 1201 | 47.88d | 0d |
| 1203 | 15.2.4.1.3 | Tuning | 1d? | 2005-03-18 | 2005-03-18 | 1202 | 47.88d |  |
| 1204 | 15.2.5 | **Anomalies/Spawns** | 3d? | 2005-03-16 | 2005-03-18 |  | 47.88d |  |
| 1205 | 15.2.5.1 | **Stage 1** | 3d? | 2005-03-16 | 2005-03-18 |  | 47.88d |  |
| 1206 | 15.2.5.1.1 | Design | 1d? | 2005-03-16 | 2005-03-16 |  | 47.88d | 0d |
| 1207 | 15.2.5.1.2 | Implementation | 1d? | 2005-03-17 | 2005-03-17 | 1206 | 47.88d | 0d |
| 1208 | 15.2.5.1.3 | Tuning | 1d? | 2005-03-18 | 2005-03-18 | 1207 | 47.88d |  |
| 1209 | 15.2.6 | **Physicks** | 3d? | 2005-03-16 | 2005-03-18 |  | 47.88d |  |
| 1210 | 15.2.6.1 | **Stage 1** | 3d? | 2005-03-16 | 2005-03-18 |  | 47.88d |  |
| 1211 | 15.2.6.1.1 | Design | 1d? | 2005-03-16 | 2005-03-16 |  | 47.88d | 0d |
| 1212 | 15.2.6.1.2 | Implementation | 1d? | 2005-03-17 | 2005-03-17 | 1211 | 47.88d | 0d |
| 1213 | 15.2.6.1.3 | Tuning | 1d? | 2005-03-18 | 2005-03-18 | 1212 | 47.88d |  |
| 1215 | 15.3 | **Scripts** | 5d? | 2005-03-16 | 2005-03-21 |  | 45.88d |  |
| 1216 | 15.3.1 | **Script 1** | 5d? | 2005-03-16 | 2005-03-21 |  | 45.88d |  |
| 1217 | 15.3.1.1 | Scenario(text) | 1d? | 2005-03-16 | 2005-03-16 |  | 45.88d | 0d |
| 1218 | 15.3.1.2 | Постановка задач | 1d? | 2005-03-17 | 2005-03-17 | 1217 | 45.88d | 0d |
| 1219 | 15.3.1.3 | Implimentation | 1d? | 2005-03-18 | 2005-03-18 | 1218 | 45.88d | 0d |
| 1220 | 15.3.1.4 | Dilogs/VO/Icons/Objects/Animations | 1d? | 2005-03-19 | 2005-03-19 | 1219 | 45.88d | 0d |
| 1221 | 15.3.1.5 | Настройка | 1d? | 2005-03-21 | 2005-03-21 | 1220 | 45.88d |  |

| ID | WBS | Task | Duration | Start | Finish | Predecessors | Total slack | Free slack |
| --- | --- | --- | --- | --- | --- | --- | --- | --- |
| 1222 | 15.3.2 | **Script 2** | 5d? | 2005-03-16 | 2005-03-21 |  | 45.88d |  |
| 1223 | 15.3.2.1 | Scenario(text) | 1d? | 2005-03-16 | 2005-03-16 |  | 45.88d | 0d |
| 1224 | 15.3.2.2 | Постановка задач | 1d? | 2005-03-17 | 2005-03-17 | 1223 | 45.88d | 0d |
| 1225 | 15.3.2.3 | Implimentation | 1d? | 2005-03-18 | 2005-03-18 | 1224 | 45.88d | 0d |
| 1226 | 15.3.2.4 | Dilogs/VO/Icons/Objects/Animations | 1d? | 2005-03-19 | 2005-03-19 | 1225 | 45.88d | 0d |
| 1227 | 15.3.2.5 | Настройка | 1d? | 2005-03-21 | 2005-03-21 | 1226 | 45.88d |  |
| 1228 | 15.3.3 | **Script 3** | 5d? | 2005-03-16 | 2005-03-21 |  | 45.88d |  |
| 1229 | 15.3.3.1 | Scenario(text) | 1d? | 2005-03-16 | 2005-03-16 |  | 45.88d | 0d |
| 1230 | 15.3.3.2 | Постановка задач | 1d? | 2005-03-17 | 2005-03-17 | 1229 | 45.88d | 0d |
| 1231 | 15.3.3.3 | Implimentation | 1d? | 2005-03-18 | 2005-03-18 | 1230 | 45.88d | 0d |
| 1232 | 15.3.3.4 | Dilogs/VO/Icons/Objects/Animations | 1d? | 2005-03-19 | 2005-03-19 | 1231 | 45.88d | 0d |
| 1233 | 15.3.3.5 | Настройка | 1d? | 2005-03-21 | 2005-03-21 | 1232 | 45.88d |  |
| 1234 | 15.3.4 | **Script 4** | 5d? | 2005-03-16 | 2005-03-21 |  | 45.88d |  |
| 1235 | 15.3.4.1 | Scenario(text) | 1d? | 2005-03-16 | 2005-03-16 |  | 45.88d | 0d |
| 1236 | 15.3.4.2 | Постановка задач | 1d? | 2005-03-17 | 2005-03-17 | 1235 | 45.88d | 0d |
| 1237 | 15.3.4.3 | Implimentation | 1d? | 2005-03-18 | 2005-03-18 | 1236 | 45.88d | 0d |
| 1238 | 15.3.4.4 | Dilogs/VO/Icons/Objects/Animations | 1d? | 2005-03-19 | 2005-03-19 | 1237 | 45.88d | 0d |
| 1239 | 15.3.4.5 | Настройка | 1d? | 2005-03-21 | 2005-03-21 | 1238 | 45.88d |  |
| 1240 | 15.3.5 | **Script 5** | 5d? | 2005-03-16 | 2005-03-21 |  | 45.88d |  |
| 1241 | 15.3.5.1 | Scenario(text) | 1d? | 2005-03-16 | 2005-03-16 |  | 45.88d | 0d |
| 1242 | 15.3.5.2 | Постановка задач | 1d? | 2005-03-17 | 2005-03-17 | 1241 | 45.88d | 0d |
| 1243 | 15.3.5.3 | Implimentation | 1d? | 2005-03-18 | 2005-03-18 | 1242 | 45.88d | 0d |
| 1244 | 15.3.5.4 | Dilogs/VO/Icons/Objects/Animations | 1d? | 2005-03-19 | 2005-03-19 | 1243 | 45.88d | 0d |
| 1245 | 15.3.5.5 | Настройка | 1d? | 2005-03-21 | 2005-03-21 | 1244 | 45.88d |  |

| ID | WBS | Task | Duration | Start | Finish | Predecessors | Complete | Remaining | Total slack | Free slack | Constraint | Deadline | Resources | Work | Actual work |
| --- | --- | --- | --- | --- | --- | --- | --- | --- | --- | --- | --- | --- | --- | --- | --- |
| 1254 | 16 | **10_Military_Base** | 31.88d? | 2005-01-24 A | 2005-03-01 |  | 1% | 31.51d? | -30.88d | 0d |  | 2005-03-01 | Маст Дай, Сидорович | 674h | 10.95h |
| 1255 | 16.1 | **LevelDesign** | 11d? | 2005-01-24 | 2005-02-04 |  |  |  | -29.12d | 0d |  | 2005-02-07 |  |  |  |
| 1256 | 16.1.1 | **Stage 1** | 11d? | 2005-01-24 | 2005-02-04 |  |  |  | -29.12d | 0d |  |  |  |  |  |
| 1257 | 16.1.1.1 | List of Changes | 2d | 2005-01-24 | 2005-01-25 |  |  |  | -29.12d | 0d |  |  |  |  |  |
| 1258 | 16.1.1.2 | Changed Geometry | 1d? | 2005-01-26 | 2005-01-26 | 1257 |  |  | -29.12d | 0d |  |  |  |  |  |
| 1259 | 16.1.1.3 | Check List 1 | 1d? | 2005-01-27 | 2005-01-27 | 1258 |  |  | -29.12d | 0d |  |  |  |  |  |
| 1260 | 16.1.1.4 | Check List 2 | 1d? | 2005-01-28 | 2005-01-28 | 1259 |  |  | -29.12d | 0d |  |  |  |  |  |
| 1261 | 16.1.1.5 | Check List 3 | 1d? | 2005-01-29 | 2005-01-29 | 1260 |  |  | -29.12d | 0d |  |  |  |  |  |
| 1262 | 16.1.1.6 | Check List 4 | 1d? | 2005-01-31 | 2005-01-31 | 1261 |  |  | -29.12d | 0d |  |  |  |  |  |
| 1263 | 16.1.1.7 | Render Geometry | 1d? | 2005-02-01 | 2005-02-01 | 1262 |  |  | -29.12d | 0d |  |  |  |  |  |
| 1264 | 16.1.1.8 | Grass | 1d? | 2005-02-02 | 2005-02-02 | 1263 |  |  | -29.12d | 0d |  |  |  |  |  |
| 1265 | 16.1.1.9 | AI Maps | 1d? | 2005-02-03 | 2005-02-03 | 1264 |  |  | -29.12d | 0d |  |  |  |  |  |
| 1266 | 16.1.1.10 | Graphs | 1d? | 2005-02-04 | 2005-02-04 | 1265 |  |  | -29.12d | 0d |  |  |  |  |  |
| 1268 | 16.2 | **GameDesign** | 31.88d? | 2005-01-24 | 2005-03-01 |  |  |  | -50d | 0d |  |  |  | 83h |  |
| 1269 | 16.2.1 | **Secrets** | 3.88d? | 2005-02-25 | 2005-03-01 |  |  |  | -50d | 0d |  |  |  | 23h |  |
| 1270 | 16.2.1.1 | **Stage 1** | 3.88d? | 2005-02-25 | 2005-03-01 |  |  |  | -50d | 0d |  |  |  | 23h |  |
| 1271 | 16.2.1.1.1 | Design | 1.88d? | 2005-02-25 | 2005-02-26 |  |  |  | -50d | 0d | start no earlier than 2005-02-25 |  | Mustdie | 15h |  |
| 1272 | 16.2.1.1.2 | Implementation | 1d? | 2005-02-26 | 2005-02-28 | 1271 |  |  | -50d | 0d |  |  | Mustdie | 8h |  |
| 1273 | 16.2.1.1.3 | Tuning | 1d? | 2005-02-28 | 2005-03-01 | 1272 |  |  | -50d | 0d |  |  |  |  |  |
| 1274 | 16.2.2 | **Smartterrains** | 3.88d? | 2005-02-25 | 2005-03-01 |  |  |  | -50d | 0d |  |  |  | 15h |  |
| 1275 | 16.2.2.1 | **Stage 1** | 3.88d? | 2005-02-25 | 2005-03-01 |  |  |  | -50d | 0d |  |  |  | 15h |  |
| 1276 | 16.2.2.1.1 | Design | 1.88d? | 2005-02-25 | 2005-02-26 |  |  |  | -50d | 0d | start no earlier than 2005-02-25 |  | Mustdie | 15h |  |
| 1277 | 16.2.2.1.2 | Implementation | 1d? | 2005-02-26 | 2005-02-28 | 1276 |  |  | -50d | 0d |  |  |  |  |  |
| 1278 | 16.2.2.1.3 | Tuning | 1d? | 2005-02-28 | 2005-03-01 | 1277 |  |  | -50d | 0d |  |  |  |  |  |

| ID | WBS | Task | Duration | Start | Finish | Predecessors | Complete | Remaining | Total slack | Free slack | Constraint | Deadline | Resources | Work | Actual work |
| --- | --- | --- | --- | --- | --- | --- | --- | --- | --- | --- | --- | --- | --- | --- | --- |
| 1279 | 16.2.3 | **Monsters/Spawns** | 3.88d? | 2005-02-25 | 2005-03-01 |  |  |  | -50d | 0d |  |  |  | 15h |  |
| 1280 | 16.2.3.1 | **Stage 1** | 3.88d? | 2005-02-25 | 2005-03-01 |  |  |  | -50d | 0d |  |  |  | 15h |  |
| 1281 | 16.2.3.1.1 | Design | 1.88d? | 2005-02-25 | 2005-02-26 |  |  |  | -50d | 0d | start no earlier than 2005-02-25 |  | Маст Дай, Сидорович | 15h |  |
| 1282 | 16.2.3.1.2 | Implementation | 1d? | 2005-02-26 | 2005-02-28 | 1281 |  |  | -50d | 0d |  |  |  |  |  |
| 1283 | 16.2.3.1.3 | Tuning | 1d? | 2005-02-28 | 2005-03-01 | 1282 |  |  | -50d | 0d |  |  |  |  |  |
| 1284 | 16.2.4 | **Stalkers/Spawns** | 3.88d? | 2005-02-25 | 2005-03-01 |  |  |  | -50d | 0d |  |  |  | 15h |  |
| 1285 | 16.2.4.1 | **Stage 1** | 3.88d? | 2005-02-25 | 2005-03-01 |  |  |  | -50d | 0d |  |  |  | 15h |  |
| 1286 | 16.2.4.1.1 | Design | 1.88d? | 2005-02-25 | 2005-02-26 |  |  |  | -50d | 0d | start no earlier than 2005-02-25 |  | Сидорович, Маст Дай | 15h |  |
| 1287 | 16.2.4.1.2 | Implementation | 1d? | 2005-02-26 | 2005-02-28 | 1286 |  |  | -50d | 0d |  |  |  |  |  |
| 1288 | 16.2.4.1.3 | Tuning | 1d? | 2005-02-28 | 2005-03-01 | 1287 |  |  | -50d | 0d |  |  |  |  |  |
| 1289 | 16.2.5 | **Anomalies/Spawns** | 3.88d? | 2005-02-25 | 2005-03-01 |  |  |  | -50d | 0d |  |  |  | 15h |  |
| 1290 | 16.2.5.1 | **Stage 1** | 3.88d? | 2005-02-25 | 2005-03-01 |  |  |  | -50d | 0d |  |  |  | 15h |  |
| 1291 | 16.2.5.1.1 | Design | 1.88d? | 2005-02-25 | 2005-02-26 |  |  |  | -50d | 0d | start no earlier than 2005-02-25 |  | Сидорович, Маст Дай | 15h |  |
| 1292 | 16.2.5.1.2 | Implementation | 1d? | 2005-02-26 | 2005-02-28 | 1291 |  |  | -50d | 0d |  |  |  |  |  |
| 1293 | 16.2.5.1.3 | Tuning | 1d? | 2005-02-28 | 2005-03-01 | 1292 |  |  | -50d | 0d |  |  |  |  |  |
| 1294 | 16.2.6 | **Physicks** | 3d? | 2005-01-24 | 2005-01-26 |  |  |  | -21.12d | 0d |  |  |  |  |  |
| 1295 | 16.2.6.1 | **Stage 1** | 3d? | 2005-01-24 | 2005-01-26 |  |  |  | -21.12d | 0d |  |  |  |  |  |
| 1296 | 16.2.6.1.1 | Design | 1d? | 2005-01-24 | 2005-01-24 |  |  |  | -21.12d | 0d |  |  |  |  |  |
| 1297 | 16.2.6.1.2 | Implementation | 1d? | 2005-01-25 | 2005-01-25 | 1296 |  |  | -21.12d | 0d |  |  |  |  |  |
| 1298 | 16.2.6.1.3 | Tuning | 1d? | 2005-01-26 | 2005-01-26 | 1297 |  |  | -21.12d | 0d |  |  |  |  |  |
| 1300 | 16.3 | **Scripts** | 29d? | 2005-01-24 A | 2005-02-25 |  | 2% | 28.45d? | -28d | 0d | finish no later than 2005-02-25 | 2005-03-01 |  | 336h | 8h |
| 1301 | 16.3.1 | Сценарий (текст) | 1d | 2005-01-24 A | 2005-01-24 A |  | 100% |  |  |  |  |  | Mustdie | 8h | 8h |
| 1302 | 16.3.2 | **Сцена 1 - База свободы (ГУЛАГ)** | 14d? | 2005-02-01 | 2005-02-16 |  |  |  | -39.12d | 0d |  |  |  | 152h |  |
| 1303 | 16.3.2.1 | Постановка задач | 1d? | 2005-02-01 | 2005-02-01 |  |  |  | -34.12d | 0d | start no earlier than 2005-02-01 |  | Сидорович | 8h |  |

| ID | WBS | Task | Duration | Start | Finish | Predecessors | Total slack | Free slack | Constraint | Resources | Work |
| --- | --- | --- | --- | --- | --- | --- | --- | --- | --- | --- | --- |
| 1304 | 16.3.2.2 | **Реализация** | 8d? | 2005-02-02 | 2005-02-10 | 1303 | -34.12d | 0d |  |  | 72h |
| 1305 | 16.3.2.2.1 | Реализация | 8d | 2005-02-02 | 2005-02-10 | 1303 | -34.12d | 0d | start no earlier than 2005-02-01 | Сидорович | 64h |
| 1306 | 16.3.2.2.2 | Доработка X в движке | 1d? | 2005-02-02 | 2005-02-02 |  | -28.12d | 0d |  | Dima | 8h |
| 1307 | 16.3.2.3 | Расстановка | 4d | 2005-02-02 | 2005-02-05 | 1301 | -30.12d | 0d | start no earlier than 2005-02-02 | Mustdie | 32h |
| 1308 | 16.3.2.4 | Тексты, Диалоги, Задания, Отметки на карте, новости, профили персонажей (продумать) | 4d | 2005-02-11 | 2005-02-15 |  | -38.12d | 0d | start no earlier than 2005-02-11 | Mustdie | 32h |
| 1309 | 16.3.2.5 | **Тестирование** | 12d? | 2005-02-03 | 2005-02-16 | 1306 | -39.12d | 0d |  |  | 8h |
| 1310 | 16.3.2.5.1 | Тестирование | 1d | 2005-02-16 | 2005-02-16 |  | -39.12d | 0d | start no earlier than 2005-02-16 |  |  |
| 1311 | 16.3.2.5.2 | Проверить расстановку AI нод вокруг дерева | 1d? | 2005-02-03 | 2005-02-03 |  | -28.12d | 0d |  | Partizan | 8h |
| 1312 | 16.3.3 | **Сцена 2 - Группировка Долга** | 4d? | 2005-02-16 | 2005-02-19 |  | -42.12d | 0d |  |  | 64h |
| 1313 | 16.3.3.1 | Постановка задач | 1d | 2005-02-16 | 2005-02-16 |  | -41.12d | 0d | start no earlier than 2005-02-16 | Сидорович | 8h |
| 1314 | 16.3.3.2 | **Реализация** | 2d? | 2005-02-17 | 2005-02-18 | 1313 | -41.12d | 0d |  |  | 24h |
| 1315 | 16.3.3.2.1 | Реализация | 2d | 2005-02-17 | 2005-02-18 | 1313 | -41.12d | 0d | start no earlier than 2005-02-16 | Сидорович | 16h |
| 1316 | 16.3.3.2.2 | Доработка X в движке | 1d? | 2005-02-17 | 2005-02-17 |  | -41.12d | 0d |  | Dima | 8h |
| 1317 | 16.3.3.3 | Расстановка | 1d | 2005-02-17 | 2005-02-17 |  | -42.12d | 0d | start no earlier than 2005-02-17 | Mustdie | 8h |
| 1318 | 16.3.3.4 | Тексты, Диалоги, Задания, Отметки на карте, новости, профили персонажей (продумать) | 2d | 2005-02-18 | 2005-02-19 | 1317 | -42.12d | 0d |  | Mustdie | 16h |
| 1319 | 16.3.3.5 | **Тестирование** | 1d? | 2005-02-18 | 2005-02-18 | 1316 | -41.12d | 0d |  |  | 8h |
| 1320 | 16.3.3.5.1 | Тестирование | 1d | 2005-02-18 | 2005-02-18 |  | -41.12d | 0d | start no earlier than 2005-02-18 |  |  |
| 1321 | 16.3.3.5.2 | Проверить расстановку AI нод вокруг дерева | 1d? | 2005-02-18 | 2005-02-18 |  | -41.12d | 0d |  | Partizan | 8h |
| 1322 | 16.3.4 | **Сцена 3 - Сумасшедший сталкер** | 2.25d? | 2005-02-18 | 2005-02-21 |  | -43.12d | 0d |  |  | 32h |
| 1323 | 16.3.4.1 | Постановка задач | 1d | 2005-02-18 | 2005-02-19 |  | -41.88d | 0d | finish no earlier than 2005-02-19 | Сидорович | 8h |
| 1324 | 16.3.4.2 | **Реализация** | 1d? | 2005-02-21 | 2005-02-21 |  | -43.12d | 0d |  |  | 24h |
| 1325 | 16.3.4.2.1 | Реализация | 1d | 2005-02-21 | 2005-02-21 |  | -43.12d | 0d | start no earlier than 2005-02-21 | Сидорович | 8h |
| 1326 | 16.3.4.2.2 | Доработка X в движке | 1d? | 2005-02-21 | 2005-02-21 |  | -43.12d | 0d | start no earlier than 2005-02-21 |  |  |
| 1327 | 16.3.4.2.3 | Расстановка | 1d | 2005-02-21 | 2005-02-21 |  | -43.12d | 0d | start no earlier than 2005-02-21 | Mustdie | 8h |
| 1328 | 16.3.4.2.4 | Тексты, Диалоги, Задания, Отметки на карте, новости, профили персонажей (продумать) | 1d | 2005-02-21 | 2005-02-21 |  | -43.12d | 0d | start no earlier than 2005-02-21 | Mustdie | 8h |

| ID | WBS | Task | Duration | Start | Finish | Predecessors | Total slack | Free slack | Constraint | Deadline | Resources | Work |
| --- | --- | --- | --- | --- | --- | --- | --- | --- | --- | --- | --- | --- |
| 1329 | 16.3.4.3 | **Тестирование** | 1d? | 2005-02-21 | 2005-02-21 |  | -43.12d | 0d |  |  |  |  |
| 1330 | 16.3.4.3.1 | Тестирование | 1d | 2005-02-21 | 2005-02-21 |  | -43.12d | 0d | start no earlier than 2005-02-21 |  |  |  |
| 1331 | 16.3.4.3.2 | Проверить расстановку AI нод вокруг дерева | 1d? | 2005-02-21 | 2005-02-21 |  | -43.12d | 0d | start no earlier than 2005-02-21 |  |  |  |
| 1332 | 16.3.5 | **Сцена 4 - Бой - Киллеры и Бандтиты** | 1d? | 2005-02-22 | 2005-02-22 |  | -44.12d | 0d |  |  |  | 32h |
| 1333 | 16.3.5.1 | Постановка задач | 1d? | 2005-02-22 | 2005-02-22 |  | -44.12d | 0d | start no earlier than 2005-02-22 |  | Сидорович | 8h |
| 1334 | 16.3.5.2 | **Реализация** | 1d? | 2005-02-22 | 2005-02-22 |  | -44.12d | 0d |  |  |  | 24h |
| 1335 | 16.3.5.2.1 | Реализация | 1d | 2005-02-22 | 2005-02-22 |  | -44.12d | 0d | start no earlier than 2005-02-22 |  | Сидорович | 8h |
| 1336 | 16.3.5.2.2 | Доработка X в движке | 1d? | 2005-02-22 | 2005-02-22 |  | -44.12d | 0d | start no earlier than 2005-02-22 |  |  |  |
| 1337 | 16.3.5.2.3 | Расстановка | 1d? | 2005-02-22 | 2005-02-22 |  | -44.12d | 0d | start no earlier than 2005-02-22 |  | Mustdie | 8h |
| 1338 | 16.3.5.2.4 | Тексты, Диалоги, Задания, Отметки на карте, новости, профили персонажей (продумать) | 1d? | 2005-02-22 | 2005-02-22 |  | -44.12d | 0d | start no earlier than 2005-02-22 |  | Mustdie | 8h |
| 1339 | 16.3.5.3 | **Тестирование** | 1d? | 2005-02-22 | 2005-02-22 |  | -44.12d | 0d |  |  |  |  |
| 1340 | 16.3.5.3.1 | Тестирование | 1d? | 2005-02-22 | 2005-02-22 |  | -44.12d | 0d | start no earlier than 2005-02-22 |  |  |  |
| 1341 | 16.3.5.3.2 | Проверить расстановку AI нод вокруг дерева | 1d? | 2005-02-22 | 2005-02-22 |  | -44.12d | 0d | start no earlier than 2005-02-22 |  |  |  |
| 1342 | 16.3.6 | **Сцена 5 - Деревня** | 3d? | 2005-02-23 | 2005-02-25 |  | -47.12d | 0d |  |  |  | 48h |
| 1343 | 16.3.6.1 | Постановка задач | 1d? | 2005-02-23 | 2005-02-23 |  | -45.12d | 0d | start no earlier than 2005-02-23 |  | Сидорович | 8h |
| 1344 | 16.3.6.2 | **Реализация** | 2d? | 2005-02-24 | 2005-02-25 |  | -47.12d | 0d |  |  |  | 40h |
| 1345 | 16.3.6.2.1 | Реализация | 2d | 2005-02-24 | 2005-02-25 |  | -47.12d | 0d | start no earlier than 2005-02-24 |  | Сидорович | 16h |
| 1346 | 16.3.6.2.2 | Доработка X в движке | 1d? | 2005-02-24 | 2005-02-24 |  | -46.12d | 0d | start no earlier than 2005-02-24 |  |  |  |
| 1347 | 16.3.6.2.3 | Расстановка | 2d | 2005-02-24 | 2005-02-25 |  | -47.12d | 0d | start no earlier than 2005-02-24 |  | Mustdie | 16h |
| 1348 | 16.3.6.2.4 | Тексты, Диалоги, Задания, Отметки на карте, новости, профили персонажей (продумать) | 1d? | 2005-02-24 | 2005-02-24 |  | -46.12d | 0d | start no earlier than 2005-02-24 |  | Mustdie | 8h |
| 1349 | 16.3.6.3 | **Тестирование** | 1d? | 2005-02-24 | 2005-02-24 |  | -46.12d | 0d |  |  |  |  |
| 1350 | 16.3.6.3.1 | Тестирование | 1d? | 2005-02-24 | 2005-02-24 |  | -46.12d | 0d | start no earlier than 2005-02-24 |  |  |  |
| 1351 | 16.3.6.3.2 | Проверить расстановку AI нод вокруг дерева | 1d? | 2005-02-24 | 2005-02-24 |  | -46.12d | 0d | start no earlier than 2005-02-24 |  |  |  |
| 1359 | 17 | **20_Sarcofag** | 11d? | 2005-03-01 | 2005-03-14 | 1254 | -50d | 0d |  | 2005-04-01 | Маст Дай, Сидорович | 88h |
| 1360 | 17.1 | **LevelDesign** | 11d? | 2005-03-01 | 2005-03-14 |  | -50d | 0d |  | 2005-03-01 |  |  |
| 1361 | 17.1.1 | **Stage 1** | 11d? | 2005-03-01 | 2005-03-14 |  | -50d | 0d |  |  |  |  |
| 1362 | 17.1.1.1 | List of Changes | 2d | 2005-03-01 | 2005-03-03 |  | -50d | 0d |  |  |  |  |
| 1363 | 17.1.1.2 | Changed Geometry | 1d? | 2005-03-03 | 2005-03-04 | 1362 | -50d | 0d |  |  |  |  |
| 1364 | 17.1.1.3 | Check List 1 | 1d? | 2005-03-04 | 2005-03-05 | 1363 | -50d | 0d |  |  |  |  |
| 1365 | 17.1.1.4 | Check List 2 | 1d? | 2005-03-05 | 2005-03-07 | 1364 | -50d | 0d |  |  |  |  |
| 1366 | 17.1.1.5 | Check List 3 | 1d? | 2005-03-07 | 2005-03-08 | 1365 | -50d | 0d |  |  |  |  |
| 1367 | 17.1.1.6 | Check List 4 | 1d? | 2005-03-08 | 2005-03-09 | 1366 | -50d | 0d |  |  |  |  |
| 1368 | 17.1.1.7 | Render Geometry | 1d? | 2005-03-09 | 2005-03-10 | 1367 | -50d | 0d |  |  |  |  |
| 1369 | 17.1.1.8 | Grass | 1d? | 2005-03-10 | 2005-03-11 | 1368 | -50d | 0d |  |  |  |  |
| 1370 | 17.1.1.9 | AI Maps | 1d? | 2005-03-11 | 2005-03-12 | 1369 | -50d | 0d |  |  |  |  |
| 1371 | 17.1.1.10 | Graphs | 1d? | 2005-03-12 | 2005-03-14 | 1370 | -50d | 0d |  |  |  |  |

| ID | WBS | Task | Duration | Start | Finish | Predecessors | Total slack | Free slack |
| --- | --- | --- | --- | --- | --- | --- | --- | --- |
| 1373 | 17.2 | **GameDesign** | 3d? | 2005-03-01 | 2005-03-04 |  | -42d | 0d |
| 1374 | 17.2.1 | **Secrets** | 3d? | 2005-03-01 | 2005-03-04 |  | -42d | 0d |
| 1375 | 17.2.1.1 | **Stage 1** | 3d? | 2005-03-01 | 2005-03-04 |  | -42d | 0d |
| 1376 | 17.2.1.1.1 | Design | 1d? | 2005-03-01 | 2005-03-02 |  | -42d | 0d |
| 1377 | 17.2.1.1.2 | Implementation | 1d? | 2005-03-02 | 2005-03-03 | 1376 | -42d | 0d |
| 1378 | 17.2.1.1.3 | Tuning | 1d? | 2005-03-03 | 2005-03-04 | 1377 | -42d | 0d |
| 1379 | 17.2.2 | **Smartterrains** | 3d? | 2005-03-01 | 2005-03-04 |  | -42d | 0d |
| 1380 | 17.2.2.1 | **Stage 1** | 3d? | 2005-03-01 | 2005-03-04 |  | -42d | 0d |
| 1381 | 17.2.2.1.1 | Design | 1d? | 2005-03-01 | 2005-03-02 |  | -42d | 0d |
| 1382 | 17.2.2.1.2 | Implementation | 1d? | 2005-03-02 | 2005-03-03 | 1381 | -42d | 0d |
| 1383 | 17.2.2.1.3 | Tuning | 1d? | 2005-03-03 | 2005-03-04 | 1382 | -42d | 0d |
| 1384 | 17.2.3 | **Monsters/Spawns** | 3d? | 2005-03-01 | 2005-03-04 |  | -42d | 0d |
| 1385 | 17.2.3.1 | **Stage 1** | 3d? | 2005-03-01 | 2005-03-04 |  | -42d | 0d |
| 1386 | 17.2.3.1.1 | Design | 1d? | 2005-03-01 | 2005-03-02 |  | -42d | 0d |
| 1387 | 17.2.3.1.2 | Implementation | 1d? | 2005-03-02 | 2005-03-03 | 1386 | -42d | 0d |
| 1388 | 17.2.3.1.3 | Tuning | 1d? | 2005-03-03 | 2005-03-04 | 1387 | -42d | 0d |
| 1389 | 17.2.4 | **Stalkers/Spawns** | 3d? | 2005-03-01 | 2005-03-04 |  | -42d | 0d |
| 1390 | 17.2.4.1 | **Stage 1** | 3d? | 2005-03-01 | 2005-03-04 |  | -42d | 0d |
| 1391 | 17.2.4.1.1 | Design | 1d? | 2005-03-01 | 2005-03-02 |  | -42d | 0d |
| 1392 | 17.2.4.1.2 | Implementation | 1d? | 2005-03-02 | 2005-03-03 | 1391 | -42d | 0d |
| 1393 | 17.2.4.1.3 | Tuning | 1d? | 2005-03-03 | 2005-03-04 | 1392 | -42d | 0d |
| 1394 | 17.2.5 | **Anomalies/Spawns** | 3d? | 2005-03-01 | 2005-03-04 |  | -42d | 0d |
| 1395 | 17.2.5.1 | **Stage 1** | 3d? | 2005-03-01 | 2005-03-04 |  | -42d | 0d |
| 1396 | 17.2.5.1.1 | Design | 1d? | 2005-03-01 | 2005-03-02 |  | -42d | 0d |
| 1397 | 17.2.5.1.2 | Implementation | 1d? | 2005-03-02 | 2005-03-03 | 1396 | -42d | 0d |
| 1398 | 17.2.5.1.3 | Tuning | 1d? | 2005-03-03 | 2005-03-04 | 1397 | -42d | 0d |

| ID | WBS | Task | Duration | Start | Finish | Predecessors | Total slack | Free slack |
| --- | --- | --- | --- | --- | --- | --- | --- | --- |
| 1399 | 17.2.6 | **Physicks** | 3d? | 2005-03-01 | 2005-03-04 |  | -42d | 0d |
| 1400 | 17.2.6.1 | **Stage 1** | 3d? | 2005-03-01 | 2005-03-04 |  | -42d | 0d |
| 1401 | 17.2.6.1.1 | Design | 1d? | 2005-03-01 | 2005-03-02 |  | -42d | 0d |
| 1402 | 17.2.6.1.2 | Implementation | 1d? | 2005-03-02 | 2005-03-03 | 1401 | -42d | 0d |
| 1403 | 17.2.6.1.3 | Tuning | 1d? | 2005-03-03 | 2005-03-04 | 1402 | -42d | 0d |
| 1405 | 17.3 | **Scripts** | 5d? | 2005-03-01 | 2005-03-07 |  | -44d | 0d |
| 1406 | 17.3.1 | **Script 1** | 5d? | 2005-03-01 | 2005-03-07 |  | -44d | 0d |
| 1407 | 17.3.1.1 | Scenario(text) | 1d? | 2005-03-01 | 2005-03-02 |  | -44d | 0d |
| 1408 | 17.3.1.2 | Постановка задач | 1d? | 2005-03-02 | 2005-03-03 | 1407 | -44d | 0d |
| 1409 | 17.3.1.3 | Implimentation | 1d? | 2005-03-03 | 2005-03-04 | 1408 | -44d | 0d |
| 1410 | 17.3.1.4 | Dilogs/VO/Icons/Objects/Animations | 1d? | 2005-03-04 | 2005-03-05 | 1409 | -44d | 0d |
| 1411 | 17.3.1.5 | Настройка | 1d? | 2005-03-05 | 2005-03-07 | 1410 | -44d | 0d |
| 1412 | 17.3.2 | **Script 2** | 5d? | 2005-03-01 | 2005-03-07 |  | -44d | 0d |
| 1413 | 17.3.2.1 | Scenario(text) | 1d? | 2005-03-01 | 2005-03-02 |  | -44d | 0d |
| 1414 | 17.3.2.2 | Постановка задач | 1d? | 2005-03-02 | 2005-03-03 | 1413 | -44d | 0d |
| 1415 | 17.3.2.3 | Implimentation | 1d? | 2005-03-03 | 2005-03-04 | 1414 | -44d | 0d |
| 1416 | 17.3.2.4 | Dilogs/VO/Icons/Objects/Animations | 1d? | 2005-03-04 | 2005-03-05 | 1415 | -44d | 0d |
| 1417 | 17.3.2.5 | Настройка | 1d? | 2005-03-05 | 2005-03-07 | 1416 | -44d | 0d |
| 1418 | 17.3.3 | **Script 3** | 5d? | 2005-03-01 | 2005-03-07 |  | -44d | 0d |
| 1419 | 17.3.3.1 | Scenario(text) | 1d? | 2005-03-01 | 2005-03-02 |  | -44d | 0d |
| 1420 | 17.3.3.2 | Постановка задач | 1d? | 2005-03-02 | 2005-03-03 | 1419 | -44d | 0d |
| 1421 | 17.3.3.3 | Implimentation | 1d? | 2005-03-03 | 2005-03-04 | 1420 | -44d | 0d |
| 1422 | 17.3.3.4 | Dilogs/VO/Icons/Objects/Animations | 1d? | 2005-03-04 | 2005-03-05 | 1421 | -44d | 0d |
| 1423 | 17.3.3.5 | Настройка | 1d? | 2005-03-05 | 2005-03-07 | 1422 | -44d | 0d |

| ID | WBS | Task | Duration | Start | Finish | Predecessors | Total slack | Free slack | Deadline | Resources | Work |
| --- | --- | --- | --- | --- | --- | --- | --- | --- | --- | --- | --- |
| 1424 | 17.3.4 | **Script 4** | 5d? | 2005-03-01 | 2005-03-07 |  | -44d | 0d |  |  |  |
| 1425 | 17.3.4.1 | Scenario(text) | 1d? | 2005-03-01 | 2005-03-02 |  | -44d | 0d |  |  |  |
| 1426 | 17.3.4.2 | Постановка задач | 1d? | 2005-03-02 | 2005-03-03 | 1425 | -44d | 0d |  |  |  |
| 1427 | 17.3.4.3 | Implimentation | 1d? | 2005-03-03 | 2005-03-04 | 1426 | -44d | 0d |  |  |  |
| 1428 | 17.3.4.4 | Dilogs/VO/Icons/Objects/Animations | 1d? | 2005-03-04 | 2005-03-05 | 1427 | -44d | 0d |  |  |  |
| 1429 | 17.3.4.5 | Настройка | 1d? | 2005-03-05 | 2005-03-07 | 1428 | -44d | 0d |  |  |  |
| 1430 | 17.3.5 | **Script 5** | 5d? | 2005-03-01 | 2005-03-07 |  | -44d | 0d |  |  |  |
| 1431 | 17.3.5.1 | Scenario(text) | 1d? | 2005-03-01 | 2005-03-02 |  | -44d | 0d |  |  |  |
| 1432 | 17.3.5.2 | Постановка задач | 1d? | 2005-03-02 | 2005-03-03 | 1431 | -44d | 0d |  |  |  |
| 1433 | 17.3.5.3 | Implimentation | 1d? | 2005-03-03 | 2005-03-04 | 1432 | -44d | 0d |  |  |  |
| 1434 | 17.3.5.4 | Dilogs/VO/Icons/Objects/Animations | 1d? | 2005-03-04 | 2005-03-05 | 1433 | -44d | 0d |  |  |  |
| 1435 | 17.3.5.5 | Настройка | 1d? | 2005-03-05 | 2005-03-07 | 1434 | -44d | 0d |  |  |  |
| 1437 | 18 | **19_Stancia** | 11d? | 2005-03-14 | 2005-03-26 | 1359 | -50d | 0d | 2005-04-29 | Маст Дай, Сидорович | 88h |
| 1438 | 18.1 | **LevelDesign** | 11d? | 2005-03-14 | 2005-03-26 |  | -50d | 0d | 2005-01-27 |  |  |
| 1439 | 18.1.1 | **Stage 1** | 11d? | 2005-03-14 | 2005-03-26 |  | -50d | 0d |  |  |  |
| 1440 | 18.1.1.1 | List of Changes | 2d | 2005-03-14 | 2005-03-16 |  | -50d | 0d |  |  |  |
| 1441 | 18.1.1.2 | Changed Geometry | 1d? | 2005-03-16 | 2005-03-17 | 1440 | -50d | 0d |  |  |  |
| 1442 | 18.1.1.3 | Check List 1 | 1d? | 2005-03-17 | 2005-03-18 | 1441 | -50d | 0d |  |  |  |
| 1443 | 18.1.1.4 | Check List 2 | 1d? | 2005-03-18 | 2005-03-19 | 1442 | -50d | 0d |  |  |  |
| 1444 | 18.1.1.5 | Check List 3 | 1d? | 2005-03-19 | 2005-03-21 | 1443 | -50d | 0d |  |  |  |
| 1445 | 18.1.1.6 | Check List 4 | 1d? | 2005-03-21 | 2005-03-22 | 1444 | -50d | 0d |  |  |  |
| 1446 | 18.1.1.7 | Render Geometry | 1d? | 2005-03-22 | 2005-03-23 | 1445 | -50d | 0d |  |  |  |
| 1447 | 18.1.1.8 | Grass | 1d? | 2005-03-23 | 2005-03-24 | 1446 | -50d | 0d |  |  |  |
| 1448 | 18.1.1.9 | AI Maps | 1d? | 2005-03-24 | 2005-03-25 | 1447 | -50d | 0d |  |  |  |
| 1449 | 18.1.1.10 | Graphs | 1d? | 2005-03-25 | 2005-03-26 | 1448 | -50d | 0d |  |  |  |

| ID | WBS | Task | Duration | Start | Finish | Predecessors | Total slack | Free slack |
| --- | --- | --- | --- | --- | --- | --- | --- | --- |
| 1451 | 18.2 | **GameDesign** | 3d? | 2005-03-14 | 2005-03-17 |  | 37d |  |
| 1452 | 18.2.1 | **Secrets** | 3d? | 2005-03-14 | 2005-03-17 |  | 37d |  |
| 1453 | 18.2.1.1 | **Stage 1** | 3d? | 2005-03-14 | 2005-03-17 |  | 37d |  |
| 1454 | 18.2.1.1.1 | Design | 1d? | 2005-03-14 | 2005-03-15 |  | 37d | 0d |
| 1455 | 18.2.1.1.2 | Implementation | 1d? | 2005-03-15 | 2005-03-16 | 1454 | 37d | 0d |
| 1456 | 18.2.1.1.3 | Tuning | 1d? | 2005-03-16 | 2005-03-17 | 1455 | 37d |  |
| 1457 | 18.2.2 | **Smartterrains** | 3d? | 2005-03-14 | 2005-03-17 |  | 37d |  |
| 1458 | 18.2.2.1 | **Stage 1** | 3d? | 2005-03-14 | 2005-03-17 |  | 37d |  |
| 1459 | 18.2.2.1.1 | Design | 1d? | 2005-03-14 | 2005-03-15 |  | 37d | 0d |
| 1460 | 18.2.2.1.2 | Implementation | 1d? | 2005-03-15 | 2005-03-16 | 1459 | 37d | 0d |
| 1461 | 18.2.2.1.3 | Tuning | 1d? | 2005-03-16 | 2005-03-17 | 1460 | 37d |  |
| 1462 | 18.2.3 | **Monsters/Spawns** | 3d? | 2005-03-14 | 2005-03-17 |  | 37d |  |
| 1463 | 18.2.3.1 | **Stage 1** | 3d? | 2005-03-14 | 2005-03-17 |  | 37d |  |
| 1464 | 18.2.3.1.1 | Design | 1d? | 2005-03-14 | 2005-03-15 |  | 37d | 0d |
| 1465 | 18.2.3.1.2 | Implementation | 1d? | 2005-03-15 | 2005-03-16 | 1464 | 37d | 0d |
| 1466 | 18.2.3.1.3 | Tuning | 1d? | 2005-03-16 | 2005-03-17 | 1465 | 37d |  |
| 1467 | 18.2.4 | **Stalkers/Spawns** | 3d? | 2005-03-14 | 2005-03-17 |  | 37d |  |
| 1468 | 18.2.4.1 | **Stage 1** | 3d? | 2005-03-14 | 2005-03-17 |  | 37d |  |
| 1469 | 18.2.4.1.1 | Design | 1d? | 2005-03-14 | 2005-03-15 |  | 37d | 0d |
| 1470 | 18.2.4.1.2 | Implementation | 1d? | 2005-03-15 | 2005-03-16 | 1469 | 37d | 0d |
| 1471 | 18.2.4.1.3 | Tuning | 1d? | 2005-03-16 | 2005-03-17 | 1470 | 37d |  |
| 1472 | 18.2.5 | **Anomalies/Spawns** | 3d? | 2005-03-14 | 2005-03-17 |  | 37d |  |
| 1473 | 18.2.5.1 | **Stage 1** | 3d? | 2005-03-14 | 2005-03-17 |  | 37d |  |
| 1474 | 18.2.5.1.1 | Design | 1d? | 2005-03-14 | 2005-03-15 |  | 37d | 0d |
| 1475 | 18.2.5.1.2 | Implementation | 1d? | 2005-03-15 | 2005-03-16 | 1474 | 37d | 0d |
| 1476 | 18.2.5.1.3 | Tuning | 1d? | 2005-03-16 | 2005-03-17 | 1475 | 37d |  |

| ID | WBS | Task | Duration | Start | Finish | Predecessors | Total slack | Free slack |
| --- | --- | --- | --- | --- | --- | --- | --- | --- |
| 1477 | 18.2.6 | **Physicks** | 3d? | 2005-03-14 | 2005-03-17 |  | 37d |  |
| 1478 | 18.2.6.1 | **Stage 1** | 3d? | 2005-03-14 | 2005-03-17 |  | 37d |  |
| 1479 | 18.2.6.1.1 | Design | 1d? | 2005-03-14 | 2005-03-15 |  | 37d | 0d |
| 1480 | 18.2.6.1.2 | Implementation | 1d? | 2005-03-15 | 2005-03-16 | 1479 | 37d | 0d |
| 1481 | 18.2.6.1.3 | Tuning | 1d? | 2005-03-16 | 2005-03-17 | 1480 | 37d |  |
| 1483 | 18.3 | **Scripts** | 5d? | 2005-03-14 | 2005-03-19 |  | 35d |  |
| 1484 | 18.3.1 | **Script 1** | 5d? | 2005-03-14 | 2005-03-19 |  | 35d |  |
| 1485 | 18.3.1.1 | Scenario(text) | 1d? | 2005-03-14 | 2005-03-15 |  | 35d | 0d |
| 1486 | 18.3.1.2 | Постановка задач | 1d? | 2005-03-15 | 2005-03-16 | 1485 | 35d | 0d |
| 1487 | 18.3.1.3 | Implimentation | 1d? | 2005-03-16 | 2005-03-17 | 1486 | 35d | 0d |
| 1488 | 18.3.1.4 | Dilogs/VO/Icons/Objects/Animations | 1d? | 2005-03-17 | 2005-03-18 | 1487 | 35d | 0d |
| 1489 | 18.3.1.5 | Настройка | 1d? | 2005-03-18 | 2005-03-19 | 1488 | 35d |  |
| 1490 | 18.3.2 | **Script 2** | 5d? | 2005-03-14 | 2005-03-19 |  | 35d |  |
| 1491 | 18.3.2.1 | Scenario(text) | 1d? | 2005-03-14 | 2005-03-15 |  | 35d | 0d |
| 1492 | 18.3.2.2 | Постановка задач | 1d? | 2005-03-15 | 2005-03-16 | 1491 | 35d | 0d |
| 1493 | 18.3.2.3 | Implimentation | 1d? | 2005-03-16 | 2005-03-17 | 1492 | 35d | 0d |
| 1494 | 18.3.2.4 | Dilogs/VO/Icons/Objects/Animations | 1d? | 2005-03-17 | 2005-03-18 | 1493 | 35d | 0d |
| 1495 | 18.3.2.5 | Настройка | 1d? | 2005-03-18 | 2005-03-19 | 1494 | 35d |  |
| 1496 | 18.3.3 | **Script 3** | 5d? | 2005-03-14 | 2005-03-19 |  | 35d |  |
| 1497 | 18.3.3.1 | Scenario(text) | 1d? | 2005-03-14 | 2005-03-15 |  | 35d | 0d |
| 1498 | 18.3.3.2 | Постановка задач | 1d? | 2005-03-15 | 2005-03-16 | 1497 | 35d | 0d |
| 1499 | 18.3.3.3 | Implimentation | 1d? | 2005-03-16 | 2005-03-17 | 1498 | 35d | 0d |
| 1500 | 18.3.3.4 | Dilogs/VO/Icons/Objects/Animations | 1d? | 2005-03-17 | 2005-03-18 | 1499 | 35d | 0d |
| 1501 | 18.3.3.5 | Настройка | 1d? | 2005-03-18 | 2005-03-19 | 1500 | 35d |  |

| ID | WBS | Task | Duration | Start | Finish | Predecessors | Total slack | Free slack | Deadline | Resources | Work |
| --- | --- | --- | --- | --- | --- | --- | --- | --- | --- | --- | --- |
| 1502 | 18.3.4 | **Script 4** | 5d? | 2005-03-14 | 2005-03-19 |  | 35d |  |  |  |  |
| 1503 | 18.3.4.1 | Scenario(text) | 1d? | 2005-03-14 | 2005-03-15 |  | 35d | 0d |  |  |  |
| 1504 | 18.3.4.2 | Постановка задач | 1d? | 2005-03-15 | 2005-03-16 | 1503 | 35d | 0d |  |  |  |
| 1505 | 18.3.4.3 | Implimentation | 1d? | 2005-03-16 | 2005-03-17 | 1504 | 35d | 0d |  |  |  |
| 1506 | 18.3.4.4 | Dilogs/VO/Icons/Objects/Animations | 1d? | 2005-03-17 | 2005-03-18 | 1505 | 35d | 0d |  |  |  |
| 1507 | 18.3.4.5 | Настройка | 1d? | 2005-03-18 | 2005-03-19 | 1506 | 35d |  |  |  |  |
| 1508 | 18.3.5 | **Script 5** | 5d? | 2005-03-14 | 2005-03-19 |  | 35d |  |  |  |  |
| 1509 | 18.3.5.1 | Scenario(text) | 1d? | 2005-03-14 | 2005-03-15 |  | 35d | 0d |  |  |  |
| 1510 | 18.3.5.2 | Постановка задач | 1d? | 2005-03-15 | 2005-03-16 | 1509 | 35d | 0d |  |  |  |
| 1511 | 18.3.5.3 | Implimentation | 1d? | 2005-03-16 | 2005-03-17 | 1510 | 35d | 0d |  |  |  |
| 1512 | 18.3.5.4 | Dilogs/VO/Icons/Objects/Animations | 1d? | 2005-03-17 | 2005-03-18 | 1511 | 35d | 0d |  |  |  |
| 1513 | 18.3.5.5 | Настройка | 1d? | 2005-03-18 | 2005-03-19 | 1512 | 35d |  |  |  |  |
| 1518 | 19 | **15_Radar** | 11d? | 2005-01-24 | 2005-02-04 |  | 1.88d | 0d | 2005-03-01 | Лестат, Чугай | 88h |
| 1519 | 19.1 | **LevelDesign** | 11d? | 2005-01-24 | 2005-02-04 |  | 1.88d |  | 2005-02-07 |  |  |
| 1520 | 19.1.1 | **Stage 1** | 11d? | 2005-01-24 | 2005-02-04 |  | 1.88d |  |  |  |  |
| 1521 | 19.1.1.1 | List of Changes | 2d | 2005-01-24 | 2005-01-25 |  | 1.88d | 0d |  |  |  |
| 1522 | 19.1.1.2 | Changed Geometry | 1d? | 2005-01-26 | 2005-01-26 | 1521 | 1.88d | 0d |  |  |  |
| 1523 | 19.1.1.3 | Check List 1 | 1d? | 2005-01-27 | 2005-01-27 | 1522 | 1.88d | 0d |  |  |  |
| 1524 | 19.1.1.4 | Check List 2 | 1d? | 2005-01-28 | 2005-01-28 | 1523 | 1.88d | 0d |  |  |  |
| 1525 | 19.1.1.5 | Check List 3 | 1d? | 2005-01-29 | 2005-01-29 | 1524 | 1.88d | 0d |  |  |  |
| 1526 | 19.1.1.6 | Check List 4 | 1d? | 2005-01-31 | 2005-01-31 | 1525 | 1.88d | 0d |  |  |  |
| 1527 | 19.1.1.7 | Render Geometry | 1d? | 2005-02-01 | 2005-02-01 | 1526 | 1.88d | 0d |  |  |  |
| 1528 | 19.1.1.8 | Grass | 1d? | 2005-02-02 | 2005-02-02 | 1527 | 1.88d | 0d |  |  |  |
| 1529 | 19.1.1.9 | AI Maps | 1d? | 2005-02-03 | 2005-02-03 | 1528 | 1.88d | 0d |  |  |  |
| 1530 | 19.1.1.10 | Graphs | 1d? | 2005-02-04 | 2005-02-04 | 1529 | 1.88d |  |  |  |  |

| ID | WBS | Task | Duration | Start | Finish | Predecessors | Total slack | Free slack |
| --- | --- | --- | --- | --- | --- | --- | --- | --- |
| 1532 | 19.2 | **GameDesign** | 3d? | 2005-01-24 | 2005-01-26 |  | 17.88d |  |
| 1533 | 19.2.1 | **Secrets** | 3d? | 2005-01-24 | 2005-01-26 |  | 17.88d |  |
| 1534 | 19.2.1.1 | **Stage 1** | 3d? | 2005-01-24 | 2005-01-26 |  | 17.88d |  |
| 1535 | 19.2.1.1.1 | Design | 1d? | 2005-01-24 | 2005-01-24 |  | 17.88d | 0d |
| 1536 | 19.2.1.1.2 | Implementation | 1d? | 2005-01-25 | 2005-01-25 | 1535 | 17.88d | 0d |
| 1537 | 19.2.1.1.3 | Tuning | 1d? | 2005-01-26 | 2005-01-26 | 1536 | 17.88d |  |
| 1538 | 19.2.2 | **Smartterrains** | 3d? | 2005-01-24 | 2005-01-26 |  | 17.88d |  |
| 1539 | 19.2.2.1 | **Stage 1** | 3d? | 2005-01-24 | 2005-01-26 |  | 17.88d |  |
| 1540 | 19.2.2.1.1 | Design | 1d? | 2005-01-24 | 2005-01-24 |  | 17.88d | 0d |
| 1541 | 19.2.2.1.2 | Implementation | 1d? | 2005-01-25 | 2005-01-25 | 1540 | 17.88d | 0d |
| 1542 | 19.2.2.1.3 | Tuning | 1d? | 2005-01-26 | 2005-01-26 | 1541 | 17.88d |  |
| 1543 | 19.2.3 | **Monsters/Spawns** | 3d? | 2005-01-24 | 2005-01-26 |  | 17.88d |  |
| 1544 | 19.2.3.1 | **Stage 1** | 3d? | 2005-01-24 | 2005-01-26 |  | 17.88d |  |
| 1545 | 19.2.3.1.1 | Design | 1d? | 2005-01-24 | 2005-01-24 |  | 17.88d | 0d |
| 1546 | 19.2.3.1.2 | Implementation | 1d? | 2005-01-25 | 2005-01-25 | 1545 | 17.88d | 0d |
| 1547 | 19.2.3.1.3 | Tuning | 1d? | 2005-01-26 | 2005-01-26 | 1546 | 17.88d |  |
| 1548 | 19.2.4 | **Stalkers/Spawns** | 3d? | 2005-01-24 | 2005-01-26 |  | 17.88d |  |
| 1549 | 19.2.4.1 | **Stage 1** | 3d? | 2005-01-24 | 2005-01-26 |  | 17.88d |  |
| 1550 | 19.2.4.1.1 | Design | 1d? | 2005-01-24 | 2005-01-24 |  | 17.88d | 0d |
| 1551 | 19.2.4.1.2 | Implementation | 1d? | 2005-01-25 | 2005-01-25 | 1550 | 17.88d | 0d |
| 1552 | 19.2.4.1.3 | Tuning | 1d? | 2005-01-26 | 2005-01-26 | 1551 | 17.88d |  |
| 1553 | 19.2.5 | **Anomalies/Spawns** | 3d? | 2005-01-24 | 2005-01-26 |  | 17.88d |  |
| 1554 | 19.2.5.1 | **Stage 1** | 3d? | 2005-01-24 | 2005-01-26 |  | 17.88d |  |
| 1555 | 19.2.5.1.1 | Design | 1d? | 2005-01-24 | 2005-01-24 |  | 17.88d | 0d |
| 1556 | 19.2.5.1.2 | Implementation | 1d? | 2005-01-25 | 2005-01-25 | 1555 | 17.88d | 0d |
| 1557 | 19.2.5.1.3 | Tuning | 1d? | 2005-01-26 | 2005-01-26 | 1556 | 17.88d |  |

| ID | WBS | Task | Duration | Start | Finish | Predecessors | Total slack | Free slack |
| --- | --- | --- | --- | --- | --- | --- | --- | --- |
| 1558 | 19.2.6 | **Physicks** | 3d? | 2005-01-24 | 2005-01-26 |  | 17.88d |  |
| 1559 | 19.2.6.1 | **Stage 1** | 3d? | 2005-01-24 | 2005-01-26 |  | 17.88d |  |
| 1560 | 19.2.6.1.1 | Design | 1d? | 2005-01-24 | 2005-01-24 |  | 17.88d | 0d |
| 1561 | 19.2.6.1.2 | Implementation | 1d? | 2005-01-25 | 2005-01-25 | 1560 | 17.88d | 0d |
| 1562 | 19.2.6.1.3 | Tuning | 1d? | 2005-01-26 | 2005-01-26 | 1561 | 17.88d |  |
| 1564 | 19.3 | **Scripts** | 5d? | 2005-01-24 | 2005-01-28 |  | 15.88d |  |
| 1565 | 19.3.1 | **Script 1** | 5d? | 2005-01-24 | 2005-01-28 |  | 15.88d |  |
| 1566 | 19.3.1.1 | Scenario(text) | 1d? | 2005-01-24 | 2005-01-24 |  | 15.88d | 0d |
| 1567 | 19.3.1.2 | Постановка задач | 1d? | 2005-01-25 | 2005-01-25 | 1566 | 15.88d | 0d |
| 1568 | 19.3.1.3 | Implimentation | 1d? | 2005-01-26 | 2005-01-26 | 1567 | 15.88d | 0d |
| 1569 | 19.3.1.4 | Dilogs/VO/Icons/Objects/Animations | 1d? | 2005-01-27 | 2005-01-27 | 1568 | 15.88d | 0d |
| 1570 | 19.3.1.5 | Настройка | 1d? | 2005-01-28 | 2005-01-28 | 1569 | 15.88d |  |
| 1571 | 19.3.2 | **Script 2** | 5d? | 2005-01-24 | 2005-01-28 |  | 15.88d |  |
| 1572 | 19.3.2.1 | Scenario(text) | 1d? | 2005-01-24 | 2005-01-24 |  | 15.88d | 0d |
| 1573 | 19.3.2.2 | Постановка задач | 1d? | 2005-01-25 | 2005-01-25 | 1572 | 15.88d | 0d |
| 1574 | 19.3.2.3 | Implimentation | 1d? | 2005-01-26 | 2005-01-26 | 1573 | 15.88d | 0d |
| 1575 | 19.3.2.4 | Dilogs/VO/Icons/Objects/Animations | 1d? | 2005-01-27 | 2005-01-27 | 1574 | 15.88d | 0d |
| 1576 | 19.3.2.5 | Настройка | 1d? | 2005-01-28 | 2005-01-28 | 1575 | 15.88d |  |
| 1577 | 19.3.3 | **Script 3** | 5d? | 2005-01-24 | 2005-01-28 |  | 15.88d |  |
| 1578 | 19.3.3.1 | Scenario(text) | 1d? | 2005-01-24 | 2005-01-24 |  | 15.88d | 0d |
| 1579 | 19.3.3.2 | Постановка задач | 1d? | 2005-01-25 | 2005-01-25 | 1578 | 15.88d | 0d |
| 1580 | 19.3.3.3 | Implimentation | 1d? | 2005-01-26 | 2005-01-26 | 1579 | 15.88d | 0d |
| 1581 | 19.3.3.4 | Dilogs/VO/Icons/Objects/Animations | 1d? | 2005-01-27 | 2005-01-27 | 1580 | 15.88d | 0d |
| 1582 | 19.3.3.5 | Настройка | 1d? | 2005-01-28 | 2005-01-28 | 1581 | 15.88d |  |

| ID | WBS | Task | Duration | Start | Finish | Predecessors | Total slack | Free slack | Deadline | Resources | Work |
| --- | --- | --- | --- | --- | --- | --- | --- | --- | --- | --- | --- |
| 1583 | 19.3.4 | **Script 4** | 5d? | 2005-01-24 | 2005-01-28 |  | 15.88d |  |  |  |  |
| 1584 | 19.3.4.1 | Scenario(text) | 1d? | 2005-01-24 | 2005-01-24 |  | 15.88d | 0d |  |  |  |
| 1585 | 19.3.4.2 | Постановка задач | 1d? | 2005-01-25 | 2005-01-25 | 1584 | 15.88d | 0d |  |  |  |
| 1586 | 19.3.4.3 | Implimentation | 1d? | 2005-01-26 | 2005-01-26 | 1585 | 15.88d | 0d |  |  |  |
| 1587 | 19.3.4.4 | Dilogs/VO/Icons/Objects/Animations | 1d? | 2005-01-27 | 2005-01-27 | 1586 | 15.88d | 0d |  |  |  |
| 1588 | 19.3.4.5 | Настройка | 1d? | 2005-01-28 | 2005-01-28 | 1587 | 15.88d |  |  |  |  |
| 1589 | 19.3.5 | **Script 5** | 5d? | 2005-01-24 | 2005-01-28 |  | 15.88d |  |  |  |  |
| 1590 | 19.3.5.1 | Scenario(text) | 1d? | 2005-01-24 | 2005-01-24 |  | 15.88d | 0d |  |  |  |
| 1591 | 19.3.5.2 | Постановка задач | 1d? | 2005-01-25 | 2005-01-25 | 1590 | 15.88d | 0d |  |  |  |
| 1592 | 19.3.5.3 | Implimentation | 1d? | 2005-01-26 | 2005-01-26 | 1591 | 15.88d | 0d |  |  |  |
| 1593 | 19.3.5.4 | Dilogs/VO/Icons/Objects/Animations | 1d? | 2005-01-27 | 2005-01-27 | 1592 | 15.88d | 0d |  |  |  |
| 1594 | 19.3.5.5 | Настройка | 1d? | 2005-01-28 | 2005-01-28 | 1593 | 15.88d |  |  |  |  |
| 1597 | 20 | **12_Yantar_Underground** | 11d? | 2005-02-05 | 2005-02-17 | 1518 | 9.88d | 0d | 2005-03-15 | Лестат, Чугай | 88h |
| 1598 | 20.1 | **LevelDesign** | 11d? | 2005-02-05 | 2005-02-17 |  | 9.88d |  | 2005-03-01 |  |  |
| 1599 | 20.1.1 | **Stage 1** | 11d? | 2005-02-05 | 2005-02-17 |  | 9.88d |  |  |  |  |
| 1600 | 20.1.1.1 | List of Changes | 2d | 2005-02-05 | 2005-02-07 |  | 9.88d | 0d |  |  |  |
| 1601 | 20.1.1.2 | Changed Geometry | 1d? | 2005-02-08 | 2005-02-08 | 1600 | 9.88d | 0d |  |  |  |
| 1602 | 20.1.1.3 | Check List 1 | 1d? | 2005-02-09 | 2005-02-09 | 1601 | 9.88d | 0d |  |  |  |
| 1603 | 20.1.1.4 | Check List 2 | 1d? | 2005-02-10 | 2005-02-10 | 1602 | 9.88d | 0d |  |  |  |
| 1604 | 20.1.1.5 | Check List 3 | 1d? | 2005-02-11 | 2005-02-11 | 1603 | 9.88d | 0d |  |  |  |
| 1605 | 20.1.1.6 | Check List 4 | 1d? | 2005-02-12 | 2005-02-12 | 1604 | 9.88d | 0d |  |  |  |
| 1606 | 20.1.1.7 | Render Geometry | 1d? | 2005-02-14 | 2005-02-14 | 1605 | 9.88d | 0d |  |  |  |
| 1607 | 20.1.1.8 | Grass | 1d? | 2005-02-15 | 2005-02-15 | 1606 | 9.88d | 0d |  |  |  |
| 1608 | 20.1.1.9 | AI Maps | 1d? | 2005-02-16 | 2005-02-16 | 1607 | 9.88d | 0d |  |  |  |
| 1609 | 20.1.1.10 | Graphs | 1d? | 2005-02-17 | 2005-02-17 | 1608 | 9.88d |  |  |  |  |

| ID | WBS | Task | Duration | Start | Finish | Predecessors | Total slack | Free slack |
| --- | --- | --- | --- | --- | --- | --- | --- | --- |
| 1611 | 20.2 | **GameDesign** | 3d? | 2005-02-05 | 2005-02-08 |  | 18.88d |  |
| 1612 | 20.2.1 | **Secrets** | 3d? | 2005-02-05 | 2005-02-08 |  | 18.88d |  |
| 1613 | 20.2.1.1 | **Stage 1** | 3d? | 2005-02-05 | 2005-02-08 |  | 18.88d |  |
| 1614 | 20.2.1.1.1 | Design | 1d? | 2005-02-05 | 2005-02-05 |  | 18.88d | 0d |
| 1615 | 20.2.1.1.2 | Implementation | 1d? | 2005-02-07 | 2005-02-07 | 1614 | 18.88d | 0d |
| 1616 | 20.2.1.1.3 | Tuning | 1d? | 2005-02-08 | 2005-02-08 | 1615 | 18.88d |  |
| 1617 | 20.2.2 | **Smartterrains** | 3d? | 2005-02-05 | 2005-02-08 |  | 18.88d |  |
| 1618 | 20.2.2.1 | **Stage 1** | 3d? | 2005-02-05 | 2005-02-08 |  | 18.88d |  |
| 1619 | 20.2.2.1.1 | Design | 1d? | 2005-02-05 | 2005-02-05 |  | 18.88d | 0d |
| 1620 | 20.2.2.1.2 | Implementation | 1d? | 2005-02-07 | 2005-02-07 | 1619 | 18.88d | 0d |
| 1621 | 20.2.2.1.3 | Tuning | 1d? | 2005-02-08 | 2005-02-08 | 1620 | 18.88d |  |
| 1622 | 20.2.3 | **Monsters/Spawns** | 3d? | 2005-02-05 | 2005-02-08 |  | 18.88d |  |
| 1623 | 20.2.3.1 | **Stage 1** | 3d? | 2005-02-05 | 2005-02-08 |  | 18.88d |  |
| 1624 | 20.2.3.1.1 | Design | 1d? | 2005-02-05 | 2005-02-05 |  | 18.88d | 0d |
| 1625 | 20.2.3.1.2 | Implementation | 1d? | 2005-02-07 | 2005-02-07 | 1624 | 18.88d | 0d |
| 1626 | 20.2.3.1.3 | Tuning | 1d? | 2005-02-08 | 2005-02-08 | 1625 | 18.88d |  |
| 1627 | 20.2.4 | **Stalkers/Spawns** | 3d? | 2005-02-05 | 2005-02-08 |  | 18.88d |  |
| 1628 | 20.2.4.1 | **Stage 1** | 3d? | 2005-02-05 | 2005-02-08 |  | 18.88d |  |
| 1629 | 20.2.4.1.1 | Design | 1d? | 2005-02-05 | 2005-02-05 |  | 18.88d | 0d |
| 1630 | 20.2.4.1.2 | Implementation | 1d? | 2005-02-07 | 2005-02-07 | 1629 | 18.88d | 0d |
| 1631 | 20.2.4.1.3 | Tuning | 1d? | 2005-02-08 | 2005-02-08 | 1630 | 18.88d |  |
| 1632 | 20.2.5 | **Anomalies/Spawns** | 3d? | 2005-02-05 | 2005-02-08 |  | 18.88d |  |
| 1633 | 20.2.5.1 | **Stage 1** | 3d? | 2005-02-05 | 2005-02-08 |  | 18.88d |  |
| 1634 | 20.2.5.1.1 | Design | 1d? | 2005-02-05 | 2005-02-05 |  | 18.88d | 0d |
| 1635 | 20.2.5.1.2 | Implementation | 1d? | 2005-02-07 | 2005-02-07 | 1634 | 18.88d | 0d |
| 1636 | 20.2.5.1.3 | Tuning | 1d? | 2005-02-08 | 2005-02-08 | 1635 | 18.88d |  |

| ID | WBS | Task | Duration | Start | Finish | Predecessors | Total slack | Free slack |
| --- | --- | --- | --- | --- | --- | --- | --- | --- |
| 1637 | 20.2.6 | **Physicks** | 3d? | 2005-02-05 | 2005-02-08 |  | 18.88d |  |
| 1638 | 20.2.6.1 | **Stage 1** | 3d? | 2005-02-05 | 2005-02-08 |  | 18.88d |  |
| 1639 | 20.2.6.1.1 | Design | 1d? | 2005-02-05 | 2005-02-05 |  | 18.88d | 0d |
| 1640 | 20.2.6.1.2 | Implementation | 1d? | 2005-02-07 | 2005-02-07 | 1639 | 18.88d | 0d |
| 1641 | 20.2.6.1.3 | Tuning | 1d? | 2005-02-08 | 2005-02-08 | 1640 | 18.88d |  |
| 1643 | 20.3 | **Scripts** | 5d? | 2005-02-05 | 2005-02-10 |  | 16.88d |  |
| 1644 | 20.3.1 | **Script 1** | 5d? | 2005-02-05 | 2005-02-10 |  | 16.88d |  |
| 1645 | 20.3.1.1 | Scenario(text) | 1d? | 2005-02-05 | 2005-02-05 |  | 16.88d | 0d |
| 1646 | 20.3.1.2 | Постановка задач | 1d? | 2005-02-07 | 2005-02-07 | 1645 | 16.88d | 0d |
| 1647 | 20.3.1.3 | Implimentation | 1d? | 2005-02-08 | 2005-02-08 | 1646 | 16.88d | 0d |
| 1648 | 20.3.1.4 | Dilogs/VO/Icons/Objects/Animations | 1d? | 2005-02-09 | 2005-02-09 | 1647 | 16.88d | 0d |
| 1649 | 20.3.1.5 | Настройка | 1d? | 2005-02-10 | 2005-02-10 | 1648 | 16.88d |  |
| 1650 | 20.3.2 | **Script 2** | 5d? | 2005-02-05 | 2005-02-10 |  | 16.88d |  |
| 1651 | 20.3.2.1 | Scenario(text) | 1d? | 2005-02-05 | 2005-02-05 |  | 16.88d | 0d |
| 1652 | 20.3.2.2 | Постановка задач | 1d? | 2005-02-07 | 2005-02-07 | 1651 | 16.88d | 0d |
| 1653 | 20.3.2.3 | Implimentation | 1d? | 2005-02-08 | 2005-02-08 | 1652 | 16.88d | 0d |
| 1654 | 20.3.2.4 | Dilogs/VO/Icons/Objects/Animations | 1d? | 2005-02-09 | 2005-02-09 | 1653 | 16.88d | 0d |
| 1655 | 20.3.2.5 | Настройка | 1d? | 2005-02-10 | 2005-02-10 | 1654 | 16.88d |  |
| 1656 | 20.3.3 | **Script 3** | 5d? | 2005-02-05 | 2005-02-10 |  | 16.88d |  |
| 1657 | 20.3.3.1 | Scenario(text) | 1d? | 2005-02-05 | 2005-02-05 |  | 16.88d | 0d |
| 1658 | 20.3.3.2 | Постановка задач | 1d? | 2005-02-07 | 2005-02-07 | 1657 | 16.88d | 0d |
| 1659 | 20.3.3.3 | Implimentation | 1d? | 2005-02-08 | 2005-02-08 | 1658 | 16.88d | 0d |
| 1660 | 20.3.3.4 | Dilogs/VO/Icons/Objects/Animations | 1d? | 2005-02-09 | 2005-02-09 | 1659 | 16.88d | 0d |
| 1661 | 20.3.3.5 | Настройка | 1d? | 2005-02-10 | 2005-02-10 | 1660 | 16.88d |  |

| ID | WBS | Task | Duration | Start | Finish | Predecessors | Total slack | Free slack | Deadline | Resources | Work |
| --- | --- | --- | --- | --- | --- | --- | --- | --- | --- | --- | --- |
| 1662 | 20.3.4 | **Script 4** | 5d? | 2005-02-05 | 2005-02-10 |  | 16.88d |  |  |  |  |
| 1663 | 20.3.4.1 | Scenario(text) | 1d? | 2005-02-05 | 2005-02-05 |  | 16.88d | 0d |  |  |  |
| 1664 | 20.3.4.2 | Постановка задач | 1d? | 2005-02-07 | 2005-02-07 | 1663 | 16.88d | 0d |  |  |  |
| 1665 | 20.3.4.3 | Implimentation | 1d? | 2005-02-08 | 2005-02-08 | 1664 | 16.88d | 0d |  |  |  |
| 1666 | 20.3.4.4 | Dilogs/VO/Icons/Objects/Animations | 1d? | 2005-02-09 | 2005-02-09 | 1665 | 16.88d | 0d |  |  |  |
| 1667 | 20.3.4.5 | Настройка | 1d? | 2005-02-10 | 2005-02-10 | 1666 | 16.88d |  |  |  |  |
| 1668 | 20.3.5 | **Script 5** | 5d? | 2005-02-05 | 2005-02-10 |  | 16.88d |  |  |  |  |
| 1669 | 20.3.5.1 | Scenario(text) | 1d? | 2005-02-05 | 2005-02-05 |  | 16.88d | 0d |  |  |  |
| 1670 | 20.3.5.2 | Постановка задач | 1d? | 2005-02-07 | 2005-02-07 | 1669 | 16.88d | 0d |  |  |  |
| 1671 | 20.3.5.3 | Implimentation | 1d? | 2005-02-08 | 2005-02-08 | 1670 | 16.88d | 0d |  |  |  |
| 1672 | 20.3.5.4 | Dilogs/VO/Icons/Objects/Animations | 1d? | 2005-02-09 | 2005-02-09 | 1671 | 16.88d | 0d |  |  |  |
| 1673 | 20.3.5.5 | Настройка | 1d? | 2005-02-10 | 2005-02-10 | 1672 | 16.88d |  |  |  |  |
| 1676 | 21 | **14_Swamp** | 11d? | 2005-02-18 | 2005-03-02 | 1597 | 10.88d |  | 2005-04-15 | Лестат, Чугай | 88h |
| 1677 | 21.1 | **LevelDesign** | 11d? | 2005-02-18 | 2005-03-02 |  | 10.88d |  | 2005-03-15 |  |  |
| 1678 | 21.1.1 | **Stage 1** | 11d? | 2005-02-18 | 2005-03-02 |  | 10.88d |  |  |  |  |
| 1679 | 21.1.1.1 | List of Changes | 2d | 2005-02-18 | 2005-02-19 |  | 10.88d | 0d |  |  |  |
| 1680 | 21.1.1.2 | Changed Geometry | 1d? | 2005-02-21 | 2005-02-21 | 1679 | 10.88d | 0d |  |  |  |
| 1681 | 21.1.1.3 | Check List 1 | 1d? | 2005-02-22 | 2005-02-22 | 1680 | 10.88d | 0d |  |  |  |
| 1682 | 21.1.1.4 | Check List 2 | 1d? | 2005-02-23 | 2005-02-23 | 1681 | 10.88d | 0d |  |  |  |
| 1683 | 21.1.1.5 | Check List 3 | 1d? | 2005-02-24 | 2005-02-24 | 1682 | 10.88d | 0d |  |  |  |
| 1684 | 21.1.1.6 | Check List 4 | 1d? | 2005-02-25 | 2005-02-25 | 1683 | 10.88d | 0d |  |  |  |
| 1685 | 21.1.1.7 | Render Geometry | 1d? | 2005-02-26 | 2005-02-26 | 1684 | 10.88d | 0d |  |  |  |
| 1686 | 21.1.1.8 | Grass | 1d? | 2005-02-28 | 2005-02-28 | 1685 | 10.88d | 0d |  |  |  |
| 1687 | 21.1.1.9 | AI Maps | 1d? | 2005-03-01 | 2005-03-01 | 1686 | 10.88d | 0d |  |  |  |
| 1688 | 21.1.1.10 | Graphs | 1d? | 2005-03-02 | 2005-03-02 | 1687 | 10.88d |  |  |  |  |

| ID | WBS | Task | Duration | Start | Finish | Predecessors | Total slack | Free slack |
| --- | --- | --- | --- | --- | --- | --- | --- | --- |
| 1690 | 21.2 | **GameDesign** | 3d? | 2005-02-18 | 2005-02-21 |  | 45.88d |  |
| 1691 | 21.2.1 | **Secrets** | 3d? | 2005-02-18 | 2005-02-21 |  | 45.88d |  |
| 1692 | 21.2.1.1 | **Stage 1** | 3d? | 2005-02-18 | 2005-02-21 |  | 45.88d |  |
| 1693 | 21.2.1.1.1 | Design | 1d? | 2005-02-18 | 2005-02-18 |  | 45.88d | 0d |
| 1694 | 21.2.1.1.2 | Implementation | 1d? | 2005-02-19 | 2005-02-19 | 1693 | 45.88d | 0d |
| 1695 | 21.2.1.1.3 | Tuning | 1d? | 2005-02-21 | 2005-02-21 | 1694 | 45.88d |  |
| 1696 | 21.2.2 | **Smartterrains** | 3d? | 2005-02-18 | 2005-02-21 |  | 45.88d |  |
| 1697 | 21.2.2.1 | **Stage 1** | 3d? | 2005-02-18 | 2005-02-21 |  | 45.88d |  |
| 1698 | 21.2.2.1.1 | Design | 1d? | 2005-02-18 | 2005-02-18 |  | 45.88d | 0d |
| 1699 | 21.2.2.1.2 | Implementation | 1d? | 2005-02-19 | 2005-02-19 | 1698 | 45.88d | 0d |
| 1700 | 21.2.2.1.3 | Tuning | 1d? | 2005-02-21 | 2005-02-21 | 1699 | 45.88d |  |
| 1701 | 21.2.3 | **Monsters/Spawns** | 3d? | 2005-02-18 | 2005-02-21 |  | 45.88d |  |
| 1702 | 21.2.3.1 | **Stage 1** | 3d? | 2005-02-18 | 2005-02-21 |  | 45.88d |  |
| 1703 | 21.2.3.1.1 | Design | 1d? | 2005-02-18 | 2005-02-18 |  | 45.88d | 0d |
| 1704 | 21.2.3.1.2 | Implementation | 1d? | 2005-02-19 | 2005-02-19 | 1703 | 45.88d | 0d |
| 1705 | 21.2.3.1.3 | Tuning | 1d? | 2005-02-21 | 2005-02-21 | 1704 | 45.88d |  |
| 1706 | 21.2.4 | **Stalkers/Spawns** | 3d? | 2005-02-18 | 2005-02-21 |  | 45.88d |  |
| 1707 | 21.2.4.1 | **Stage 1** | 3d? | 2005-02-18 | 2005-02-21 |  | 45.88d |  |
| 1708 | 21.2.4.1.1 | Design | 1d? | 2005-02-18 | 2005-02-18 |  | 45.88d | 0d |
| 1709 | 21.2.4.1.2 | Implementation | 1d? | 2005-02-19 | 2005-02-19 | 1708 | 45.88d | 0d |
| 1710 | 21.2.4.1.3 | Tuning | 1d? | 2005-02-21 | 2005-02-21 | 1709 | 45.88d |  |
| 1711 | 21.2.5 | **Anomalies/Spawns** | 3d? | 2005-02-18 | 2005-02-21 |  | 45.88d |  |
| 1712 | 21.2.5.1 | **Stage 1** | 3d? | 2005-02-18 | 2005-02-21 |  | 45.88d |  |
| 1713 | 21.2.5.1.1 | Design | 1d? | 2005-02-18 | 2005-02-18 |  | 45.88d | 0d |
| 1714 | 21.2.5.1.2 | Implementation | 1d? | 2005-02-19 | 2005-02-19 | 1713 | 45.88d | 0d |
| 1715 | 21.2.5.1.3 | Tuning | 1d? | 2005-02-21 | 2005-02-21 | 1714 | 45.88d |  |

| ID | WBS | Task | Duration | Start | Finish | Predecessors | Total slack | Free slack |
| --- | --- | --- | --- | --- | --- | --- | --- | --- |
| 1716 | 21.2.6 | **Physicks** | 3d? | 2005-02-18 | 2005-02-21 |  | 45.88d |  |
| 1717 | 21.2.6.1 | **Stage 1** | 3d? | 2005-02-18 | 2005-02-21 |  | 45.88d |  |
| 1718 | 21.2.6.1.1 | Design | 1d? | 2005-02-18 | 2005-02-18 |  | 45.88d | 0d |
| 1719 | 21.2.6.1.2 | Implementation | 1d? | 2005-02-19 | 2005-02-19 | 1718 | 45.88d | 0d |
| 1720 | 21.2.6.1.3 | Tuning | 1d? | 2005-02-21 | 2005-02-21 | 1719 | 45.88d |  |
| 1722 | 21.3 | **Scripts** | 5d? | 2005-02-18 | 2005-02-23 |  | 43.88d |  |
| 1723 | 21.3.1 | **Script 1** | 5d? | 2005-02-18 | 2005-02-23 |  | 43.88d |  |
| 1724 | 21.3.1.1 | Scenario(text) | 1d? | 2005-02-18 | 2005-02-18 |  | 43.88d | 0d |
| 1725 | 21.3.1.2 | Постановка задач | 1d? | 2005-02-19 | 2005-02-19 | 1724 | 43.88d | 0d |
| 1726 | 21.3.1.3 | Implimentation | 1d? | 2005-02-21 | 2005-02-21 | 1725 | 43.88d | 0d |
| 1727 | 21.3.1.4 | Dilogs/VO/Icons/Objects/Animations | 1d? | 2005-02-22 | 2005-02-22 | 1726 | 43.88d | 0d |
| 1728 | 21.3.1.5 | Настройка | 1d? | 2005-02-23 | 2005-02-23 | 1727 | 43.88d |  |
| 1729 | 21.3.2 | **Script 2** | 5d? | 2005-02-18 | 2005-02-23 |  | 43.88d |  |
| 1730 | 21.3.2.1 | Scenario(text) | 1d? | 2005-02-18 | 2005-02-18 |  | 43.88d | 0d |
| 1731 | 21.3.2.2 | Постановка задач | 1d? | 2005-02-19 | 2005-02-19 | 1730 | 43.88d | 0d |
| 1732 | 21.3.2.3 | Implimentation | 1d? | 2005-02-21 | 2005-02-21 | 1731 | 43.88d | 0d |
| 1733 | 21.3.2.4 | Dilogs/VO/Icons/Objects/Animations | 1d? | 2005-02-22 | 2005-02-22 | 1732 | 43.88d | 0d |
| 1734 | 21.3.2.5 | Настройка | 1d? | 2005-02-23 | 2005-02-23 | 1733 | 43.88d |  |
| 1735 | 21.3.3 | **Script 3** | 5d? | 2005-02-18 | 2005-02-23 |  | 43.88d |  |
| 1736 | 21.3.3.1 | Scenario(text) | 1d? | 2005-02-18 | 2005-02-18 |  | 43.88d | 0d |
| 1737 | 21.3.3.2 | Постановка задач | 1d? | 2005-02-19 | 2005-02-19 | 1736 | 43.88d | 0d |
| 1738 | 21.3.3.3 | Implimentation | 1d? | 2005-02-21 | 2005-02-21 | 1737 | 43.88d | 0d |
| 1739 | 21.3.3.4 | Dilogs/VO/Icons/Objects/Animations | 1d? | 2005-02-22 | 2005-02-22 | 1738 | 43.88d | 0d |
| 1740 | 21.3.3.5 | Настройка | 1d? | 2005-02-23 | 2005-02-23 | 1739 | 43.88d |  |

| ID | WBS | Task | Duration | Start | Finish | Predecessors | Total slack | Free slack |
| --- | --- | --- | --- | --- | --- | --- | --- | --- |
| 1741 | 21.3.4 | **Script 4** | 5d? | 2005-02-18 | 2005-02-23 |  | 43.88d |  |
| 1742 | 21.3.4.1 | Scenario(text) | 1d? | 2005-02-18 | 2005-02-18 |  | 43.88d | 0d |
| 1743 | 21.3.4.2 | Постановка задач | 1d? | 2005-02-19 | 2005-02-19 | 1742 | 43.88d | 0d |
| 1744 | 21.3.4.3 | Implimentation | 1d? | 2005-02-21 | 2005-02-21 | 1743 | 43.88d | 0d |
| 1745 | 21.3.4.4 | Dilogs/VO/Icons/Objects/Animations | 1d? | 2005-02-22 | 2005-02-22 | 1744 | 43.88d | 0d |
| 1746 | 21.3.4.5 | Настройка | 1d? | 2005-02-23 | 2005-02-23 | 1745 | 43.88d |  |
| 1747 | 21.3.5 | **Script 5** | 5d? | 2005-02-18 | 2005-02-23 |  | 43.88d |  |
| 1748 | 21.3.5.1 | Scenario(text) | 1d? | 2005-02-18 | 2005-02-18 |  | 43.88d | 0d |
| 1749 | 21.3.5.2 | Постановка задач | 1d? | 2005-02-19 | 2005-02-19 | 1748 | 43.88d | 0d |
| 1750 | 21.3.5.3 | Implimentation | 1d? | 2005-02-21 | 2005-02-21 | 1749 | 43.88d | 0d |
| 1751 | 21.3.5.4 | Dilogs/VO/Icons/Objects/Animations | 1d? | 2005-02-22 | 2005-02-22 | 1750 | 43.88d | 0d |
| 1752 | 21.3.5.5 | Настройка | 1d? | 2005-02-23 | 2005-02-23 | 1751 | 43.88d |  |
| 1767 | 22 | **21_Generators** | 11d? | 2005-01-24 | 2005-02-04 |  | 44d |  |
| 1768 | 22.1 | **LevelDesign** | 11d? | 2005-01-24 | 2005-02-04 |  | 44d |  |
| 1769 | 22.1.1 | **Stage 1** | 11d? | 2005-01-24 | 2005-02-04 |  | 44d |  |
| 1770 | 22.1.1.1 | List of Changes | 2d | 2005-01-24 | 2005-01-25 |  | 44d | 0d |
| 1771 | 22.1.1.2 | Changed Geometry | 1d? | 2005-01-26 | 2005-01-26 | 1770 | 44d | 0d |
| 1772 | 22.1.1.3 | Check List 1 | 1d? | 2005-01-27 | 2005-01-27 | 1771 | 44d | 0d |
| 1773 | 22.1.1.4 | Check List 2 | 1d? | 2005-01-28 | 2005-01-28 | 1772 | 44d | 0d |
| 1774 | 22.1.1.5 | Check List 3 | 1d? | 2005-01-29 | 2005-01-29 | 1773 | 44d | 0d |
| 1775 | 22.1.1.6 | Check List 4 | 1d? | 2005-01-31 | 2005-01-31 | 1774 | 44d | 0d |
| 1776 | 22.1.1.7 | Render Geometry | 1d? | 2005-02-01 | 2005-02-01 | 1775 | 44d | 0d |
| 1777 | 22.1.1.8 | Grass | 1d? | 2005-02-02 | 2005-02-02 | 1776 | 44d | 0d |
| 1778 | 22.1.1.9 | AI Maps | 1d? | 2005-02-03 | 2005-02-03 | 1777 | 44d | 0d |
| 1779 | 22.1.1.10 | Graphs | 1d? | 2005-02-04 | 2005-02-04 | 1778 | 44d |  |

| ID | WBS | Task | Duration | Start | Finish | Predecessors | Total slack | Free slack |
| --- | --- | --- | --- | --- | --- | --- | --- | --- |
| 1781 | 22.2 | **GameDesign** | 3d? | 2005-01-24 | 2005-01-26 |  | 52d |  |
| 1782 | 22.2.1 | **Secrets** | 3d? | 2005-01-24 | 2005-01-26 |  | 52d |  |
| 1783 | 22.2.1.1 | **Stage 1** | 3d? | 2005-01-24 | 2005-01-26 |  | 52d |  |
| 1784 | 22.2.1.1.1 | Design | 1d? | 2005-01-24 | 2005-01-24 |  | 52d | 0d |
| 1785 | 22.2.1.1.2 | Implementation | 1d? | 2005-01-25 | 2005-01-25 | 1784 | 52d | 0d |
| 1786 | 22.2.1.1.3 | Tuning | 1d? | 2005-01-26 | 2005-01-26 | 1785 | 52d |  |
| 1787 | 22.2.2 | **Smartterrains** | 3d? | 2005-01-24 | 2005-01-26 |  | 52d |  |
| 1788 | 22.2.2.1 | **Stage 1** | 3d? | 2005-01-24 | 2005-01-26 |  | 52d |  |
| 1789 | 22.2.2.1.1 | Design | 1d? | 2005-01-24 | 2005-01-24 |  | 52d | 0d |
| 1790 | 22.2.2.1.2 | Implementation | 1d? | 2005-01-25 | 2005-01-25 | 1789 | 52d | 0d |
| 1791 | 22.2.2.1.3 | Tuning | 1d? | 2005-01-26 | 2005-01-26 | 1790 | 52d |  |
| 1792 | 22.2.3 | **Monsters/Spawns** | 3d? | 2005-01-24 | 2005-01-26 |  | 52d |  |
| 1793 | 22.2.3.1 | **Stage 1** | 3d? | 2005-01-24 | 2005-01-26 |  | 52d |  |
| 1794 | 22.2.3.1.1 | Design | 1d? | 2005-01-24 | 2005-01-24 |  | 52d | 0d |
| 1795 | 22.2.3.1.2 | Implementation | 1d? | 2005-01-25 | 2005-01-25 | 1794 | 52d | 0d |
| 1796 | 22.2.3.1.3 | Tuning | 1d? | 2005-01-26 | 2005-01-26 | 1795 | 52d |  |
| 1797 | 22.2.4 | **Stalkers/Spawns** | 3d? | 2005-01-24 | 2005-01-26 |  | 52d |  |
| 1798 | 22.2.4.1 | **Stage 1** | 3d? | 2005-01-24 | 2005-01-26 |  | 52d |  |
| 1799 | 22.2.4.1.1 | Design | 1d? | 2005-01-24 | 2005-01-24 |  | 52d | 0d |
| 1800 | 22.2.4.1.2 | Implementation | 1d? | 2005-01-25 | 2005-01-25 | 1799 | 52d | 0d |
| 1801 | 22.2.4.1.3 | Tuning | 1d? | 2005-01-26 | 2005-01-26 | 1800 | 52d |  |
| 1802 | 22.2.5 | **Anomalies/Spawns** | 3d? | 2005-01-24 | 2005-01-26 |  | 52d |  |
| 1803 | 22.2.5.1 | **Stage 1** | 3d? | 2005-01-24 | 2005-01-26 |  | 52d |  |
| 1804 | 22.2.5.1.1 | Design | 1d? | 2005-01-24 | 2005-01-24 |  | 52d | 0d |
| 1805 | 22.2.5.1.2 | Implementation | 1d? | 2005-01-25 | 2005-01-25 | 1804 | 52d | 0d |
| 1806 | 22.2.5.1.3 | Tuning | 1d? | 2005-01-26 | 2005-01-26 | 1805 | 52d |  |

| ID | WBS | Task | Duration | Start | Finish | Predecessors | Total slack | Free slack |
| --- | --- | --- | --- | --- | --- | --- | --- | --- |
| 1807 | 22.2.6 | **Physicks** | 3d? | 2005-01-24 | 2005-01-26 |  | 52d |  |
| 1808 | 22.2.6.1 | **Stage 1** | 3d? | 2005-01-24 | 2005-01-26 |  | 52d |  |
| 1809 | 22.2.6.1.1 | Design | 1d? | 2005-01-24 | 2005-01-24 |  | 52d | 0d |
| 1810 | 22.2.6.1.2 | Implementation | 1d? | 2005-01-25 | 2005-01-25 | 1809 | 52d | 0d |
| 1811 | 22.2.6.1.3 | Tuning | 1d? | 2005-01-26 | 2005-01-26 | 1810 | 52d |  |
| 1813 | 22.3 | **Scripts** | 5d? | 2005-01-24 | 2005-01-28 |  | 50d |  |
| 1814 | 22.3.1 | **Script 1** | 5d? | 2005-01-24 | 2005-01-28 |  | 50d |  |
| 1815 | 22.3.1.1 | Scenario(text) | 1d? | 2005-01-24 | 2005-01-24 |  | 50d | 0d |
| 1816 | 22.3.1.2 | Постановка задач | 1d? | 2005-01-25 | 2005-01-25 | 1815 | 50d | 0d |
| 1817 | 22.3.1.3 | Implimentation | 1d? | 2005-01-26 | 2005-01-26 | 1816 | 50d | 0d |
| 1818 | 22.3.1.4 | Dilogs/VO/Icons/Objects/Animations | 1d? | 2005-01-27 | 2005-01-27 | 1817 | 50d | 0d |
| 1819 | 22.3.1.5 | Настройка | 1d? | 2005-01-28 | 2005-01-28 | 1818 | 50d |  |
| 1820 | 22.3.2 | **Script 2** | 5d? | 2005-01-24 | 2005-01-28 |  | 50d |  |
| 1821 | 22.3.2.1 | Scenario(text) | 1d? | 2005-01-24 | 2005-01-24 |  | 50d | 0d |
| 1822 | 22.3.2.2 | Постановка задач | 1d? | 2005-01-25 | 2005-01-25 | 1821 | 50d | 0d |
| 1823 | 22.3.2.3 | Implimentation | 1d? | 2005-01-26 | 2005-01-26 | 1822 | 50d | 0d |
| 1824 | 22.3.2.4 | Dilogs/VO/Icons/Objects/Animations | 1d? | 2005-01-27 | 2005-01-27 | 1823 | 50d | 0d |
| 1825 | 22.3.2.5 | Настройка | 1d? | 2005-01-28 | 2005-01-28 | 1824 | 50d |  |
| 1826 | 22.3.3 | **Script 3** | 5d? | 2005-01-24 | 2005-01-28 |  | 50d |  |
| 1827 | 22.3.3.1 | Scenario(text) | 1d? | 2005-01-24 | 2005-01-24 |  | 50d | 0d |
| 1828 | 22.3.3.2 | Постановка задач | 1d? | 2005-01-25 | 2005-01-25 | 1827 | 50d | 0d |
| 1829 | 22.3.3.3 | Implimentation | 1d? | 2005-01-26 | 2005-01-26 | 1828 | 50d | 0d |
| 1830 | 22.3.3.4 | Dilogs/VO/Icons/Objects/Animations | 1d? | 2005-01-27 | 2005-01-27 | 1829 | 50d | 0d |
| 1831 | 22.3.3.5 | Настройка | 1d? | 2005-01-28 | 2005-01-28 | 1830 | 50d |  |

| ID | WBS | Task | Duration | Start | Finish | Predecessors | Total slack | Free slack |
| --- | --- | --- | --- | --- | --- | --- | --- | --- |
| 1832 | 22.3.4 | **Script 4** | 5d? | 2005-01-24 | 2005-01-28 |  | 50d |  |
| 1833 | 22.3.4.1 | Scenario(text) | 1d? | 2005-01-24 | 2005-01-24 |  | 50d | 0d |
| 1834 | 22.3.4.2 | Постановка задач | 1d? | 2005-01-25 | 2005-01-25 | 1833 | 50d | 0d |
| 1835 | 22.3.4.3 | Implimentation | 1d? | 2005-01-26 | 2005-01-26 | 1834 | 50d | 0d |
| 1836 | 22.3.4.4 | Dilogs/VO/Icons/Objects/Animations | 1d? | 2005-01-27 | 2005-01-27 | 1835 | 50d | 0d |
| 1837 | 22.3.4.5 | Настройка | 1d? | 2005-01-28 | 2005-01-28 | 1836 | 50d |  |
| 1838 | 22.3.5 | **Script 5** | 5d? | 2005-01-24 | 2005-01-28 |  | 50d |  |
| 1839 | 22.3.5.1 | Scenario(text) | 1d? | 2005-01-24 | 2005-01-24 |  | 50d | 0d |
| 1840 | 22.3.5.2 | Постановка задач | 1d? | 2005-01-25 | 2005-01-25 | 1839 | 50d | 0d |
| 1841 | 22.3.5.3 | Implimentation | 1d? | 2005-01-26 | 2005-01-26 | 1840 | 50d | 0d |
| 1842 | 22.3.5.4 | Dilogs/VO/Icons/Objects/Animations | 1d? | 2005-01-27 | 2005-01-27 | 1841 | 50d | 0d |
| 1843 | 22.3.5.5 | Настройка | 1d? | 2005-01-28 | 2005-01-28 | 1842 | 50d |  |
